# Baseline-1 Overall Project (WATER STORAGE TANKS (5 UNITS) FOR MA'ADEN PIPELINE PROJECT)

Schedule from Primavera P6, 2012-06-30 to 2013-08-15, data date 2012-06-30, costs in SAR.

## Calendars

- Standard 7 Day Workweek(Site & Factory): Mon-Thu 07:00-17:00; Fri 09:30-14:30; Sat-Sun 07:00-17:00. Exceptions (off unless hours are given): 2012-08-19 to 2012-08-21, 2012-10-26 to 2012-10-27, 2013-01-27 06:00-00:00.

## Resources

| Resource | Group | Rate |
| --- | --- | --- |
| Camp Facilities & Site Offices | material | 124570 |
| Cathodic / protection System subcontractor | material | 49828 |
| Helper | labor | 15 |
| Fabricator | labor | 29 |
| Forman | labor |  |
| Diesel Truck | equipment |  |
| Crane Operator | labor |  |
| Driver | labor |  |
| Truck Flat Bed | equipment |  |
| Cutting Machine | equipment |  |
| Project Engineer | labor |  |
| QC inspector | labor |  |
| Safety Officer | labor |  |
| Vehicle (pick up 3/4T 4*2) | equipment |  |
| Aluminum Doom Roof subcontractor | material | 249140 |
| Instrumentation / subcontractor | material | 49828 |
| Plates Supplier | material | 348796 |
| Profile material / including(beams,Angels,Round bars,Flatbars,Checkers Plates) | material | 24914 |
| Pipes & fittings / (including(Flanges,elbows, / pad plates,pipes, / nuts,bolts) supplier including Spar | material | 49828 |
| Paint supplier | material | 49828 |
| Raw Material Delievery to Alzamil Factory | material | 622850 |
| Annular,buttom& / sump plate Fabrication (AZ Pre-fabricated wroks) | material | 124570 |
| Shell courses / (AZ Pre-fabricated works) (#1,#2,#3,#4) | material | 199312 |
| Shell Nozzles / &manholes (AZ Pre-fabricated works) | material | 74741.9 |
| Platforms, / Stairs & / handrails (AZ Pre-fabricated works) | material | 99655.9 |
| Civil & Foundation | material | 49828 |
| Delievery of the Pre-Fabricated Material to Ma'aden Site | material | 373710 |
| Rigger | labor |  |
| Welder 6G | labor |  |
| Tack Welder | labor |  |
| Crane 25T | equipment |  |
| Compressor 450 CFM | equipment |  |
| Annular & bottom / Plates (Site Installation works) | material | 36975 |
| Shell Course #1 / (site Installation works) | material | 55462.5 |
| Shell Course #2 / (site Installation works& testing) | material | 73950 |
| Shell Course #3 / (site Installation works& testing) | material | 73950 |
| Shell Course #4 (site Installation works & testing) | material | 73950 |
| Curve Angel / (site Installation works) | material | 24650 |
| Shell manholes & / nozzles(site Installation works & testing) | material | 36975 |
| Third party for ALuminum Dome Roof Supervisor | labor |  |
| Aluminum Doom Roof / (Site Installation works) | material | 86274.9 |
| Scaffolder | labor |  |
| Platforms & / handrails (site Installation works) | material | 61625 |
| Hydrotesting | material | 49300 |
| Water truck 30,000 Gallons | equipment |  |
| External site painting | material | 36975 |
| Painter | labor |  |
| Blaster | labor |  |
| internal site painting | material | 61625 |
| Electrical Site Works | material | 24650 |
| Concrete Testing-Third party inspection | labor |  |
| Third Party Inspection | material | 98599.9 |
| Hand over to Client (commissioning) | material | 67787.5 |
| Mobilization(including Accomodation / ,fabrication yard, AZ equipment) | material | 123250 |
| Carpenter | labor |  |
| Steel Workers | labor |  |
| Civil works | material | 123250 |
| Bus | equipment | 115 |
| Vibrating Roller 16T | equipment |  |
| Foundation works | material | 123250 |
| Backhoe | equipment |  |
| Geo Technical Survey | labor |  |
| Soil investigation / sub contractor | material | 12426.3 |
| Mechanical Design Engineer | labor |  |
| Engineering / Design Calculations | material | 18639.4 |
| Structural Design Engineer | labor |  |
| Quantity Surveyor (Material Specialist) | labor |  |
| Engineering / Tank & / foundation Drawings | material | 31065.7 |
| Soil investigation / sub contractor | material | 12426.3 |
| Engineering / Design Calculations | material | 18639.4 |
| Engineering / Tank & / foundation Drawings | material | 31065.7 |
| Civil & Foundation | material | 49828 |
| Aluminum Doom Roof subcontractor | material | 249140 |
| Plates Supplier | material | 348796 |
| Profile material / including(beams,Angels,Round bars,Flatbars,Checkers Plates) | material | 24914 |
| Pipes & fittings / (including(Flanges,elbows, / pad plates,pipes, / nuts,bolts) supplier including Spar | material | 49828 |
| Paint supplier | material | 49828 |
| Instrumentation / subcontractor | material | 49828 |
| Annular,buttom& / sump plate Fabrication (AZ Pre-fabricated wroks) | material | 124570 |
| Shell courses / (AZ Pre-fabricated works) (#1,#2,#3,#4) | material | 199312 |
| Shell Nozzles / &manholes (AZ Pre-fabricated works) | material | 74741.9 |
| Raw Material Delievery to Alzamil Factory | material | 622850 |
| Camp Facilities & Site Offices | material | 124570 |
| Cathodic / protection System subcontractor | material | 49828 |
| Platforms, / Stairs & / handrails (AZ Pre-fabricated works) | material | 99655.9 |
| Delievery of the Pre-Fabricated Material to Ma'aden Site | material | 373710 |
| Shell Course #2 / (site Installation works& testing) | material | 73950 |
| Shell Course #3 / (site Installation works& testing) | material | 73950 |
| Shell Course #4 (site Installation works & testing) | material | 73950 |
| Curve Angel / (site Installation works) | material | 24650 |
| Shell manholes & / nozzles(site Installation works & testing) | material | 36975 |
| Aluminum Doom Roof / (Site Installation works) | material | 86274.9 |
| Platforms & / handrails (site Installation works) | material | 61625 |
| Hydrotesting | material | 49300 |
| External site painting | material | 36975 |
| internal site painting | material | 61625 |
| Electrical Site Works | material | 24650 |
| Third Party Inspection | material | 98599.9 |
| Mobilization(including Accomodation / ,fabrication yard, AZ equipment) | material | 123250 |
| Shell Course #1 / (site Installation works) | material | 55462.5 |
| Civil works | material | 123250 |
| Foundation works | material | 123250 |
| Annular & bottom / Plates (Site Installation works) | material | 36975 |
| Hand over to Client (commissioning) | material | 67787.5 |
| Engineering / Design Calculations | material | 18639.4 |
| Soil investigation / sub contractor | material | 12426.3 |
| Engineering / Tank & / foundation Drawings | material | 31065.7 |
| Profile material / including(beams,Angels,Round bars,Flatbars,Checkers Plates) | material | 24914 |
| Raw Material Delievery to Alzamil Factory | material | 622850 |
| Annular,buttom& / sump plate Fabrication (AZ Pre-fabricated wroks) | material | 124570 |
| Civil & Foundation | material | 49828 |
| Aluminum Doom Roof subcontractor | material | 249140 |
| Camp Facilities & Site Offices | material | 124570 |
| Cathodic / protection System subcontractor | material | 49828 |
| Plates Supplier | material | 348796 |
| Shell courses / (AZ Pre-fabricated works) (#1,#2,#3,#4) | material | 199312 |
| Pipes & fittings / (including(Flanges,elbows, / pad plates,pipes, / nuts,bolts) supplier including Spar | material | 49828 |
| Shell Nozzles / &manholes (AZ Pre-fabricated works) | material | 74741.9 |
| Platforms, / Stairs & / handrails (AZ Pre-fabricated works) | material | 99655.9 |
| Instrumentation / subcontractor | material | 49828 |
| Delievery of the Pre-Fabricated Material to Ma'aden Site | material | 373710 |
| Paint supplier | material | 49828 |
| Platforms & / handrails (site Installation works) | material | 61625 |
| Annular & bottom / Plates (Site Installation works) | material | 36975 |
| Shell manholes & / nozzles(site Installation works & testing) | material | 36975 |
| Aluminum Doom Roof / (Site Installation works) | material | 86274.9 |
| Third Party Inspection | material | 98599.9 |
| Hydrotesting | material | 49300 |
| Curve Angel / (site Installation works) | material | 24650 |
| internal site painting | material | 61625 |
| Electrical Site Works | material | 24650 |
| Mason | labor |  |
| Shell Course #1 / (site Installation works) | material | 55462.5 |
| Mobilization(including Accomodation / ,fabrication yard, AZ equipment) | material | 123250 |
| Shell Course #3 / (site Installation works& testing) | material | 73950 |
| Shell Course #2 / (site Installation works& testing) | material | 73950 |
| Auto Welding Operator | labor |  |
| Civil works | material | 123250 |
| Foundation works | material | 123250 |
| Shell Course #4 (site Installation works & testing) | material | 73950 |
| Hand over to Client (commissioning) | material | 67787.5 |
| External site painting | material | 36975 |
| Soil investigation / sub contractor | material | 17511.8 |
| Engineering / Tank & / foundation Drawings | material | 43779.5 |
| Engineering / Design Calculations | material | 26267.7 |
| Camp Facilities & Site Offices | material | 165712 |
| Cathodic / protection System subcontractor | material | 66284.6 |
| Aluminum Doom Roof subcontractor | material | 331423 |
| Instrumentation / subcontractor | material | 66284.6 |
| Plates Supplier | material | 463993 |
| Profile material / including(beams,Angels,Round bars,Flatbars,Checkers Plates) | material | 33142.3 |
| Pipes & fittings / (including(Flanges,elbows, / pad plates,pipes, / nuts,bolts) supplier including Spar | material | 66284.6 |
| Paint supplier | material | 66284.6 |
| Raw Material Delievery to Alzamil Factory | material | 497135 |
| Annular,buttom& / sump plate Fabrication (AZ Pre-fabricated wroks) | material | 165712 |
| Shell courses / (AZ Pre-fabricated works) (#1,#2,#3,#4) | material | 265139 |
| Shell Nozzles / &manholes (AZ Pre-fabricated works) | material | 99427 |
| Platforms, / Stairs & / handrails (AZ Pre-fabricated works) | material | 132569 |
| Delievery of the Pre-Fabricated Material to Ma'aden Site | material | 828558 |
| Civil & Foundation Material | material | 66284.6 |
| Mobilization(including Accomodation / ,fabrication yard, AZ equipment) | material | 220827 |
| Civil works | material | 239229 |
| Annular & bottom / Plates (Site Installation works) | material | 36804.5 |
| Shell Course #1 / (site Installation works) | material | 73609 |
| Shell Course #2 / (site Installation works& testing) | material | 110414 |
| Shell Course #3 / (site Installation works& testing) | material | 110414 |
| Shell Course #4 (site Installation works & testing) | material | 110414 |
| Curve Angel / (site Installation works) | material | 36804.5 |
| Shell manholes & / nozzles(site Installation works & testing) | material | 36804.5 |
| Aluminum Doom Roof / (Site Installation works) | material | 128816 |
| Platforms & / handrails (site Installation works) | material | 55206.8 |
| Hydrotesting | material | 73609 |
| External site painting | material | 36804.5 |
| internal site painting | material | 73609 |
| Electrical Site Works | material | 36804.5 |
| Third Party Inspection | material | 147218 |
| Hand over to Client (commissioning) | material | 92011.2 |
| Foundation works | material | 220827 |
| Mobilization(including Accomodation / ,fabrication yard, AZ equipment) | material | 220827 |
| Civil works | material | 239229 |
| Foundation works | material | 220827 |
| Annular & bottom / Plates (Site Installation works) | material | 36804.5 |
| Shell Course #1 / (site Installation works) | material | 73609 |
| Shell Course #2 / (site Installation works& testing) | material | 110414 |
| Shell Course #3 / (site Installation works& testing) | material | 110414 |
| Shell Course #4 (site Installation works & testing) | material | 110414 |
| Curve Angel / (site Installation works) | material | 36804.5 |
| Shell manholes & / nozzles(site Installation works & testing) | material | 36804.5 |
| Aluminum Doom Roof / (Site Installation works) | material | 128816 |
| Platforms & / handrails (site Installation works) | material | 55206.8 |
| Hydrotesting | material | 73609 |
| External site painting | material | 36804.5 |
| internal site painting | material | 73609 |
| Electrical Site Works | material | 36804.5 |
| Third Party Inspection | material | 147218 |
| Hand over to Client (commissioning) | material | 92011.2 |
| Soil investigation / sub contractor | material | 17511.8 |
| Engineering / Design Calculations | material | 26267.7 |
| Engineering / Tank & / foundation Drawings | material | 43779.5 |
| Camp Facilities & Site Offices | material | 165712 |
| Cathodic / protection System subcontractor | material | 66284.6 |
| Civil & Foundation Material | material | 66284.6 |
| Aluminum Doom Roof subcontractor | material | 331423 |
| Instrumentation / subcontractor | material | 66284.6 |
| Plates Supplier | material | 463993 |
| Profile material / including(beams,Angels,Round bars,Flatbars,Checkers Plates) | material | 33142.3 |
| Pipes & fittings / (including(Flanges,elbows, / pad plates,pipes, / nuts,bolts) supplier including Spar | material | 66284.6 |
| Paint supplier | material | 66284.6 |
| Raw Material Delievery to Alzamil Factory | material | 497135 |
| Annular,buttom& / sump plate Fabrication (AZ Pre-fabricated wroks) | material | 165712 |
| Shell courses / (AZ Pre-fabricated works) (#1,#2,#3,#4) | material | 265139 |
| Shell Nozzles / &manholes (AZ Pre-fabricated works) | material | 99427 |
| Platforms, / Stairs & / handrails (AZ Pre-fabricated works) | material | 132569 |
| Delievery of the Pre-Fabricated Material to Ma'aden Site | material | 828558 |

## Schedule

| ID | WBS | Activity | Type | Duration | Start | Finish | Predecessors | Total float | Free float | Resources | Cost |
| --- | --- | --- | --- | --- | --- | --- | --- | --- | --- | --- | --- |
|  | 1 | **Master Pump Station (Tank #1,#2,#3)** |  |  | 2012-06-30 | 2013-07-15 |  |  |  |  |  |
|  | 1 | **TANK#1 100 C** |  |  | 2012-06-30 | 2013-06-27 |  |  |  |  |  |
|  | 1 | **ENGINEERING** |  |  | 2012-06-30 | 2012-07-26 |  |  |  |  |  |
|  | 1 | **SOIL INVESTIGATION SUBCONTRACTOR** |  |  | 2012-06-30 | 2012-07-01 |  |  |  |  |  |
| JF721.1 |  | Soil Investigation Works |  | 2d | 2012-06-30 | 2012-07-01 |  | 0d |  | Geo Technical Survey [20 h]; Soil investigation / sub contractor [1] | 12,426.27 |
|  | 4 | **Complete survey and Geotechnical Investigation for Master Pump Station** |  |  | 2012-07-01 | 2012-07-01 |  |  |  |  |  |
| 1.2 |  | Complete survey and Geotechnical Investigation for both Master Pump Station | milestone | 0d | 2012-07-01 | 2012-07-01 | JF721.1 | 54d | 0d |  |  |
|  | 2 | **ENGINEERING DESIGN CALCULATIONS** |  |  | 2012-07-01 | 2012-07-17 |  |  |  |  |  |
| JF721.2 |  | 60% Submittal |  | 1d | 2012-07-01 | 2012-07-02 | 1.2 | 54d | 0d | Mechanical Design Engineer [8 h]; Engineering / Design Calculations [0.15] | 2,795.91 |
| JF721.3 |  | 60% Comments Incooperation |  | 7d | 2012-07-02 | 2012-07-08 | JF721.2 | 54d | 0d | Mechanical Design Engineer [56 h]; Engineering / Design Calculations [0.2] | 3,727.88 |
| JF721.4 |  | 90% Submittal |  | 1d | 2012-07-08 | 2012-07-09 | JF721.3 | 54d | 0d | Mechanical Design Engineer [8 h]; Engineering / Design Calculations [0.15] | 2,795.91 |
| JF721.5 |  | 90% Comments Incooperation |  | 7d | 2012-07-09 | 2012-07-15 | JF721.4 | 54d | 0d | Mechanical Design Engineer [56 h]; Engineering / Design Calculations [0.2] | 3,727.88 |
| JF721.6 |  | IFC |  | 3d | 2012-07-15 | 2012-07-17 | JF721.5 | 54d | 0d | Mechanical Design Engineer [24 h]; Engineering / Design Calculations [0.3] | 5,591.82 |
|  | 5 | **Complete Engineering design and Calculations** |  |  | 2012-07-17 | 2012-07-17 |  |  |  |  |  |
| 1.3 |  | Complete Engineering design and Calculations | milestone | 0d | 2012-07-17 | 2012-07-17 | JF721.6 FF | 76d | 0d |  |  |
|  | 3 | **ENGINEERING TANK & FOUNDATION DRAWINGS** |  |  | 2012-07-17 | 2012-07-26 |  |  |  |  |  |
| JF721.7 |  | 60% Submittal (Tank & Foundation Drawings) |  | 1d | 2012-07-17 | 2012-07-18 | 1.3 | 76d | 0d | Mechanical Design Engineer [8 h]; Structural Design Engineer [8 h]; Quantity Surveyor (Material Specialist) [8 h]; Engineering / Tank & / foundation Drawings [0.15] | 4,659.85 |
| JF721.8 |  | 60% Comments Incooperation (Tanks & Foundation Drawings) |  | 5d | 2012-07-18 | 2012-07-23 | JF721.7 | 76d | 0d | Quantity Surveyor (Material Specialist) [40 h]; Structural Design Engineer [40 h]; Mechanical Design Engineer [40 h]; Engineering / Tank & / foundation Drawings [0.2] | 6,213.13 |
| JF721.9 |  | 90% Submittal (Tanks & Foundation Drawings) |  | 1d | 2012-07-23 | 2012-07-23 | JF721.8 | 76d | 0d | Quantity Surveyor (Material Specialist) [8 h]; Structural Design Engineer [8 h]; Mechanical Design Engineer [8 h]; Engineering / Tank & / foundation Drawings [0.15] | 4,659.85 |
| JF721.10 |  | 90% Comments Incooperation (Tanks & Foundation Drawings) |  | 2d | 2012-07-23 | 2012-07-25 | JF721.9 | 76d | 0d | Mechanical Design Engineer [16 h]; Quantity Surveyor (Material Specialist) [16 h]; Structural Design Engineer [16 h]; Engineering / Tank & / foundation Drawings [0.2] | 6,213.13 |
| JF721.11 |  | IFC |  | 1d | 2012-07-25 | 2012-07-26 | JF721.10 | 77d | 0d | Structural Design Engineer [8 h]; Quantity Surveyor (Material Specialist) [8 h]; Mechanical Design Engineer [8 h]; Engineering / Tank & / foundation Drawings [0.3] | 9,319.7 |
|  | 6 | **Complete Fabrication and GA Drawing with Bill of Quantities** |  |  | 2012-07-26 | 2012-07-26 |  |  |  |  |  |
| 1.4 |  | Complete Fabrication and GA Drawing with Bill of Quantities | milestone | 0d | 2012-07-26 | 2012-07-26 | JF721.11 FF | 77d | 1d |  |  |
|  | 2 | **PORCURMENT(INCLUDING DELIEVERY OF RAW MATERIAL & PREFABRICATION OF MATERIAL AT ALZAMIL FACTORY)** |  |  | 2012-07-01 | 2013-06-01 |  |  |  |  |  |
|  | 1 | **CAMP FACILITIES & SITE OFFICIES** |  |  | 2012-07-01 | 2012-07-10 |  |  |  |  |  |
| JF721.12 |  | PO Issued |  | 3d | 2012-07-01 | 2012-07-03 | 1.2 | 70d | 0d | Camp Facilities & Site Offices [0.6] | 74,741.95 |
| JF721.13 |  | Ma'aden Site Delievery |  | 7d | 2012-07-04 | 2012-07-10 | JF721.12 | 70d | 0d | Camp Facilities & Site Offices [0.4] | 49,827.96 |

Notes:
- 1: RECIEVED TANK COORIDNATES 7TH OF OCTOBER / 2012 FROM RADICON / WAITING FOR JUSTIFICATION LETTER FROM RADICON TO PRESENT TO MA'ADEN FOR / PROJECT TIME EXTENSION / DESIGN,ENGINEERING,SUPPLY OF / MATERIALS,MANUFACTURING,PREFABRICATION,ASSUMBLY,PAINTING&COATING,ERECTION,SHOP / TESTING,INSPECTION,PACKING AND DELIEVERY TO SITE,OPERATING & MAINTENANCE / MANUALS AND SPARE PARTS PACKADGE
- 1: DESIGN,ENGINEERING,SUPPLY OF / MATERIALS,MANUFACTURING,PREFABRICATION,ASSUMBLY,PAINTING&COATING,ERECTION,SHOP / TESTING,INSPECTION,PACKING AND DELIEVERY TO SITE,OPERATING & MAINTENANCE / MANUALS AND SPARE PARTS PACKADGE
- JF721.1: Steps: Soil Contractor Mobilization; Start of work; Finishing & Moving to 2nd Tank
- JF721.3: Steps: Recieving the Comments from client; Incooperating the Comments
- JF721.5: Steps: Recieving the Comments from client; Incooperating the Comments
- JF721.6: Steps: Receving Final Approval from client; Preparing the Drawings to IFC
- JF721.13: Steps: Purchase Portacabins Locally; Deliever to MPS

| ID | WBS | Activity | Type | Duration | Start | Finish | Predecessors | Total float | Free float | Resources | Cost |
| --- | --- | --- | --- | --- | --- | --- | --- | --- | --- | --- | --- |
|  | 2 | **CATHODIC PROTECTION SYSTEM SUBCONTRACTOR** |  |  | 2012-07-24 | 2013-05-07 |  |  |  |  |  |
| JF721.14 |  | Approval for Vendor Drawings & SPecifications |  | 3d | 2012-07-24 | 2012-07-27 | JF721.10 SS+1d | 76d | 0d | Cathodic / protection System subcontractor [0.1] | 4,982.8 |
| JF721.15 |  | PO Issued |  | 27d | 2012-07-27 | 2012-08-22 | JF721.14 | 173d | 0d | Cathodic / protection System subcontractor [0.2] | 9,965.59 |
| JF721.16 |  | CP System Delievered to Ma'aden Site & Installed |  | 15d | 2013-04-21 | 2013-05-04 | JF721.146 SS | 54d | 0d | Forman [100 h]; Helper [200 h]; Vehicle (pick up 3/4T 4*2) [100 h]; Safety Officer [100 h]; Rigger [100 h]; QC inspector [100 h]; Project Engineer [100 h]; Cutting Machine [100 h]; Truck Flat Bed [100 h]; Fabricator [100 h]; Diesel Truck [100 h]; Crane Operator [100 h]; Driver [100 h]; Cathodic / protection System subcontractor [0.3] | 14,948.39 |
| JF721.17 |  | Ma'aden CP Inspection |  | 3d | 2013-05-04 | 2013-05-07 | JF721.16 | 54d | 0d | Forman [10 h]; Project Engineer [10 h]; QC inspector [10 h]; Helper [20 h]; Vehicle (pick up 3/4T 4*2) [10 h]; Safety Officer [10 h]; Rigger [10 h]; Cutting Machine [10 h]; Truck Flat Bed [10 h]; Fabricator [10 h]; Diesel Truck [10 h]; Crane Operator [10 h]; Driver [10 h]; Cathodic / protection System subcontractor [0.4] | 19,931.18 |
|  | 18 | **Complete installation of Cathodic Protection and CP monitoring for the Storage Tanks.** |  |  | 2013-05-07 | 2013-05-07 |  |  |  |  |  |
| 1.11 |  | Complete installation of Cathodic Protection and CP monitoring for the Storage Tanks. | milestone | 0d | 2013-05-07 | 2013-05-07 | JF721.17 | 54d | 0d |  |  |
|  | 3 | **CIVIL & FOUNDATION** |  |  | 2012-07-10 | 2012-07-19 |  |  |  |  |  |
| JF721.18 |  | PO Issued |  | 3d | 2012-07-10 | 2012-07-12 | JF721.13 | 91d | 0d | Civil & Foundation [0.6] | 29,896.78 |
| JF721.19 |  | Ma'aden Site Delievery |  | 8d | 2012-07-12 | 2012-07-19 | JF721.18 | 91d | 21d | Civil & Foundation [0.4] | 19,931.18 |
|  | 4 | **ALUMINUM DOME ROOF SUBCONTRACTOR** |  |  | 2012-07-24 | 2012-08-22 |  |  |  |  |  |
| JF721.20 |  | Approval For Vendor Drawings & Specifications |  | 3d | 2012-07-24 | 2012-07-27 | JF721.14 SS | 76d | 0d | Aluminum Doom Roof subcontractor [0.35] | 87,198.94 |
| JF721.21 |  | P.O Issued |  | 27d | 2012-07-27 | 2012-08-22 | JF721.20 | 173d | 0d | Aluminum Doom Roof subcontractor [0.65] | 161,940.88 |
|  | 5 | **INSTRUMENTATION SUBCONTRACTOR** |  |  | 2012-07-24 | 2013-06-01 |  |  |  |  |  |
| JF721.22 |  | Approval for vendor Drawings & Specifcations |  | 3d | 2012-07-24 | 2012-07-27 | JF721.20 SS | 76d | 0d | Instrumentation / subcontractor [0.1] | 4,982.8 |
| JF721.23 |  | P.O Issued |  | 27d | 2012-07-27 | 2012-08-22 | JF721.22 | 173d | 0d | Instrumentation / subcontractor [0.2] | 9,965.59 |
| JF721.24 |  | Instrumentation Delievered to Ma'aden & Installed |  | 26d | 2013-05-07 | 2013-05-29 | 1.11 | 54d | 0d | Helper [560 h]; Forman [140 h]; Vehicle (pick up 3/4T 4*2) [140 h]; Rigger [140 h]; QC inspector [140 h]; Project Engineer [140 h]; Safety Officer [140 h]; Cutting Machine [140 h]; Truck Flat Bed [140 h]; Fabricator [140 h]; Crane Operator [140 h]; Diesel Truck [140 h]; Driver [140 h]; Instrumentation / subcontractor [0.3] | 14,948.39 |
| JF721.25 |  | Ma'aden Instrumentation Inspection |  | 3d | 2013-05-29 | 2013-06-01 | JF721.24 | 54d | 0d | QC inspector [10 h]; Forman [10 h]; Project Engineer [10 h]; Helper [20 h]; Vehicle (pick up 3/4T 4*2) [10 h]; Safety Officer [10 h]; Rigger [10 h]; Cutting Machine [10 h]; Truck Flat Bed [10 h]; Fabricator [10 h]; Driver [10 h]; Crane Operator [10 h]; Diesel Truck [10 h]; Instrumentation / subcontractor [0.4] | 19,931.18 |
|  | 19 | **Installation of only field instruments, which includes level transmitters and level gauges** |  |  | 2013-06-01 | 2013-06-01 |  |  |  |  |  |
| 1.12 |  | Installation of only field instruments, which includes level transmitters and level gauges | milestone | 0d | 2013-06-01 | 2013-06-01 | JF721.25 | 54d | 0d |  |  |
|  | 6 | **PLATES SUPPLIER** |  |  | 2012-07-17 | 2012-07-23 |  |  |  |  |  |
| JF721.26 |  | Approve Vendor Drawings & Specifcations |  | 3d | 2012-07-17 | 2012-07-20 | JF721.6 | 54d | 0d | Plates Supplier [0.25] | 87,198.93 |
| JF721.27 |  | P.O Issued |  | 3d | 2012-07-20 | 2012-07-23 | JF721.26 | 54d | 0d | Plates Supplier [0.75] | 261,596.8 |
|  | 17 | **Material Requisition approval for Steel plates, Cathodic Protection, field instruments etc.** |  |  | 2012-07-27 | 2012-07-27 |  |  |  |  |  |
| 1.5 |  | Material Requisition approval for Steel plates, Cathodic Protection, field instruments etc. | milestone | 0d | 2012-07-27 | 2012-07-27 | JF721.22 | 76d | 0d |  |  |

Notes:
- JF721.16: Steps: Delievery of CP System to site; Installation after complete internal tank painting
- JF721.24: Steps: Delievery of Instrumentation to site; Installation

| ID | WBS | Activity | Type | Duration | Start | Finish | Predecessors | Total float | Free float | Resources | Cost |
| --- | --- | --- | --- | --- | --- | --- | --- | --- | --- | --- | --- |
|  | 16 | **Purchase Order placement for Major Materials** |  |  | 2012-08-22 | 2012-08-22 |  |  |  |  |  |
| 1.6 |  | Purchase Order placement for Major Materials | milestone | 0d | 2012-08-22 | 2012-08-22 | JF721.15, JF721.21, JF721.23 | 173d | 0d |  |  |
|  | 7 | **PROFILE MATERIAL INCLUDING(beams,Angels,Round bars,Flatbars,Checkers Plates)** |  |  | 2012-07-27 | 2012-08-15 |  |  |  |  |  |
| JF721.28 |  | Approval for Vendor Drawings & Specifications |  | 6d | 2012-07-27 | 2012-08-01 | 1.5, 1.4 | 76d | 0d | Profile material / including(beams,Angels,Round bars,Flatbars,Checkers Plates) [0.25] | 6,228.49 |
| JF721.29 |  | PO Issued |  | 17d | 2012-08-01 | 2012-08-15 | JF721.28 | 154d | 0d | Profile material / including(beams,Angels,Round bars,Flatbars,Checkers Plates) [0.75] | 18,685.49 |
|  | 8 | **PIPES&FITTINGS INCLUDING(FLANGES,ELBOWS,PAD PLATES,PIPES,NUTS,BOLTS)SUPPLIER INCLDUDING SPARE PARTS** |  |  | 2012-07-27 | 2012-08-06 |  |  |  |  |  |
| JF721.30 |  | Approval for Vendor Drawings & Specifications |  | 6d | 2012-07-27 | 2012-08-01 | JF721.28 SS | 76d | 0d | Pipes & fittings / (including(Flanges,elbows, / pad plates,pipes, / nuts,bolts) supplier including Spar [0.25] | 12,456.99 |
| JF721.31 |  | PO issued |  | 6d | 2012-08-01 | 2012-08-06 | JF721.30 | 76d | 0d | Pipes & fittings / (including(Flanges,elbows, / pad plates,pipes, / nuts,bolts) supplier including Spar [0.75] | 37,370.97 |
|  | 9 | **PAINT SUPPLIER** |  |  | 2012-08-01 | 2012-08-11 |  |  |  |  |  |
| JF721.32 |  | Approval For vendor Specifcations |  | 8d | 2012-08-01 | 2012-08-08 | JF721.30 | 87d | 0d | Paint supplier [0.25] | 12,456.99 |
| JF721.33 |  | PO issued |  | 4d | 2012-08-08 | 2012-08-11 | JF721.32 | 87d | 0d | Paint supplier [0.75] | 37,370.97 |
|  | 10 | **RAW MATERIAL DELIEVERY TO ALZAMIL FACTORY** |  |  | 2012-07-23 | 2012-10-13 |  |  |  |  |  |
| JF721.34 |  | Plates |  | 92d | 2012-07-23 | 2012-10-13 | JF721.27 | 54d | 0d | Raw Material Delievery to Alzamil Factory [0.7] | 435,994.68 |
| JF721.36 |  | Pipes & Fittings |  | 17d | 2012-08-06 | 2012-08-24 | JF721.31 | 76d | 0d | Raw Material Delievery to Alzamil Factory [0.15] | 93,427.43 |
| JF721.35 |  | Profile Material |  | 37d | 2012-08-16 | 2012-09-20 | JF721.29 | 154d | 0d | Raw Material Delievery to Alzamil Factory [0.15] | 93,427.43 |
|  | 11 | **ANNULAR,BUTTOM & SUMP PLATE FABRICATION (AZ PRE-FABRICATION WORKS)** |  |  | 2012-09-03 | 2012-09-13 |  |  |  |  |  |
| JF721.37 |  | Define Layout |  | 3d | 2012-09-03 | 2012-09-05 | JF721.34 SS+45d | 54d | 0d | Annular,buttom& / sump plate Fabrication (AZ Pre-fabricated wroks) [0.05] | 6,228.5 |
| JF721.38 |  | Cutting |  | 3d | 2012-09-03 | 2012-09-05 | JF721.37 SS | 54d | 0d | Annular,buttom& / sump plate Fabrication (AZ Pre-fabricated wroks) [0.15] | 18,685.49 |
| JF721.39 |  | Fit-up |  | 4d | 2012-09-05 | 2012-09-09 | JF721.38 | 54d | 0d | Annular,buttom& / sump plate Fabrication (AZ Pre-fabricated wroks) [0.2] | 24,913.98 |
| JF721.40 |  | Welding |  | 4d | 2012-09-06 | 2012-09-09 | JF721.39 SS+1d | 54d | 0d | Annular,buttom& / sump plate Fabrication (AZ Pre-fabricated wroks) [0.45] | 56,056.46 |
| JF721.41 |  | Shop Blasting/Painting |  | 4d | 2012-09-07 | 2012-09-10 | JF721.40 SS+1d | 54d | 0d | Annular,buttom& / sump plate Fabrication (AZ Pre-fabricated wroks) [0.1] | 12,456.99 |
| JF721.42 |  | Inspect & Accept for use |  | 3d | 2012-09-10 | 2012-09-13 | JF721.41 | 54d | 0d | Annular,buttom& / sump plate Fabrication (AZ Pre-fabricated wroks) [0.05] | 6,228.5 |
|  | 12 | **SHELL COURSES (AZ PRE-FABRICATED WORKS) #1,#2,#3,#4** |  |  | 2012-09-05 | 2012-09-18 |  |  |  |  |  |
| JF721.43 |  | Define Layout |  | 4d | 2012-09-05 | 2012-09-09 | JF721.37 | 108d | 0d | Shell courses / (AZ Pre-fabricated works) (#1,#2,#3,#4) [0.05] | 9,965.59 |
| JF721.44 |  | Cutting |  | 5d | 2012-09-05 | 2012-09-09 | JF721.43 SS | 108d | 0d | Shell courses / (AZ Pre-fabricated works) (#1,#2,#3,#4) [0.5] | 99,655.93 |
| JF721.45 |  | Bevelling/Rolling |  | 6d | 2012-09-07 | 2012-09-12 | JF721.44 SS+2d | 108d | 0d | Shell courses / (AZ Pre-fabricated works) (#1,#2,#3,#4) [0.2] | 39,862.37 |
| JF721.46 |  | Shop Blasting/Painting |  | 6d | 2012-09-10 | 2012-09-15 | JF721.45 SS+3d | 108d | 0d | Shell courses / (AZ Pre-fabricated works) (#1,#2,#3,#4) [0.2] | 39,862.37 |
| JF721.47 |  | Inspect & Accept for use |  | 4d | 2012-09-15 | 2012-09-18 | JF721.46 | 108d | 0d | Shell courses / (AZ Pre-fabricated works) (#1,#2,#3,#4) [0.05] | 9,965.59 |

| ID | WBS | Activity | Type | Duration | Start | Finish | Predecessors | Total float | Free float | Resources | Cost |
| --- | --- | --- | --- | --- | --- | --- | --- | --- | --- | --- | --- |
|  | 13 | **SHELL NOZZLES & MANHOLES(AZ PRE-FABRICATED WORKS)** |  |  | 2012-09-20 | 2012-10-05 |  |  |  |  |  |
| JF721.48 |  | Define layout |  | 3d | 2012-09-20 | 2012-09-22 | JF721.35, JF721.44 | 154d | 0d | Shell Nozzles / &manholes (AZ Pre-fabricated works) [0.1] | 7,474.19 |
| JF721.49 |  | Cutting |  | 4d | 2012-09-23 | 2012-09-26 | JF721.48 | 154d | 0d | Shell Nozzles / &manholes (AZ Pre-fabricated works) [0.2] | 14,948.39 |
| JF721.50 |  | Bevelling |  | 5d | 2012-09-23 | 2012-09-27 | JF721.49 SS+1d | 154d | 0d | Shell Nozzles / &manholes (AZ Pre-fabricated works) [0.2] | 14,948.39 |
| JF721.51 |  | Fit-up/Welding |  | 6d | 2012-09-25 | 2012-09-30 | JF721.50 SS+2d | 154d | 0d | Shell Nozzles / &manholes (AZ Pre-fabricated works) [0.4] | 29,896.78 |
| JF721.52 |  | Shop Blasting/Painting |  | 6d | 2012-09-27 | 2012-10-03 | JF721.51 SS+3d | 154d | 0d | Shell Nozzles / &manholes (AZ Pre-fabricated works) [0.05] | 3,737.1 |
| JF721.53 |  | Inspect & Accept for use |  | 3d | 2012-10-03 | 2012-10-05 | JF721.52 | 154d | 0d | Shell Nozzles / &manholes (AZ Pre-fabricated works) [0.05] | 3,737.1 |
|  | 14 | **PLATFORMS,STARIS &HANDRAILS9AZ-PRE FABRICATED WORKS)** |  |  | 2012-09-30 | 2012-11-05 |  |  |  |  |  |
| JF721.54 |  | Define Layout |  | 5d | 2012-09-30 | 2012-10-04 | JF721.51 | 161d | 0d | Platforms, / Stairs & / handrails (AZ Pre-fabricated works) [0.1] | 9,965.59 |
| JF721.55 |  | Cutting |  | 7d | 2012-10-04 | 2012-10-10 | JF721.54 | 161d | 0d | Platforms, / Stairs & / handrails (AZ Pre-fabricated works) [0.1] | 9,965.59 |
| JF721.56 |  | Fit-Up |  | 10d | 2012-10-10 | 2012-10-19 | JF721.55 | 161d | 0d | Platforms, / Stairs & / handrails (AZ Pre-fabricated works) [0.2] | 19,931.19 |
| JF721.57 |  | Welding |  | 7d | 2012-10-19 | 2012-10-25 | JF721.56 | 161d | 0d | Platforms, / Stairs & / handrails (AZ Pre-fabricated works) [0.4] | 39,862.37 |
| JF721.58 |  | Blasting/Painting |  | 7d | 2012-10-25 | 2012-11-01 | JF721.57 | 161d | 0d | Platforms, / Stairs & / handrails (AZ Pre-fabricated works) [0.15] | 14,948.39 |
| JF721.59 |  | Inspect & Accept for use |  | 4d | 2012-11-02 | 2012-11-05 | JF721.58 | 161d | 0d | Platforms, / Stairs & / handrails (AZ Pre-fabricated works) [0.05] | 4,982.8 |
|  | 15 | **DELIEVERY OF THE PRE-FABRICATED MATERIAL TO MA'ADEN SITE** |  |  | 2012-08-12 | 2012-11-13 |  |  |  |  |  |
| JF721.66 |  | Paint Material |  | 4d | 2012-08-12 | 2012-08-15 | JF721.33 | 87d | 11d | Delievery of the Pre-Fabricated Material to Ma'aden Site [0.05] | 18,685.49 |
| JF721.65 |  | Aluminum Dome Roof |  | 92d | 2012-08-22 | 2012-11-11 | 1.6 | 173d | 119d | Delievery of the Pre-Fabricated Material to Ma'aden Site [0.15] | 56,056.46 |
| JF721.64 |  | Pipes & Fittings |  | 4d | 2012-08-24 | 2012-08-27 | JF721.36 | 76d | 0d | Delievery of the Pre-Fabricated Material to Ma'aden Site [0.05] | 18,685.49 |
| JF721.60 |  | Annular,Bottom & Sump |  | 3d | 2012-09-13 | 2012-09-16 | JF721.42 | 54d | 0d | Delievery of the Pre-Fabricated Material to Ma'aden Site [0.15] | 56,056.46 |
| JF721.61 |  | Shell Courses #1,#2,#3,#4 |  | 8d | 2012-09-18 | 2012-09-25 | JF721.47 | 108d | 54d | Delievery of the Pre-Fabricated Material to Ma'aden Site [0.35] | 130,798.41 |
| JF721.62 |  | Shell Nozzles & Manholes |  | 6d | 2012-10-06 | 2012-10-10 | JF721.53 | 154d | 100d | Delievery of the Pre-Fabricated Material to Ma'aden Site [0.1] | 37,370.97 |
| JF721.63 |  | Platforms,Stairs & Handrails |  | 9d | 2012-11-05 | 2012-11-13 | JF721.59 | 161d | 107d | Delievery of the Pre-Fabricated Material to Ma'aden Site [0.15] | 56,056.46 |
|  | 20 | **Supply of Materials to Site** |  |  | 2012-08-27 | 2012-08-27 |  |  |  |  |  |
| 1.8 |  | Supply of Materials to Site | milestone | 0d | 2012-08-27 | 2012-08-27 | JF721.64, JF721.66 | 76d | 22d |  |  |

Notes:
- JF721.65: Steps: Drawings Recieved from Supplier; Submission/Approval from CLient; Roof Fabrication; Shipping of Fabricated Material; Delievery to Alzamil factory; Delievey to MA'aden Site
- JF721.61: Steps: Shell #1; Shell #2; Shell #3; Shell #4

| ID | WBS | Activity | Type | Duration | Start | Finish | Predecessors | Total float | Free float | Resources | Cost |
| --- | --- | --- | --- | --- | --- | --- | --- | --- | --- | --- | --- |
|  | 3 | **CONSTRUCTION (INCLUDING SHOP FABRICATION,SITE CONSTRUCTION,INSTALLATION WORKS,MOBILIZATION,PAINTING)** |  |  | 2012-07-04 | 2013-06-27 |  |  |  |  |  |
|  | 1 | **MOBILIZATION (INCLUDING ACCOMODATION,FABRICATION YARD & AZ EQUIPMENT)** |  |  | 2012-07-04 | 2012-07-27 |  |  |  |  |  |
| JF721.67 |  | Rental For Workers & Engineers Accomodation with Facilities |  | 5d | 2012-07-04 | 2012-07-08 | JF721.13 SS | 70d | 0d | Project Engineer [20 h]; Forman [20 h]; Vehicle (pick up 3/4T 4*2) [40 h]; Mobilization(including Accomodation / ,fabrication yard, AZ equipment) [0.45] | 55,462.47 |
| JF721.68 |  | Complete Mobilize AZ Equipment to Site & Prepare the site fabrication yard |  | 25d | 2012-07-04 | 2012-07-25 | JF721.67 SS | 70d | 0d | Helper [480 h]; Vehicle (pick up 3/4T 4*2) [240 h]; Safety Officer [240 h]; Rigger [240 h]; QC inspector [240 h]; Project Engineer [240 h]; Cutting Machine [240 h]; Truck Flat Bed [240 h]; Forman [240 h]; Driver [240 h]; Crane Operator [240 h]; Diesel Truck [240 h]; Mobilization(including Accomodation / ,fabrication yard, AZ equipment) [0.35] | 43,137.48 |
| JF721.69 |  | Ma'aden Inspection & Approval for Portacabins |  | 2d | 2012-07-25 | 2012-07-27 | JF721.68 | 70d | 0d | Project Engineer [10 h]; Forman [10 h]; Safety Officer [10 h]; Rigger [10 h]; QC inspector [10 h]; Helper [10 h]; Cutting Machine [10 h]; Truck Flat Bed [10 h]; Driver [10 h]; Crane Operator [10 h]; Diesel Truck [10 h]; Mobilization(including Accomodation / ,fabrication yard, AZ equipment) [0.2] | 24,649.99 |
|  | 20 | **Complete MOBILIZATION of camp with Catering and accommodation facilities** |  |  | 2012-07-27 | 2012-07-27 |  |  |  |  |  |
| 1.7 |  | Complete MOBILIZATION of camp with Catering and accommodation facilities | milestone | 0d | 2012-07-27 | 2012-07-27 | JF721.69 | 70d | 0d |  |  |
|  | 2 | **CIVIL WORKS** |  |  | 2012-07-27 | 2012-08-18 |  |  |  |  |  |
| JF721.70 |  | Layout/Stake-out |  | 3d | 2012-07-27 | 2012-07-29 | 1.7 | 70d | 0d | Forman [20 h]; Helper [60 h]; Carpenter [60 h]; Steel Workers [60 h]; Vehicle (pick up 3/4T 4*2) [20 h]; Project Engineer [20 h]; QC inspector [20 h]; Safety Officer [20 h]; Rigger [20 h]; Cutting Machine [20 h]; Driver [20 h]; Crane Operator [20 h]; Diesel Truck [20 h]; Civil works [0.1] | 12,324.99 |
| JF721.71 |  | Excavation |  | 11d | 2012-07-28 | 2012-08-06 | JF721.70 SS+1d | 70d | 0d | Forman [150 h]; Helper [300 h]; Bus [100 h]; Carpenter [300 h]; Steel Workers [300 h]; Vehicle (pick up 3/4T 4*2) [100 h]; Rigger [100 h]; Safety Officer [100 h]; QC inspector [100 h]; Project Engineer [100 h]; Cutting Machine [100 h]; Truck Flat Bed [100 h]; Diesel Truck [100 h]; Crane Operator [100 h]; Driver [100 h]; Civil works [0.45] | 55,462.47 |
| JF721.72 |  | SteelWorks/Formworks |  | 8d | 2012-08-06 | 2012-08-13 | JF721.71, JF721.19 | 70d | 0d | Steel Workers [280 h]; Carpenter [280 h]; Forman [70 h]; Helper [280 h]; Vehicle (pick up 3/4T 4*2) [70 h]; Rigger [70 h]; Safety Officer [70 h]; QC inspector [70 h]; Project Engineer [70 h]; Cutting Machine [70 h]; Driver [70 h]; Crane Operator [70 h]; Diesel Truck [70 h]; Truck Flat Bed [70 h]; Civil works [0.3] | 36,974.98 |
| JF721.73 |  | Soil Compaction |  | 6d | 2012-08-13 | 2012-08-18 | JF721.72 | 70d | 0d | Helper [200 h]; Vibrating Roller 16T [50 h]; Forman [80 h]; Carpenter [100 h]; Steel Workers [100 h]; Vehicle (pick up 3/4T 4*2) [50 h]; Safety Officer [50 h]; Rigger [50 h]; Project Engineer [50 h]; Cutting Machine [50 h]; Truck Flat Bed [50 h]; Driver [50 h]; Crane Operator [50 h]; Diesel Truck [50 h]; Civil works [0.15] | 18,487.49 |
|  | 3 | **FOUNDATION WORKS** |  |  | 2012-08-18 | 2012-09-02 |  |  |  |  |  |
| JF721.74 |  | Concrete Pouring |  | 2d | 2012-08-18 | 2012-08-23 | JF721.73 | 70d | 0d | Helper [70 h]; Forman [10 h]; Carpenter [10 h]; Steel Workers [10 h]; Vehicle (pick up 3/4T 4*2) [8 h]; Safety Officer [10 h]; Rigger [10 h]; Project Engineer [10 h]; QC inspector [10 h]; Cutting Machine [10 h]; Driver [10 h]; Crane Operator [10 h]; Diesel Truck [10 h]; Truck Flat Bed [10 h]; Foundation works [0.35] | 43,137.48 |
| JF721.75 |  | Concrete Curing |  | 3d | 2012-08-23 | 2012-08-26 | JF721.74 | 70d | 0d | Helper [120 h]; Forman [50 h]; Carpenter [20 h]; Steel Workers [20 h]; Vehicle (pick up 3/4T 4*2) [20 h]; Safety Officer [20 h]; Rigger [20 h]; Project Engineer [20 h]; QC inspector [20 h]; Cutting Machine [20 h]; Truck Flat Bed [20 h]; Driver [20 h]; Crane Operator [20 h]; Diesel Truck [20 h]; Foundation works [0.35] | 43,137.48 |
| JF721.76 |  | Removal of Formworks |  | 4d | 2012-08-26 | 2012-08-29 | JF721.75 | 70d | 0d | Helper [180 h]; Carpenter [60 h]; Steel Workers [60 h]; Vehicle (pick up 3/4T 4*2) [30 h]; Safety Officer [30 h]; Rigger [30 h]; Project Engineer [30 h]; QC inspector [30 h]; Cutting Machine [30 h]; Truck Flat Bed [30 h]; Crane Operator [30 h]; Diesel Truck [30 h]; Driver [30 h]; Foundation works [0.15] | 18,487.49 |
| JF721.77 |  | Backfilling |  | 4d | 2012-08-29 | 2012-09-02 | JF721.76 | 70d | 0d | Backhoe [30 h]; Helper [120 h]; Forman [30 h]; Carpenter [30 h]; Steel Workers [30 h]; Vehicle (pick up 3/4T 4*2) [30 h]; Rigger [30 h]; QC inspector [30 h]; Project Engineer [30 h]; Cutting Machine [30 h]; Truck Flat Bed [30 h]; Crane Operator [30 h]; Driver [30 h]; Diesel Truck [30 h]; Foundation works [0.15] | 18,487.49 |
|  | 21 | **Complete construction of Civil/Structural Work , including excavation, backfill** |  |  | 2012-09-02 | 2012-09-02 |  |  |  |  |  |
| 1.9 |  | Complete construction of Civil/Structural Work , including excavation, backfill | milestone | 0d | 2012-09-02 | 2012-09-02 | JF721.77 | 70d | 16d |  |  |
|  | 4 | **ANNULAR & BOTTOM PLATES (SITE Installation WORKS)** |  |  | 2012-09-16 | 2012-11-12 |  |  |  |  |  |
| JF721.78 |  | Erect & Weld Annular Plates |  | 15d | 2012-09-16 | 2012-09-29 | 1.9, JF721.60, 1.8 | 54d | 0d | Forman [70 h]; Crane Operator [70 h]; Rigger [70 h]; Fabricator [140 h]; Welder 6G [140 h]; Tack Welder [70 h]; Helper [420 h]; Crane 25T [70 h]; Truck Flat Bed [70 h]; Compressor 450 CFM [70 h]; Cutting Machine [70 h]; Project Engineer [70 h]; QC inspector [70 h]; Safety Officer [70 h]; Vehicle (pick up 3/4T 4*2) [70 h]; Annular & bottom / Plates (Site Installation works) [0.25] | 9,243.75 |
| JF721.79 |  | Erect & Tack Bottom Plates |  | 20d | 2012-09-29 | 2012-10-16 | JF721.78 | 54d | 0d | Compressor 450 CFM [240 h]; Crane Operator [60 h]; Forman [60 h]; Crane 25T [60 h]; Rigger [60 h]; Truck Flat Bed [60 h]; Tack Welder [120 h]; Helper [360 h]; Fabricator [120 h]; Project Engineer [60 h]; QC inspector [60 h]; Safety Officer [60 h]; Vehicle (pick up 3/4T 4*2) [60 h]; Annular & bottom / Plates (Site Installation works) [0.2] | 7,395 |
| JF721.80 |  | Welding of Bottom Plates |  | 25d | 2012-10-16 | 2012-11-08 | JF721.79 | 54d | 0d | Welder 6G [420 h]; Forman [70 h]; Compressor 450 CFM [70 h]; Cutting Machine [70 h]; Helper [140 h]; Safety Officer [70 h]; Rigger [70 h]; QC inspector [70 h]; Project Engineer [70 h]; Vehicle (pick up 3/4T 4*2) [70 h]; Diesel Truck [70 h]; Crane Operator [70 h]; Driver [70 h]; Truck Flat Bed [70 h]; Annular & bottom / Plates (Site Installation works) [0.3] | 11,092.49 |
| JF721.81 |  | Visual Inspection & Cleaning |  | 2d | 2012-11-08 | 2012-11-10 | JF721.80 | 54d | 0d | QC inspector [10 h]; Project Engineer [10 h]; Forman [10 h]; Helper [50 h]; Rigger [10 h]; Vehicle (pick up 3/4T 4*2) [10 h]; Truck Flat Bed [10 h]; Cutting Machine [10 h]; Diesel Truck [10 h]; Driver [10 h]; Crane Operator [10 h]; Annular & bottom / Plates (Site Installation works) [0.1] | 3,697.5 |
| JF721.82 |  | Carry Out NDT & Vaccuum Box Test |  | 3d | 2012-11-10 | 2012-11-12 | JF721.81 | 54d | 0d | QC inspector [20 h]; Forman [20 h]; Helper [100 h]; Project Engineer [20 h]; Vehicle (pick up 3/4T 4*2) [20 h]; Cutting Machine [20 h]; Truck Flat Bed [20 h]; Diesel Truck [20 h]; Crane Operator [20 h]; Driver [20 h]; Safety Officer [20 h]; Rigger [20 h]; Annular & bottom / Plates (Site Installation works) [0.15] | 5,546.25 |

| ID | WBS | Activity | Duration | Start | Finish | Predecessors | Total float | Free float | Resources | Cost |
| --- | --- | --- | --- | --- | --- | --- | --- | --- | --- | --- |
|  | 5 | **SHELL COURSE #1(SITE Installation WORKS)** |  | 2012-11-12 | 2012-11-22 |  |  |  |  |  |
| JF721.83 |  | Prepare Shell Course # 1 for Erection | 4d | 2012-11-12 | 2012-11-15 | JF721.82, JF721.61 | 54d | 0d | Crane Operator [10 h]; Forman [10 h]; Crane 25T [10 h]; Rigger [10 h]; Truck Flat Bed [10 h]; Fabricator [10 h]; Helper [40 h]; Cutting Machine [10 h]; Mason [10 h]; Tack Welder [10 h]; Safety Officer [10 h]; Project Engineer [10 h]; QC inspector [10 h]; Driver [10 h]; Vehicle (pick up 3/4T 4*2) [10 h]; Shell Course #1 / (site Installation works) [0.1] | 5,546.25 |
| JF721.84 |  | Erect & Tack Shell Course # 1 | 5d | 2012-11-15 | 2012-11-20 | JF721.83 | 54d | 0d | Crane Operator [20 h]; Forman [20 h]; Crane 25T [20 h]; Rigger [20 h]; Fabricator [40 h]; Tack Welder [40 h]; Compressor 450 CFM [80 h]; Cutting Machine [20 h]; Welder 6G [80 h]; Scaffolder [20 h]; Project Engineer [20 h]; QC inspector [20 h]; Safety Officer [20 h]; Driver [20 h]; Truck Flat Bed [20 h]; Shell Course #1 / (site Installation works) [0.2] | 11,092.49 |
| JF721.85 |  | Weld Outer Vertical Seam | 5d | 2012-11-17 | 2012-11-21 | JF721.84 SS+1d | 54d | 0d | Forman [20 h]; Fabricator [20 h]; Welder 6G [160 h]; Compressor 450 CFM [160 h]; Helper [100 h]; Cutting Machine [20 h]; Tack Welder [20 h]; Driver [20 h]; Truck Flat Bed [20 h]; Project Engineer [20 h]; QC inspector [20 h]; Safety Officer [20 h]; Shell Course #1 / (site Installation works) [0.25] | 13,865.62 |
| JF721.86 |  | Backgouge & NDT Inside Vertical Seam | 5d | 2012-11-17 | 2012-11-21 | JF721.85 SS+1d | 54d | 0d | Helper [80 h]; Forman [20 h]; Cutting Machine [20 h]; Fabricator [20 h]; QC inspector [20 h]; Welder 6G [160 h]; Compressor 450 CFM [160 h]; Safety Officer [20 h]; Project Engineer [20 h]; Truck Flat Bed [20 h]; Driver [20 h]; Shell Course #1 / (site Installation works) [0.15] | 8,319.37 |
| JF721.87 |  | Weld Inside Vertical Seam | 5d | 2012-11-18 | 2012-11-22 | JF721.86 SS+1d | 54d | 0d | Compressor 450 CFM [160 h]; Welder 6G [160 h]; Tack Welder [20 h]; Fabricator [20 h]; Forman [20 h]; QC inspector [20 h]; Helper [80 h]; Safety Officer [20 h]; Project Engineer [20 h]; Driver [20 h]; Truck Flat Bed [20 h]; Cutting Machine [20 h]; Shell Course #1 / (site Installation works) [0.3] | 16,638.74 |
|  | 6 | **SHELL COURSE#2(SITE Installation WORKS & TESTING)** |  | 2012-11-20 | 2012-12-04 |  |  |  |  |  |
| JF721.88 |  | Prepare Shell Course # 2 for Erection | 4d | 2012-11-20 | 2012-11-23 | JF721.87 SS+2d | 54d | 0d | Truck Flat Bed [10 h]; Crane Operator [10 h]; Forman [10 h]; Rigger [10 h]; Fabricator [40 h]; Helper [60 h]; Diesel Truck [10 h]; Tack Welder [30 h]; Project Engineer [10 h]; QC inspector [10 h]; Safety Officer [10 h]; Driver [10 h]; Shell Course #2 / (site Installation works& testing) [0.05] | 3,697.5 |
| JF721.89 |  | Erect & Tack Shell Course # 2 | 5d | 2012-11-24 | 2012-11-27 | JF721.88 | 54d | 0d | Crane Operator [20 h]; Diesel Truck [20 h]; Forman [20 h]; Rigger [20 h]; Truck Flat Bed [20 h]; Fabricator [80 h]; Tack Welder [60 h]; Compressor 450 CFM [100 h]; Helper [120 h]; Welder 6G [100 h]; Driver [20 h]; Project Engineer [20 h]; QC inspector [20 h]; Safety Officer [20 h]; Cutting Machine [20 h]; Shell Course #2 / (site Installation works& testing) [0.1] | 7,395 |
| JF721.90 |  | Weld Outer Vertical Seam | 6d | 2012-11-24 | 2012-11-29 | JF721.89 SS+1d | 54d | 0d | Forman [30 h]; Welder 6G [240 h]; Compressor 450 CFM [240 h]; Helper [180 h]; Tack Welder [90 h]; Shell Course #2 / (site Installation works& testing) [0.2] | 14,789.99 |
| JF721.91 |  | Backgouge & NDT Inside Vertical Seam | 5d | 2012-11-25 | 2012-11-29 | JF721.90 SS+1d | 54d | 0d | Forman [20 h]; Helper [140 h]; Driver [20 h]; Truck Flat Bed [20 h]; Project Engineer [20 h]; QC inspector [20 h]; Safety Officer [20 h]; Shell Course #2 / (site Installation works& testing) [0.1] | 7,395 |
| JF721.92 |  | Weld Inside Vertical Seam | 5d | 2012-11-26 | 2012-11-30 | JF721.91 SS+1d | 54d | 0d | Forman [20 h]; Welder 6G [200 h]; Compressor 450 CFM [200 h]; Helper [120 h]; Cutting Machine [20 h]; Auto Welding Operator [20 h]; Tack Welder [60 h]; Driver [20 h]; Truck Flat Bed [20 h]; Project Engineer [20 h]; QC inspector [20 h]; Safety Officer [20 h]; Shell Course #2 / (site Installation works& testing) [0.2] | 14,789.99 |
| JF721.93 |  | "Fit & Tack Horizontal Seam between / Shell Course # 1 & 2" | 5d | 2012-11-27 | 2012-12-01 | JF721.92 SS+1d | 54d | 0d | Forman [20 h]; Fabricator [60 h]; Tack Welder [60 h]; Compressor 450 CFM [60 h]; Cutting Machine [20 h]; Helper [100 h]; Project Engineer [20 h]; QC inspector [20 h]; Safety Officer [20 h]; Truck Flat Bed [20 h]; Driver [20 h]; Diesel Truck [20 h]; Vehicle (pick up 3/4T 4*2) [20 h]; Shell Course #2 / (site Installation works& testing) [0.05] | 3,697.5 |
| JF721.94 |  | "Weld Outer Horizontal Seam between / Shell Course # 1 & 2" | 7d | 2012-11-28 | 2012-12-04 | JF721.93 SS+1d | 54d | 0d | Forman [40 h]; Welder 6G [360 h]; Compressor 450 CFM [360 h]; Cutting Machine [40 h]; Tack Welder [80 h]; Helper [160 h]; Project Engineer [40 h]; QC inspector [40 h]; Safety Officer [40 h]; Truck Flat Bed [40 h]; Driver [40 h]; Diesel Truck [40 h]; Vehicle (pick up 3/4T 4*2) [40 h]; Shell Course #2 / (site Installation works& testing) [0.1] | 7,395 |
| JF721.95 |  | "Backgouge & NDT Inside Horizontal / Seam between Shell Course# 1 & 2" | 5d | 2012-11-28 | 2012-12-03 | JF721.94 SS+1d | 54d | 0d | Forman [20 h]; Fabricator [40 h]; Helper [80 h]; Project Engineer [20 h]; QC inspector [20 h]; Safety Officer [20 h]; Truck Flat Bed [20 h]; Driver [20 h]; Diesel Truck [20 h]; Vehicle (pick up 3/4T 4*2) [20 h]; Shell Course #2 / (site Installation works& testing) [0.05] | 3,697.5 |
| JF721.96 |  | Weld Inner Horizontal Seam between / Shell Course # 1 & 2" | 5d | 2012-11-29 | 2012-12-04 | JF721.95 SS+1d | 54d | 0d | Forman [20 h]; Welder 6G [160 h]; Compressor 450 CFM [160 h]; Cutting Machine [20 h]; Tack Welder [40 h]; Helper [80 h]; Project Engineer [20 h]; QC inspector [20 h]; Safety Officer [20 h]; Truck Flat Bed [20 h]; Driver [20 h]; Diesel Truck [20 h]; Vehicle (pick up 3/4T 4*2) [20 h]; Shell Course #2 / (site Installation works& testing) [0.15] | 11,092.49 |
|  | 7 | **SHELL COURSE#3 (SITE Installation WORKS & TESTING)** |  | 2012-11-29 | 2012-12-13 |  |  |  |  |  |
| JF721.97 |  | Prepare Shell Course # 3 for Erection | 4d | 2012-11-29 | 2012-12-03 | JF721.96 SS | 54d | 0d | Forman [10 h]; Crane Operator [10 h]; Rigger [10 h]; Fabricator [20 h]; Helper [50 h]; Diesel Truck [10 h]; Driver [10 h]; Truck Flat Bed [10 h]; Project Engineer [10 h]; QC inspector [10 h]; Safety Officer [10 h]; Vehicle (pick up 3/4T 4*2) [10 h]; Shell Course #3 / (site Installation works& testing) [0.05] | 3,697.5 |
| JF721.98 |  | Erect & Tack Shell Course # 3 | 5d | 2012-12-03 | 2012-12-07 | JF721.97 | 54d | 0d | Diesel Truck [20 h]; Crane Operator [20 h]; Forman [20 h]; Rigger [20 h]; Fabricator [40 h]; Tack Welder [40 h]; Compressor 450 CFM [40 h]; Helper [80 h]; Driver [20 h]; Truck Flat Bed [20 h]; Project Engineer [20 h]; QC inspector [20 h]; Safety Officer [20 h]; Vehicle (pick up 3/4T 4*2) [20 h]; Shell Course #3 / (site Installation works& testing) [0.1] | 7,395 |
| JF721.99 |  | Weld Outer Vertical Seam | 6d | 2012-12-04 | 2012-12-09 | JF721.98 SS+1d | 54d | 0d | Helper [120 h]; Forman [30 h]; Welder 6G [240 h]; Compressor 450 CFM [240 h]; Cutting Machine [30 h]; Tack Welder [60 h]; Driver [30 h]; Truck Flat Bed [30 h]; Project Engineer [30 h]; QC inspector [30 h]; Safety Officer [30 h]; Vehicle (pick up 3/4T 4*2) [30 h]; Shell Course #3 / (site Installation works& testing) [0.2] | 14,789.99 |
| JF721.100 |  | Backgouge & NDT Inside Vertical Seam | 5d | 2012-12-04 | 2012-12-09 | JF721.99 SS+1d | 54d | 0d | Forman [40 h]; Helper [80 h]; Driver [20 h]; Truck Flat Bed [20 h]; Project Engineer [20 h]; QC inspector [20 h]; Safety Officer [20 h]; Vehicle (pick up 3/4T 4*2) [20 h]; Shell Course #3 / (site Installation works& testing) [0.1] | 7,395 |
| JF721.101 |  | Weld Inside Vertical Seam | 5d | 2012-12-05 | 2012-12-10 | JF721.100 SS+1d | 54d | 0d | Forman [20 h]; Welder 6G [160 h]; Helper [80 h]; Compressor 450 CFM [160 h]; Cutting Machine [20 h]; Tack Welder [40 h]; Driver [20 h]; Truck Flat Bed [20 h]; Project Engineer [20 h]; QC inspector [20 h]; Safety Officer [20 h]; Vehicle (pick up 3/4T 4*2) [20 h]; Shell Course #3 / (site Installation works& testing) [0.2] | 14,789.99 |
| JF721.102 |  | "Fit & Tack Horizontal Seam between / Shell Course # 2 & 3" | 5d | 2012-12-06 | 2012-12-10 | JF721.101 SS+1d | 54d | 0d | Forman [20 h]; Fabricator [40 h]; Compressor 450 CFM [40 h]; Helper [60 h]; Tack Welder [40 h]; Driver [20 h]; Truck Flat Bed [20 h]; Project Engineer [20 h]; QC inspector [20 h]; Safety Officer [20 h]; Vehicle (pick up 3/4T 4*2) [20 h]; Shell Course #3 / (site Installation works& testing) [0.05] | 3,697.5 |
| JF721.103 |  | "Weld Outer Horizontal Seam between / Shell Course # 2 & 3" | 7d | 2012-12-07 | 2012-12-13 | JF721.102 SS+1d | 54d | 0d | Forman [40 h]; Welder 6G [320 h]; Compressor 450 CFM [320 h]; Cutting Machine [40 h]; Helper [120 h]; Tack Welder [40 h]; Driver [40 h]; Truck Flat Bed [40 h]; Project Engineer [40 h]; QC inspector [40 h]; Safety Officer [40 h]; Vehicle (pick up 3/4T 4*2) [40 h]; Shell Course #3 / (site Installation works& testing) [0.1] | 7,395 |
| JF721.104 |  | "Backgouge & NDT Inside Horizontal / Seam between Shell Course# 2 & 3" | 5d | 2012-12-08 | 2012-12-12 | JF721.103 SS+1d | 54d | 0d | Forman [20 h]; Helper [60 h]; Fabricator [2 h]; Driver [20 h]; Truck Flat Bed [20 h]; Project Engineer [20 h]; QC inspector [20 h]; Safety Officer [20 h]; Vehicle (pick up 3/4T 4*2) [20 h]; Shell Course #3 / (site Installation works& testing) [0.05] | 3,697.5 |
| JF721.105 |  | Weld Inner Horizontal Seam between / Shell Course # 2 & 3" | 5d | 2012-12-09 | 2012-12-13 | JF721.104 SS+1d | 54d | 0d | Forman [20 h]; Welder 6G [160 h]; Compressor 450 CFM [160 h]; Cutting Machine [20 h]; Helper [60 h]; Tack Welder [20 h]; Driver [20 h]; Truck Flat Bed [20 h]; Project Engineer [20 h]; QC inspector [20 h]; Safety Officer [20 h]; Vehicle (pick up 3/4T 4*2) [20 h]; Shell Course #3 / (site Installation works& testing) [0.15] | 11,092.49 |

| ID | WBS | Activity | Duration | Start | Finish | Predecessors | Total float | Free float | Resources | Cost |
| --- | --- | --- | --- | --- | --- | --- | --- | --- | --- | --- |
|  | 8 | **SHELL COURSE#4 (SITE Installation WORKS & TESTING)** |  | 2012-11-22 | 2012-12-27 |  |  |  |  |  |
| JF721.115 |  | Fit, Weld Shell Course # 1 Annular Plate & Oil Test | 9d | 2012-11-22 | 2012-11-30 | JF721.87 | 78d | 24d | Fabricator [240 h]; Tack Welder [180 h]; Compressor 450 CFM [480 h]; Cutting Machine [60 h]; Helper [360 h]; Welder 6G [480 h]; Driver [60 h]; Truck Flat Bed [60 h]; Project Engineer [60 h]; QC inspector [60 h]; Safety Officer [60 h]; Vehicle (pick up 3/4T 4*2) [60 h]; Shell Course #4 (site Installation works & testing) [0.05] | 3,697.5 |
| JF721.106 |  | Prepare Shell Course # 4 for Erection | 4d | 2012-12-13 | 2012-12-17 | JF721.105, JF721.115 SS | 54d | 0d | Forman [10 h]; Diesel Truck [10 h]; Crane Operator [10 h]; Rigger [10 h]; Fabricator [10 h]; Helper [30 h]; Driver [10 h]; Truck Flat Bed [10 h]; Project Engineer [10 h]; QC inspector [10 h]; Safety Officer [10 h]; Vehicle (pick up 3/4T 4*2) [10 h]; Shell Course #4 (site Installation works & testing) [0.05] | 3,697.5 |
| JF721.107 |  | Erect & Tack Shell Course # 4 | 5d | 2012-12-17 | 2012-12-21 | JF721.106 | 54d | 0d | Compressor 450 CFM [40 h]; Cutting Machine [20 h]; Helper [60 h]; Tack Welder [40 h]; Fabricator [40 h]; Diesel Truck [20 h]; Crane Operator [20 h]; Forman [20 h]; Driver [20 h]; Truck Flat Bed [20 h]; Project Engineer [20 h]; QC inspector [20 h]; Safety Officer [20 h]; Vehicle (pick up 3/4T 4*2) [20 h]; Shell Course #4 (site Installation works & testing) [0.1] | 7,395 |
| JF721.108 |  | Weld Outer Vertical Seam | 6d | 2012-12-17 | 2012-12-23 | JF721.107 SS+1d | 54d | 0d | Forman [30 h]; Welder 6G [240 h]; Compressor 450 CFM [240 h]; Cutting Machine [30 h]; Helper [60 h]; Tack Welder [30 h]; Driver [30 h]; Truck Flat Bed [30 h]; Project Engineer [30 h]; QC inspector [30 h]; Safety Officer [30 h]; Vehicle (pick up 3/4T 4*2) [30 h]; Shell Course #4 (site Installation works & testing) [0.2] | 14,789.99 |
| JF721.109 |  | Backgouge & NDT Inside Vertical Seam | 5d | 2012-12-18 | 2012-12-23 | JF721.108 SS+1d | 54d | 0d | Forman [20 h]; Fabricator [20 h]; Helper [40 h]; Driver [20 h]; Truck Flat Bed [20 h]; Project Engineer [20 h]; QC inspector [20 h]; Safety Officer [20 h]; Vehicle (pick up 3/4T 4*2) [20 h]; Shell Course #4 (site Installation works & testing) [0.1] | 7,395 |
| JF721.110 |  | Weld Inside Vertical Seam | 5d | 2012-12-19 | 2012-12-23 | JF721.109 SS+1d | 54d | 0d | Forman [20 h]; Welder 6G [160 h]; Compressor 450 CFM [160 h]; Cutting Machine [20 h]; Helper [40 h]; Tack Welder [20 h]; Driver [20 h]; Truck Flat Bed [20 h]; Project Engineer [20 h]; QC inspector [20 h]; Safety Officer [20 h]; Vehicle (pick up 3/4T 4*2) [20 h]; Shell Course #4 (site Installation works & testing) [0.15] | 11,092.49 |
| JF721.111 |  | "Fit & Tack Horizontal Seam between / Shell Course # 3 & 4" | 5d | 2012-12-20 | 2012-12-24 | JF721.110 SS+1d | 54d | 0d | Forman [20 h]; Fabricator [40 h]; Tack Welder [40 h]; Compressor 450 CFM [40 h]; Cutting Machine [20 h]; Helper [60 h]; Driver [20 h]; Truck Flat Bed [20 h]; Project Engineer [20 h]; QC inspector [20 h]; Safety Officer [20 h]; Vehicle (pick up 3/4T 4*2) [20 h]; Shell Course #4 (site Installation works & testing) [0.1] | 7,395 |
| JF721.112 |  | Weld Outer Horizontal Seam between / Shell Course # 3 & 4 | 7d | 2012-12-21 | 2012-12-27 | JF721.111 SS+1d | 54d | 0d | Forman [40 h]; Welder 6G [320 h]; Compressor 450 CFM [320 h]; Cutting Machine [40 h]; Tack Welder [40 h]; Helper [120 h]; Driver [40 h]; Truck Flat Bed [40 h]; Project Engineer [40 h]; QC inspector [40 h]; Safety Officer [40 h]; Vehicle (pick up 3/4T 4*2) [40 h]; Shell Course #4 (site Installation works & testing) [0.1] | 7,395 |
| JF721.113 |  | "Backgouge & NDT Inside Horizontal / Seam between Shell Course# 3 & 4" | 5d | 2012-12-22 | 2012-12-26 | JF721.112 SS+1d | 54d | 0d | Forman [20 h]; Fabricator [20 h]; Helper [60 h]; Driver [20 h]; Truck Flat Bed [20 h]; Project Engineer [20 h]; QC inspector [20 h]; Safety Officer [20 h]; Vehicle (pick up 3/4T 4*2) [20 h]; Shell Course #4 (site Installation works & testing) [0.05] | 3,697.5 |
| JF721.114 |  | Weld Inner Horizontal Seam between / Shell Course # 3 & 4" | 5d | 2012-12-23 | 2012-12-27 | JF721.113 SS+1d | 54d | 0d | Forman [20 h]; QC inspector [20 h]; Welder 6G [160 h]; Compressor 450 CFM [160 h]; Cutting Machine [20 h]; Helper [80 h]; Tack Welder [20 h]; Driver [20 h]; Truck Flat Bed [20 h]; Project Engineer [20 h]; Safety Officer [20 h]; Vehicle (pick up 3/4T 4*2) [20 h]; Shell Course #4 (site Installation works & testing) [0.1] | 7,395 |
|  | 9 | **CURB ANGLE(SITE INSTALLATION WORKS)** |  | 2012-12-27 | 2013-01-06 |  |  |  |  |  |
| JF721.116 |  | Erect & Tack Curve Angle | 5d | 2012-12-27 | 2012-12-31 | JF721.114 | 54d | 0d | Forman [20 h]; Diesel Truck [20 h]; Crane Operator [20 h]; Compressor 450 CFM [20 h]; Tack Welder [20 h]; Helper [80 h]; Cutting Machine [20 h]; Rigger [20 h]; Fabricator [20 h]; Driver [20 h]; Truck Flat Bed [20 h]; Project Engineer [20 h]; QC inspector [20 h]; Safety Officer [20 h]; Vehicle (pick up 3/4T 4*2) [20 h]; Curve Angel / (site Installation works) [0.3] | 7,395 |
| JF721.117 |  | Weld Curve Angle | 7d | 2012-12-31 | 2013-01-06 | JF721.116 | 54d | 0d | Forman [40 h]; Welder 6G [160 h]; Helper [160 h]; Compressor 450 CFM [160 h]; Cutting Machine [40 h]; Tack Welder [40 h]; Driver [40 h]; Truck Flat Bed [40 h]; Project Engineer [40 h]; QC inspector [40 h]; Safety Officer [40 h]; Vehicle (pick up 3/4T 4*2) [40 h]; Curve Angel / (site Installation works) [0.7] | 17,254.99 |
|  | 10 | **SHELL MANHOLES & NOZZLES (SITE Installation WORKS & TESTING)** |  | 2013-01-06 | 2013-01-16 |  |  |  |  |  |
| JF721.118 |  | MArk & Cut Holes | 5d | 2013-01-06 | 2013-01-10 | JF721.62, JF721.117 | 54d | 0d | Fabricator [40 h]; Helper [60 h]; Cutting Machine [20 h]; Driver [20 h]; Truck Flat Bed [20 h]; Project Engineer [20 h]; QC inspector [20 h]; Safety Officer [20 h]; Vehicle (pick up 3/4T 4*2) [20 h]; Shell manholes & / nozzles(site Installation works & testing) [0.1] | 3,697.5 |
| JF721.119 |  | Fit & Tack Manholes ,Nozzles on Shell | 5d | 2013-01-07 | 2013-01-12 | JF721.118 SS+1d | 54d | 0d | Tack Welder [20 h]; Fabricator [40 h]; Helper [80 h]; Compressor 450 CFM [20 h]; Cutting Machine [20 h]; Driver [20 h]; Truck Flat Bed [20 h]; Project Engineer [20 h]; QC inspector [20 h]; Safety Officer [20 h]; Vehicle (pick up 3/4T 4*2) [20 h]; Shell manholes & / nozzles(site Installation works & testing) [0.3] | 11,092.49 |
| JF721.120 |  | Weld MAnholes & Nozzles on shell | 5d | 2013-01-08 | 2013-01-12 | JF721.119 SS+1d | 54d | 0d | Welder 6G [80 h]; Compressor 450 CFM [80 h]; Helper [80 h]; Cutting Machine [50 h]; Tack Welder [20 h]; Driver [20 h]; Truck Flat Bed [20 h]; Project Engineer [20 h]; QC inspector [20 h]; Safety Officer [20 h]; Vehicle (pick up 3/4T 4*2) [20 h]; Shell manholes & / nozzles(site Installation works & testing) [0.45] | 16,638.74 |
| JF721.121 |  | NDT on Manholes & Nozzles on shell | 4d | 2013-01-12 | 2013-01-16 | JF721.120 | 54d | 0d | Helper [50 h]; Fabricator [10 h]; Driver [10 h]; Truck Flat Bed [10 h]; Project Engineer [10 h]; QC inspector [10 h]; Safety Officer [10 h]; Vehicle (pick up 3/4T 4*2) [10 h]; Shell manholes & / nozzles(site Installation works & testing) [0.15] | 5,546.25 |
|  | 11 | **ALUMINUM DOME ROOF (SITE INSTALLATION WORKS)** |  | 2013-01-12 | 2013-02-12 |  |  |  |  |  |
| JF721.122 |  | Prepare Tank for Roof Contruction | 5d | 2013-01-12 | 2013-01-16 | JF721.65 SS+45d, JF721.121 SS | 54d | 0d | Third party for ALuminum Dome Roof Supervisor [20 h]; Diesel Truck [20 h]; Helper [100 h]; Fabricator [20 h]; Crane Operator [20 h]; Forman [20 h]; Safety Officer [20 h]; QC inspector [20 h]; Project Engineer [20 h]; Driver [20 h]; Truck Flat Bed [20 h]; Vehicle (pick up 3/4T 4*2) [20 h]; Aluminum Doom Roof / (Site Installation works) [0.15] | 12,941.24 |
| JF721.123 |  | Install Shoe Support Structure on Shell | 6d | 2013-01-16 | 2013-01-22 | JF721.122 | 54d | 0d | Fabricator [80 h]; Third party for ALuminum Dome Roof Supervisor [40 h]; Forman [40 h]; Diesel Truck [40 h]; Crane Operator [20 h]; Rigger [40 h]; Helper [200 h]; Driver [40 h]; Truck Flat Bed [40 h]; Project Engineer [40 h]; QC inspector [40 h]; Safety Officer [40 h]; Vehicle (pick up 3/4T 4*2) [40 h]; Aluminum Doom Roof / (Site Installation works) [0.2] | 17,254.99 |
| JF721.124 |  | Install / Assemble Roof Rafters | 13d | 2013-01-22 | 2013-02-01 | JF721.123 | 54d | 0d | Crane Operator [100 h]; Diesel Truck [100 h]; Forman [100 h]; Rigger [100 h]; Fabricator [200 h]; Helper [600 h]; Driver [100 h]; Truck Flat Bed [100 h]; Project Engineer [100 h]; QC inspector [100 h]; Safety Officer [100 h]; Vehicle (pick up 3/4T 4*2) [100 h]; Aluminum Doom Roof / (Site Installation works) [0.25] | 21,568.74 |
| JF721.125 |  | Installation of Roof Plates | 9d | 2013-02-01 | 2013-02-09 | JF721.124 | 54d | 0d | Third party for ALuminum Dome Roof Supervisor [60 h]; Safety Officer [60 h]; QC inspector [60 h]; Diesel Truck [60 h]; Forman [60 h]; Rigger [60 h]; Fabricator [120 h]; Helper [360 h]; Driver [60 h]; Truck Flat Bed [60 h]; Project Engineer [60 h]; Vehicle (pick up 3/4T 4*2) [60 h]; Aluminum Doom Roof / (Site Installation works) [0.3] | 25,882.49 |
| JF721.126 |  | Install Roof Manholes & Nozzles | 4d | 2013-02-09 | 2013-02-12 | JF721.125 | 54d | 0d | Forman [10 h]; Fabricator [30 h]; Helper [60 h]; Crane Operator [10 h]; Diesel Truck [10 h]; Rigger [10 h]; Driver [10 h]; Truck Flat Bed [10 h]; Project Engineer [10 h]; QC inspector [10 h]; Safety Officer [10 h]; Vehicle (pick up 3/4T 4*2) [10 h]; Aluminum Doom Roof / (Site Installation works) [0.1] | 8,627.5 |

| ID | WBS | Activity | Type | Duration | Start | Finish | Predecessors | Total float | Free float | Resources | Cost |
| --- | --- | --- | --- | --- | --- | --- | --- | --- | --- | --- | --- |
|  | 12 | **PLATFORMS & HANDRAILS (SITE INSTALLATION WORKS)** |  |  | 2013-02-12 | 2013-02-17 |  |  |  |  |  |
| JF721.127 |  | Erect & Fix Stairs, Handrails & Platforms on Shell |  | 4d | 2013-02-12 | 2013-02-16 | JF721.126, JF721.63 | 54d | 0d | Forman [10 h]; Crane Operator [10 h]; Diesel Truck [10 h]; Fabricator [30 h]; Helper [80 h]; Rigger [10 h]; Tack Welder [40 h]; Welder 6G [30 h]; Cutting Machine [10 h]; Compressor 450 CFM [30 h]; Driver [10 h]; Truck Flat Bed [10 h]; Project Engineer [10 h]; QC inspector [10 h]; Safety Officer [10 h]; Vehicle (pick up 3/4T 4*2) [10 h]; Platforms & / handrails (site Installation works) [0.35] | 21,568.74 |
| JF721.128 |  | Erect & Fix Roof Platforms & Handrails |  | 5d | 2013-02-12 | 2013-02-17 | JF721.127 SS | 54d | 0d | Diesel Truck [20 h]; Forman [20 h]; Crane Operator [20 h]; Rigger [20 h]; Fabricator [60 h]; Helper [80 h]; Cutting Machine [20 h]; Compressor 450 CFM [60 h]; Tack Welder [80 h]; Welder 6G [60 h]; Driver [20 h]; Truck Flat Bed [20 h]; Project Engineer [20 h]; QC inspector [20 h]; Safety Officer [20 h]; Vehicle (pick up 3/4T 4*2) [20 h]; Platforms & / handrails (site Installation works) [0.65] | 40,056.23 |
|  | 19 | **MCC** |  |  | 2013-02-17 | 2013-02-17 |  |  |  |  |  |
| 2.A |  | Mechanical COmpleteing (MCC) | milestone | 0d | 2013-02-17 | 2013-02-17 | JF721.128 | 54d | 0d |  |  |
|  | 13 | **HYDROTESTING** |  |  | 2013-02-17 | 2013-04-05 |  |  |  |  |  |
| JF721.129 |  | Install Blind Flanges |  | 4d | 2013-02-17 | 2013-02-20 | 2.A | 54d | 0d | Helper [60 h]; Fabricator [20 h]; Forman [10 h]; Tack Welder [30 h]; Welder 6G [20 h]; Compressor 450 CFM [20 h]; Cutting Machine [10 h]; Driver [10 h]; Truck Flat Bed [10 h]; Project Engineer [10 h]; QC inspector [10 h]; Safety Officer [10 h]; Vehicle (pick up 3/4T 4*2) [10 h]; Hydrotesting [0.15] | 7,395 |
| JF721.130 |  | Tank Water Filling |  | 29d | 2013-02-20 | 2013-03-17 | JF721.129 | 54d | 0d | Water truck 30,000 Gallons [260 h]; Helper [520 h]; Forman [260 h]; Driver [260 h]; Truck Flat Bed [260 h]; Project Engineer [260 h]; QC inspector [260 h]; Safety Officer [260 h]; Vehicle (pick up 3/4T 4*2) [260 h]; Hydrotesting [0.2] | 9,859.99 |
| JF721.131 |  | Hold Water for 48 Hours |  | 5d | 2013-03-17 | 2013-03-21 | JF721.130 | 54d | 0d | Helper [40 h]; Driver [20 h]; Truck Flat Bed [20 h]; Project Engineer [20 h]; QC inspector [20 h]; Safety Officer [20 h]; Vehicle (pick up 3/4T 4*2) [20 h]; Hydrotesting [0.3] | 14,789.99 |
| JF721.132 |  | Drain Water from Tank |  | 14d | 2013-03-21 | 2013-04-02 | JF721.131 | 54d | 0d | Helper [910 h]; Forman [130 h]; Driver [130 h]; Truck Flat Bed [130 h]; Project Engineer [130 h]; QC inspector [130 h]; Safety Officer [130 h]; Vehicle (pick up 3/4T 4*2) [130 h]; Hydrotesting [0.15] | 7,395 |
| JF721.133 |  | Clean & Dry Out Tank |  | 3d | 2013-04-02 | 2013-04-05 | JF721.132 | 54d | 0d | Forman [20 h]; Helper [180 h]; Driver [20 h]; Truck Flat Bed [20 h]; Project Engineer [20 h]; QC inspector [20 h]; Safety Officer [20 h]; Vehicle (pick up 3/4T 4*2) [20 h]; Hydrotesting [0.2] | 9,859.99 |
|  | 24 | **Final Testing** |  |  | 2013-04-05 | 2013-04-05 |  |  |  |  |  |
| 4.A |  | Final Testing | milestone | 0d | 2013-04-05 | 2013-04-05 | JF721.133 | 54d | 0d |  |  |
|  | 14 | **EXTERNAL SITE PAINTING** |  |  | 2013-03-21 | 2013-04-08 |  |  |  |  |  |
| JF721.134 |  | Erect Scafolding Outside Tank |  | 9d | 2013-03-21 | 2013-03-29 | JF721.131 | 54d | 0d | Forman [80 h]; Scaffolder [160 h]; Helper [640 h]; Driver [80 h]; Truck Flat Bed [80 h]; Project Engineer [80 h]; QC inspector [80 h]; Safety Officer [80 h]; Vehicle (pick up 3/4T 4*2) [80 h]; External site painting [0.2] | 7,395 |
| JF721.135 |  | External Shell Blast & Prime |  | 5d | 2013-03-29 | 2013-04-02 | JF721.134 | 54d | 0d | Painter [80 h]; Blaster [80 h]; Helper [240 h]; Driver [40 h]; Truck Flat Bed [40 h]; Project Engineer [40 h]; QC inspector [40 h]; Safety Officer [40 h]; Vehicle (pick up 3/4T 4*2) [40 h]; External site painting [0.3] | 11,092.49 |
| JF721.136 |  | External Shell Secondary & Final Coat |  | 5d | 2013-03-30 | 2013-04-03 | JF721.135 SS+1d | 54d | 0d | Helper [240 h]; Blaster [80 h]; Painter [80 h]; Driver [40 h]; Truck Flat Bed [40 h]; Project Engineer [40 h]; QC inspector [40 h]; Safety Officer [40 h]; Vehicle (pick up 3/4T 4*2) [40 h]; External site painting [0.3] | 11,092.49 |
| JF721.137 |  | External Shell Paint Inspection |  | 2d | 2013-04-03 | 2013-04-05 | JF721.136 | 54d | 0d | Forman [10 h]; Helper [30 h]; Blaster [10 h]; Painter [10 h]; Driver [10 h]; Truck Flat Bed [10 h]; Project Engineer [10 h]; QC inspector [10 h]; Safety Officer [10 h]; Vehicle (pick up 3/4T 4*2) [10 h]; External site painting [0.1] | 3,697.5 |
| JF721.138 |  | Dismantle External Scaffolding |  | 3d | 2013-04-05 | 2013-04-08 | JF721.137 | 54d | 0d | Scaffolder [80 h]; Forman [20 h]; Helper [240 h]; Driver [20 h]; Truck Flat Bed [20 h]; Project Engineer [20 h]; QC inspector [20 h]; Safety Officer [20 h]; Vehicle (pick up 3/4T 4*2) [20 h]; External site painting [0.1] | 3,697.5 |
|  | 15 | **INTERNAL SITE PAINTING** |  |  | 2013-04-05 | 2013-04-23 |  |  |  |  |  |
| JF721.139 |  | Erect Scafolding Inside Tank |  | 7d | 2013-04-05 | 2013-04-11 | 4.A | 54d | 0d | Forman [80 h]; Scaffolder [180 h]; Helper [540 h]; Driver [60 h]; Truck Flat Bed [60 h]; Project Engineer [60 h]; QC inspector [60 h]; Safety Officer [60 h]; Vehicle (pick up 3/4T 4*2) [60 h]; internal site painting [0.15] | 9,243.75 |
| JF721.140 |  | Internal Shell Blast & Prime |  | 4d | 2013-04-08 | 2013-04-11 | JF721.139 SS+3d, JF721.138 | 54d | 0d | Blaster [60 h]; Painter [60 h]; Helper [240 h]; Driver [30 h]; Truck Flat Bed [30 h]; Project Engineer [30 h]; QC inspector [30 h]; Safety Officer [30 h]; Vehicle (pick up 3/4T 4*2) [30 h]; internal site painting [0.2] | 12,324.99 |
| JF721.141 |  | Internal Shell Secondary & Final Coat |  | 4d | 2013-04-11 | 2013-04-14 | JF721.140 | 54d | 0d | Painter [60 h]; Blaster [60 h]; Helper [270 h]; Driver [30 h]; Truck Flat Bed [30 h]; Project Engineer [30 h]; QC inspector [30 h]; Safety Officer [30 h]; Vehicle (pick up 3/4T 4*2) [30 h]; internal site painting [0.2] | 12,324.99 |
| JF721.142 |  | Internal Shell Paint Inspection |  | 2d | 2013-04-11 | 2013-04-13 | JF721.141 SS | 54d | 0d | Forman [10 h]; Helper [90 h]; Blaster [20 h]; Painter [20 h]; Driver [10 h]; Truck Flat Bed [10 h]; Project Engineer [10 h]; QC inspector [10 h]; Safety Officer [10 h]; Vehicle (pick up 3/4T 4*2) [10 h]; internal site painting [0.05] | 3,081.25 |
| JF721.143 |  | Dismantle Internal Scaffolding |  | 4d | 2013-04-13 | 2013-04-16 | JF721.142 | 54d | 0d | Forman [40 h]; Scaffolder [80 h]; Helper [360 h]; Driver [40 h]; Truck Flat Bed [40 h]; Project Engineer [40 h]; QC inspector [40 h]; Safety Officer [40 h]; Vehicle (pick up 3/4T 4*2) [40 h]; internal site painting [0.05] | 3,081.25 |
| JF721.144 |  | Bottom/Annular Plate Blast & Prime |  | 3d | 2013-04-16 | 2013-04-18 | JF721.143 | 54d | 0d | Blaster [40 h]; Painter [40 h]; Helper [100 h]; Driver [20 h]; Truck Flat Bed [20 h]; Project Engineer [20 h]; QC inspector [20 h]; Safety Officer [20 h]; Vehicle (pick up 3/4T 4*2) [20 h]; internal site painting [0.15] | 9,243.75 |
| JF721.145 |  | Bottom/Annular Plate Secondary & Final Coat |  | 3d | 2013-04-19 | 2013-04-21 | JF721.144 | 54d | 0d | Painter [40 h]; Blaster [40 h]; Helper [40 h]; Driver [20 h]; Truck Flat Bed [20 h]; Project Engineer [20 h]; QC inspector [20 h]; Safety Officer [20 h]; Vehicle (pick up 3/4T 4*2) [20 h]; internal site painting [0.15] | 9,243.75 |
| JF721.146 |  | Bottom/Annular Plate Paint Inspection |  | 2d | 2013-04-21 | 2013-04-23 | JF721.145 | 54d | 0d | Forman [10 h]; Helper [20 h]; Blaster [10 h]; Painter [10 h]; Driver [10 h]; Truck Flat Bed [10 h]; Project Engineer [10 h]; QC inspector [10 h]; Safety Officer [10 h]; Vehicle (pick up 3/4T 4*2) [10 h]; internal site painting [0.05] | 3,081.25 |

| ID | WBS | Activity | Type | Duration | Start | Finish | Predecessors | Total float | Free float | Resources | Cost |
| --- | --- | --- | --- | --- | --- | --- | --- | --- | --- | --- | --- |
|  | 16 | **ELECTRICAL SITE WORKS** |  |  | 2013-06-01 | 2013-06-09 |  |  |  |  |  |
| JF721.147 |  | Tanks lighting |  | 3d | 2013-06-01 | 2013-06-03 | 1.12 | 54d | 0d | Forman [20 h]; Helper [80 h]; Tack Welder [20 h]; Driver [20 h]; Truck Flat Bed [20 h]; Project Engineer [20 h]; QC inspector [20 h]; Safety Officer [20 h]; Vehicle (pick up 3/4T 4*2) [20 h]; Electrical Site Works [0.3] | 7,395 |
| JF721.148 |  | Tanks lighting protection |  | 3d | 2013-06-03 | 2013-06-06 | JF721.147 | 54d | 0d | Forman [20 h]; Helper [80 h]; Tack Welder [20 h]; Driver [20 h]; Truck Flat Bed [20 h]; Project Engineer [20 h]; QC inspector [20 h]; Safety Officer [20 h]; Vehicle (pick up 3/4T 4*2) [20 h]; Electrical Site Works [0.3] | 7,395 |
| JF721.149 |  | Grounding system |  | 3d | 2013-06-06 | 2013-06-09 | JF721.148 | 54d | 0d | Forman [20 h]; Helper [60 h]; Driver [20 h]; Truck Flat Bed [20 h]; Project Engineer [20 h]; QC inspector [20 h]; Safety Officer [20 h]; Vehicle (pick up 3/4T 4*2) [20 h]; Electrical Site Works [0.4] | 9,860 |
|  | 22 | **Complete Installation of Task Lighting for the tanks including Cabling** |  |  | 2013-06-09 | 2013-06-09 |  |  |  |  |  |
| 1.10 |  | Complete Installation of Task Lighting for the tanks | milestone | 0d | 2013-06-09 | 2013-06-09 | JF721.149 | 54d | 0d |  |  |
|  | 17 | **THIRD PARTY INSPECTION** |  |  | 2013-06-09 | 2013-06-23 |  |  |  |  |  |
| JF721.150 |  | Concrete testing |  | 4d | 2013-06-09 | 2013-06-12 | 1.10 | 54d | 0d | Concrete Testing-Third party inspection [30 h]; Forman [30 h]; Helper [30 h]; Driver [30 h]; Truck Flat Bed [30 h]; Project Engineer [30 h]; QC inspector [30 h]; Safety Officer [30 h]; Vehicle (pick up 3/4T 4*2) [30 h]; Third Party Inspection [0.1] | 9,860 |
| JF721.151 |  | RT testing for the welding |  | 5d | 2013-06-12 | 2013-06-16 | JF721.150 | 54d | 0d | Forman [40 h]; QC inspector [40 h]; Helper [40 h]; Project Engineer [40 h]; Driver [40 h]; Truck Flat Bed [40 h]; Safety Officer [40 h]; Vehicle (pick up 3/4T 4*2) [40 h]; Third Party Inspection [0.45] | 44,369.98 |
| JF721.152 |  | Sand testing |  | 5d | 2013-06-16 | 2013-06-20 | JF721.151 | 54d | 0d | Forman [40 h]; Helper [40 h]; Driver [40 h]; Truck Flat Bed [40 h]; Project Engineer [40 h]; QC inspector [40 h]; Safety Officer [40 h]; Vehicle (pick up 3/4T 4*2) [40 h]; Third Party Inspection [0.1] | 9,860 |
| JF721.153 |  | Tank Calibration |  | 3d | 2013-06-20 | 2013-06-23 | JF721.152 | 54d | 0d | Helper [40 h]; Forman [20 h]; QC inspector [20 h]; Driver [20 h]; Truck Flat Bed [20 h]; Project Engineer [20 h]; Safety Officer [20 h]; Vehicle (pick up 3/4T 4*2) [20 h]; Third Party Inspection [0.35] | 34,509.98 |
|  | 23 | **Third Party Testing and Commissioning** |  |  | 2013-06-23 | 2013-06-23 |  |  |  |  |  |
| 3.A |  | Third Party Testing | milestone | 0d | 2013-06-23 | 2013-06-23 | JF721.153 | 54d | 0d |  |  |
|  | 18 | **HAND OVER TO CLIENT (COMMISSIONING)** |  |  | 2013-06-23 | 2013-06-27 |  |  |  |  |  |
| JF721.154 |  | FInal Inspection & Hand over to client |  | 5d | 2013-06-23 | 2013-06-27 | 3.A | 54d | 0d | Project Engineer [40 h]; Forman [40 h]; QC inspector [40 h]; Helper [120 h]; Safety Officer [40 h]; Truck Flat Bed [40 h]; Driver [40 h]; Vehicle (pick up 3/4T 4*2) [40 h]; Hand over to Client (commissioning) [1] | 67,787.46 |
|  | 26 | **Project Completion (Tk1)** |  |  | 2013-06-27 | 2013-06-27 |  |  |  |  |  |
| 6.A |  | Project Completion | milestone | 0d | 2013-06-27 | 2013-06-27 | JF721.154 | 54d | 10d |  |  |
|  | 2 | **TANK#2 100 B** |  |  | 2012-06-30 | 2013-07-06 |  |  |  |  |  |
|  | 1 | **ENGINEERING** |  |  | 2012-06-30 | 2012-07-26 |  |  |  |  |  |
|  | 1 | **SOIL INVESTIGATION SUBCONTRACTOR** |  |  | 2012-06-30 | 2012-07-01 |  |  |  |  |  |
| JF721.155 |  | Soil Investigation Works |  | 2d | 2012-06-30 | 2012-07-01 | JF721.1 SS | 0d |  | Geo Technical Survey [20 h]; Soil investigation / sub contractor [1] | 12,426.27 |
|  | 4 | **Complete survey and Geotechnical Investigation for Master Pump Station** |  |  | 2012-07-01 | 2012-07-01 |  |  |  |  |  |
| 2.2 |  | Complete survey and Geotechnical Investigation for both Master Pump Station | milestone | 0d | 2012-07-01 | 2012-07-01 | JF721.155 | 44d | 0d |  |  |
|  | 2 | **ENGINEERING DESIGN CALCULATIONS)** |  |  | 2012-07-01 | 2012-07-17 |  |  |  |  |  |
| JF721.156 |  | 60% Submittal |  | 1d | 2012-07-01 | 2012-07-02 | 2.2 | 44d | 0d | Mechanical Design Engineer [8 h]; Engineering / Design Calculations [0.15] | 2,795.91 |
| JF721.157 |  | 60% Comments Incooperation |  | 7d | 2012-07-02 | 2012-07-08 | JF721.156 | 44d | 0d | Mechanical Design Engineer [56 h]; Engineering / Design Calculations [0.2] | 3,727.88 |
| JF721.158 |  | 90% Submittal |  | 1d | 2012-07-08 | 2012-07-09 | JF721.157 | 44d | 0d | Mechanical Design Engineer [8 h]; Engineering / Design Calculations [0.15] | 2,795.91 |
| JF721.159 |  | 90% Comments Incooperation |  | 7d | 2012-07-09 | 2012-07-15 | JF721.158 | 44d | 0d | Mechanical Design Engineer [56 h]; Engineering / Design Calculations [0.2] | 3,727.88 |
| JF721.160 |  | IFC |  | 3d | 2012-07-15 | 2012-07-17 | JF721.159 | 44d | 0d | Mechanical Design Engineer [24 h]; Engineering / Design Calculations [0.3] | 5,591.82 |

Notes:
- 2: DESIGN,ENGINEERING,SUPPLY OF / MATERIALS,MANUFACTURING,PREFABRICATION,ASSUMBLY,PAINTING&COATING,ERECTION,SHOP / TESTING,INSPECTION,PACKING AND DELIEVERY TO SITE,OPERATING & MAINTENANCE / MANUALS AND SPARE PARTS PACKADGE
- JF721.155: Steps: Soil Contractor Mobilization; Start of work; Finishing & Moving to 2nd Tank
- JF721.157: Steps: Recieving the Comments from client; Incooperating the Comments
- JF721.159: Steps: Recieving the Comments from client; Incooperating the Comments
- JF721.160: Steps: Receving Final Approval from client; Preparing the Drawings to IFC

| ID | WBS | Activity | Type | Duration | Start | Finish | Predecessors | Total float | Free float | Resources | Cost |
| --- | --- | --- | --- | --- | --- | --- | --- | --- | --- | --- | --- |
|  | 5 | **Complete Engineering design and Calculations** |  |  | 2012-07-17 | 2012-07-17 |  |  |  |  |  |
| 2.3 |  | Complete Engineering design and Calculations | milestone | 0d | 2012-07-17 | 2012-07-17 | JF721.160 FF | 70d | 0d |  |  |
|  | 3 | **ENGINEERING TANK & FOUNDATION DRAWINGS** |  |  | 2012-07-17 | 2012-07-26 |  |  |  |  |  |
| JF721.161 |  | 60% Submittal (Tank & Foundation Drawings) |  | 1d | 2012-07-17 | 2012-07-18 | JF721.160, 2.3 | 70d | 0d | Mechanical Design Engineer [8 h]; Quantity Surveyor (Material Specialist) [8 h]; Structural Design Engineer [8 h]; Engineering / Tank & / foundation Drawings [0.15] | 4,659.85 |
| JF721.162 |  | 60% Comments Incooperation (Tanks & Foundation Drawings) |  | 5d | 2012-07-18 | 2012-07-23 | JF721.161 | 70d | 0d | Structural Design Engineer [40 h]; Mechanical Design Engineer [40 h]; Quantity Surveyor (Material Specialist) [40 h]; Engineering / Tank & / foundation Drawings [0.2] | 6,213.13 |
| JF721.163 |  | 90% Submittal (Tanks & Foundation Drawings) |  | 1d | 2012-07-23 | 2012-07-23 | JF721.162 | 70d | 0d | Mechanical Design Engineer [8 h]; Structural Design Engineer [8 h]; Quantity Surveyor (Material Specialist) [8 h]; Engineering / Tank & / foundation Drawings [0.15] | 4,659.85 |
| JF721.164 |  | 90% Comments Incooperation (Tanks & Foundation Drawings) |  | 2d | 2012-07-23 | 2012-07-25 | JF721.163 | 70d | 0d | Quantity Surveyor (Material Specialist) [16 h]; Structural Design Engineer [16 h]; Mechanical Design Engineer [16 h]; Engineering / Tank & / foundation Drawings [0.2] | 6,213.13 |
| JF721.165 |  | IFC |  | 1d | 2012-07-25 | 2012-07-26 | JF721.164 | 71d | 0d | Mechanical Design Engineer [8 h]; Structural Design Engineer [8 h]; Quantity Surveyor (Material Specialist) [8 h]; Engineering / Tank & / foundation Drawings [0.3] | 9,319.7 |
|  | 6 | **Complete Fabrication and GA Drawing with Bill of Quantities** |  |  | 2012-07-26 | 2012-07-26 |  |  |  |  |  |
| 2.4 |  | Complete Fabrication and GA Drawing with Bill of Quantities | milestone | 0d | 2012-07-26 | 2012-07-26 | JF721.165 FF | 71d | 1d |  |  |
|  | 2 | **PORCURMENT (INCLUDING DELIEVERY OF RAW MATERIAL & PREFABRICATION OF MATERIAL AT ALZAMIL FACTORY)** |  |  | 2012-07-01 | 2013-06-09 |  |  |  |  |  |
|  | 1 | **CAMP FACILITIES & SITE OFFICIES** |  |  | 2012-07-01 | 2012-07-10 |  |  |  |  |  |
| JF721.166 |  | PO Issued |  | 3d | 2012-07-01 | 2012-07-03 | 2.2 | 48d | 0d | Camp Facilities & Site Offices [0.6] | 74,741.95 |
| JF721.167 |  | Ma'aden Site Delievery |  | 7d | 2012-07-04 | 2012-07-10 | JF721.166 | 48d | 0d | Camp Facilities & Site Offices [0.4] | 49,827.96 |
|  | 2 | **CATHODIC PROTECTION SYSTEM SUBCONTRACTOR** |  |  | 2012-07-24 | 2013-05-13 |  |  |  |  |  |
| JF721.168 |  | Approval for Vendor Drawings & SPecifications |  | 3d | 2012-07-24 | 2012-07-27 | JF721.164 SS+1d | 70d | 0d | Cathodic / protection System subcontractor [0.1] | 4,982.8 |
| JF721.169 |  | PO Issued |  | 27d | 2012-07-27 | 2012-08-22 | JF721.168 | 159d | 0d | Cathodic / protection System subcontractor [0.2] | 9,965.59 |
| JF721.170 |  | CP System Delievered to Ma'aden Site & Installed |  | 20d | 2013-04-23 | 2013-05-10 | JF721.300 SS | 44d | 0d | Forman [160 h]; Fabricator [160 h]; Helper [320 h]; Diesel Truck [160 h]; Crane Operator [160 h]; Driver [160 h]; Truck Flat Bed [160 h]; Cutting Machine [160 h]; Project Engineer [160 h]; QC inspector [160 h]; Safety Officer [160 h]; Vehicle (pick up 3/4T 4*2) [160 h]; Cathodic / protection System subcontractor [0.3] | 14,948.39 |
| JF721.171 |  | Ma'aden CP Inspection |  | 3d | 2013-05-11 | 2013-05-13 | JF721.170 | 44d | 0d | Helper [20 h]; Forman [10 h]; QC inspector [10 h]; Diesel Truck [10 h]; Crane Operator [10 h]; Driver [10 h]; Truck Flat Bed [10 h]; Cutting Machine [10 h]; Project Engineer [10 h]; Safety Officer [10 h]; Vehicle (pick up 3/4T 4*2) [10 h]; Cathodic / protection System subcontractor [0.4] | 19,931.18 |
|  | 18 | **Complete installation of Cathodic Protection and CP monitoring for the Storage Tanks.** |  |  | 2013-05-13 | 2013-05-13 |  |  |  |  |  |
| 2.11 |  | Complete Installation of Cathodic Protection | milestone | 0d | 2013-05-13 | 2013-05-13 | JF721.171 | 44d | 0d |  |  |
|  | 3 | **CIVIL & FOUNDATION** |  |  | 2012-07-10 | 2012-07-19 |  |  |  |  |  |
| JF721.172 |  | PO Issued |  | 3d | 2012-07-10 | 2012-07-12 | JF721.167 | 76d | 0d | Civil & Foundation [0.6] | 29,896.78 |
| JF721.173 |  | Ma'aden Site Delievery |  | 8d | 2012-07-12 | 2012-07-19 | JF721.172 | 76d | 28d | Civil & Foundation [0.4] | 19,931.18 |

Notes:
- JF721.167: Steps: Purchase Portacabins Locally; Deliever to MPS
- JF721.170: Steps: Delievery of CP System to site; Installation after complete internal tank painting

| ID | WBS | Activity | Type | Duration | Start | Finish | Predecessors | Total float | Free float | Resources | Cost |
| --- | --- | --- | --- | --- | --- | --- | --- | --- | --- | --- | --- |
|  | 4 | **ALUMINUM DOME ROOF SUBCONTRACTOR** |  |  | 2012-07-24 | 2012-08-22 |  |  |  |  |  |
| JF721.174 |  | Approval For Vendor Drawings & Specifications |  | 3d | 2012-07-24 | 2012-07-27 | JF721.168 SS | 70d | 0d | Aluminum Doom Roof subcontractor [0.35] | 87,198.94 |
| JF721.175 |  | P.O Issued |  | 27d | 2012-07-27 | 2012-08-22 | JF721.174 | 159d | 0d | Aluminum Doom Roof subcontractor [0.65] | 161,940.88 |
|  | 5 | **INSTRUMENTATION SUBCONTRACTOR** |  |  | 2012-07-24 | 2013-06-09 |  |  |  |  |  |
| JF721.176 |  | Approval for vendor Drawings & Specifcations |  | 3d | 2012-07-24 | 2012-07-27 | JF721.174 SS | 70d | 0d | Instrumentation / subcontractor [0.1] | 4,982.8 |
| JF721.177 |  | P.O Issued |  | 27d | 2012-07-27 | 2012-08-22 | JF721.176 | 159d | 0d | Instrumentation / subcontractor [0.2] | 9,965.59 |
| JF721.178 |  | Instrumentation Delievered to Ma'aden & Installed |  | 28d | 2013-05-13 | 2013-06-06 | 2.11 | 44d | 0d | Helper [300 h]; Fabricator [150 h]; Forman [150 h]; Diesel Truck [150 h]; Crane Operator [150 h]; Driver [150 h]; Truck Flat Bed [150 h]; Cutting Machine [150 h]; Project Engineer [150 h]; QC inspector [150 h]; Safety Officer [150 h]; Vehicle (pick up 3/4T 4*2) [150 h]; Instrumentation / subcontractor [0.3] | 14,948.39 |
| JF721.179 |  | Ma'aden Instrumentation Inspection |  | 3d | 2013-06-06 | 2013-06-09 | JF721.178 | 44d | 0d | Fabricator [10 h]; Helper [20 h]; QC inspector [10 h]; Diesel Truck [10 h]; Crane Operator [10 h]; Driver [10 h]; Truck Flat Bed [10 h]; Cutting Machine [10 h]; Project Engineer [10 h]; Safety Officer [10 h]; Vehicle (pick up 3/4T 4*2) [10 h]; Instrumentation / subcontractor [0.4] | 19,931.18 |
|  | 20 | **Installation of only field instruments, which includes level transmitters and level gauges** |  |  | 2013-06-09 | 2013-06-09 |  |  |  |  |  |
| 2.12 |  | Complete Installation for instruments | milestone | 0d | 2013-06-09 | 2013-06-09 | JF721.179 | 44d | 0d |  |  |
|  | 6 | **PLATES SUPPLIER** |  |  | 2012-07-17 | 2012-07-23 |  |  |  |  |  |
| JF721.180 |  | Approve Vendor Drawings & Specifcations |  | 3d | 2012-07-17 | 2012-07-20 | JF721.160 | 44d | 0d | Plates Supplier [0.25] | 87,198.93 |
| JF721.181 |  | P.O Issued |  | 3d | 2012-07-20 | 2012-07-23 | JF721.180 | 44d | 0d | Plates Supplier [0.75] | 261,596.8 |
|  | 17 | **Material Requisition approval for Steel plates, Cathodic Protection, field instruments etc.** |  |  | 2012-07-27 | 2012-07-27 |  |  |  |  |  |
| 2.5 |  | Material Requisition approval for Steel plates, Cathodic Protection, field instruments etc. | milestone | 0d | 2012-07-27 | 2012-07-27 | JF721.176 | 70d | 0d |  |  |
|  | 16 | **Purchase Order placement for Major Materials** |  |  | 2012-08-22 | 2012-08-22 |  |  |  |  |  |
| 2.6 |  | Purchase Order placement for Major Materials | milestone | 0d | 2012-08-22 | 2012-08-22 | JF721.169, JF721.175, JF721.177 | 159d | 0d |  |  |
|  | 7 | **PROFILE MATERIAL INCLUDING(beams,Angels,Round bars,Flatbars,Checkers Plates)** |  |  | 2012-07-27 | 2012-08-14 |  |  |  |  |  |
| JF721.182 |  | Approval for Vendor Drawings & Specifications |  | 6d | 2012-07-27 | 2012-08-01 | 2.5, 2.4 | 70d | 0d | Profile material / including(beams,Angels,Round bars,Flatbars,Checkers Plates) [0.25] | 6,228.49 |
| JF721.183 |  | PO Issued |  | 15d | 2012-08-01 | 2012-08-14 | JF721.182 | 148d | 0d | Profile material / including(beams,Angels,Round bars,Flatbars,Checkers Plates) [0.75] | 18,685.49 |
|  | 8 | **PIPES&FITTINGS INCLUDING(FLANGES,ELBOWS,PAD PLATES,PIPES,NUTS,BOLTS)SUPPLIER INCLDUDING SPARE PARTS** |  |  | 2012-07-27 | 2012-08-06 |  |  |  |  |  |
| JF721.184 |  | Approval for Vendor Drawings & Specifications |  | 6d | 2012-07-27 | 2012-08-01 | JF721.182 SS | 70d | 0d | Pipes & fittings / (including(Flanges,elbows, / pad plates,pipes, / nuts,bolts) supplier including Spar [0.25] | 12,456.99 |
| JF721.185 |  | PO issued |  | 6d | 2012-08-01 | 2012-08-06 | JF721.184 | 70d | 0d | Pipes & fittings / (including(Flanges,elbows, / pad plates,pipes, / nuts,bolts) supplier including Spar [0.75] | 37,370.97 |
|  | 9 | **PAINT SUPPLIER** |  |  | 2012-08-01 | 2012-08-11 |  |  |  |  |  |
| JF721.186 |  | Approval For vendor Specifcations |  | 8d | 2012-08-01 | 2012-08-08 | JF721.184 | 81d | 0d | Paint supplier [0.25] | 12,456.99 |
| JF721.187 |  | PO issued |  | 4d | 2012-08-08 | 2012-08-11 | JF721.186 | 81d | 0d | Paint supplier [0.75] | 37,370.97 |

Notes:
- JF721.178: Steps: Delievery of Instrumentation to site; Installation

| ID | WBS | Activity | Duration | Start | Finish | Predecessors | Total float | Free float | Resources | Cost |
| --- | --- | --- | --- | --- | --- | --- | --- | --- | --- | --- |
|  | 10 | **RAW MATERIAL DELIEVERY TO ALZAMIL FACTORY** |  | 2012-07-23 | 2012-10-13 |  |  |  |  |  |
| JF721.188 |  | Plates | 92d | 2012-07-23 | 2012-10-13 | JF721.181 | 44d | 0d | Raw Material Delievery to Alzamil Factory [0.7] | 435,994.68 |
| JF721.190 |  | Pipes & Fittings | 17d | 2012-08-06 | 2012-08-24 | JF721.185 | 70d | 0d | Raw Material Delievery to Alzamil Factory [0.15] | 93,427.43 |
| JF721.189 |  | Profile Material | 30d | 2012-08-14 | 2012-09-12 | JF721.183 | 148d | 0d | Raw Material Delievery to Alzamil Factory [0.15] | 93,427.43 |
|  | 11 | **ANNULAR,BUTTOM & SUMP PLATE FABRICATION (AZ PRE-FABRICATION WORKS)** |  | 2012-09-04 | 2012-09-16 |  |  |  |  |  |
| JF721.191 |  | Define Layout | 3d | 2012-09-04 | 2012-09-07 | JF721.188 SS+47d | 44d | 0d | Annular,buttom& / sump plate Fabrication (AZ Pre-fabricated wroks) [0.05] | 6,228.5 |
| JF721.192 |  | Cutting | 3d | 2012-09-04 | 2012-09-07 | JF721.191 SS | 44d | 0d | Annular,buttom& / sump plate Fabrication (AZ Pre-fabricated wroks) [0.15] | 18,685.49 |
| JF721.193 |  | Fit-up | 4d | 2012-09-09 | 2012-09-12 | JF721.192 SS+5d | 44d | 0d | Annular,buttom& / sump plate Fabrication (AZ Pre-fabricated wroks) [0.2] | 24,913.98 |
| JF721.194 |  | Welding | 4d | 2012-09-10 | 2012-09-13 | JF721.193 SS+1d | 44d | 0d | Annular,buttom& / sump plate Fabrication (AZ Pre-fabricated wroks) [0.45] | 56,056.46 |
| JF721.195 |  | Shop Blasting/Painting | 4d | 2012-09-10 | 2012-09-13 | JF721.194 SS+1d | 44d | 0d | Annular,buttom& / sump plate Fabrication (AZ Pre-fabricated wroks) [0.1] | 12,456.99 |
| JF721.196 |  | Inspect & Accept for use | 3d | 2012-09-14 | 2012-09-16 | JF721.195 | 44d | 0d | Annular,buttom& / sump plate Fabrication (AZ Pre-fabricated wroks) [0.05] | 6,228.5 |
|  | 12 | **SHELL COURSES (AZ PRE-FABRICATED WORKS) #1,#2,#3,#4** |  | 2012-09-07 | 2012-09-20 |  |  |  |  |  |
| JF721.197 |  | Define Layout | 4d | 2012-09-07 | 2012-09-10 | JF721.191 | 98d | 0d | Shell courses / (AZ Pre-fabricated works) (#1,#2,#3,#4) [0.05] | 9,965.59 |
| JF721.198 |  | Cutting | 5d | 2012-09-07 | 2012-09-11 | JF721.197 SS | 98d | 0d | Shell courses / (AZ Pre-fabricated works) (#1,#2,#3,#4) [0.5] | 99,655.93 |
| JF721.199 |  | Bevelling/Rolling | 6d | 2012-09-09 | 2012-09-13 | JF721.198 SS+2d | 98d | 0d | Shell courses / (AZ Pre-fabricated works) (#1,#2,#3,#4) [0.2] | 39,862.37 |
| JF721.200 |  | Shop Blasting/Painting | 6d | 2012-09-11 | 2012-09-16 | JF721.199 SS+3d | 98d | 0d | Shell courses / (AZ Pre-fabricated works) (#1,#2,#3,#4) [0.2] | 39,862.37 |
| JF721.201 |  | Inspect & Accept for use | 4d | 2012-09-16 | 2012-09-20 | JF721.200 | 98d | 0d | Shell courses / (AZ Pre-fabricated works) (#1,#2,#3,#4) [0.05] | 9,965.59 |
|  | 13 | **SHELL NOZZLES & MANHOLES(AZ PRE-FABRICATED WORKS)** |  | 2012-09-12 | 2012-09-29 |  |  |  |  |  |
| JF721.202 |  | Define layout | 3d | 2012-09-12 | 2012-09-15 | JF721.189, JF721.198 | 148d | 0d | Shell Nozzles / &manholes (AZ Pre-fabricated works) [0.1] | 7,474.19 |
| JF721.203 |  | Cutting | 4d | 2012-09-15 | 2012-09-18 | JF721.202 | 148d | 0d | Shell Nozzles / &manholes (AZ Pre-fabricated works) [0.2] | 14,948.39 |
| JF721.204 |  | Bevelling | 5d | 2012-09-16 | 2012-09-20 | JF721.203 SS+1d | 148d | 0d | Shell Nozzles / &manholes (AZ Pre-fabricated works) [0.2] | 14,948.39 |
| JF721.205 |  | Fit-up/Welding | 6d | 2012-09-17 | 2012-09-22 | JF721.204 SS+2d | 148d | 0d | Shell Nozzles / &manholes (AZ Pre-fabricated works) [0.4] | 29,896.78 |
| JF721.206 |  | Blasting/Painting | 7d | 2012-09-20 | 2012-09-26 | JF721.205 SS+3d | 148d | 0d | Shell Nozzles / &manholes (AZ Pre-fabricated works) [0.05] | 3,737.1 |
| JF721.207 |  | Inspect & Accept for use | 3d | 2012-09-26 | 2012-09-29 | JF721.206 | 148d | 0d | Shell Nozzles / &manholes (AZ Pre-fabricated works) [0.05] | 3,737.1 |

| ID | WBS | Activity | Type | Duration | Start | Finish | Predecessors | Total float | Free float | Resources | Cost |
| --- | --- | --- | --- | --- | --- | --- | --- | --- | --- | --- | --- |
|  | 14 | **PLATFORMS,STARIS &HANDRAILS9AZ-PRE FABRICATED WORKS)** |  |  | 2012-09-23 | 2012-10-28 |  |  |  |  |  |
| JF721.208 |  | Define Layout |  | 5d | 2012-09-23 | 2012-09-26 | JF721.205 | 169d | 0d | Platforms, / Stairs & / handrails (AZ Pre-fabricated works) [0.1] | 9,965.59 |
| JF721.209 |  | Cutting |  | 7d | 2012-09-27 | 2012-10-03 | JF721.208 | 169d | 0d | Platforms, / Stairs & / handrails (AZ Pre-fabricated works) [0.1] | 9,965.59 |
| JF721.210 |  | Fit-Up |  | 10d | 2012-10-03 | 2012-10-11 | JF721.209 | 169d | 0d | Platforms, / Stairs & / handrails (AZ Pre-fabricated works) [0.2] | 19,931.19 |
| JF721.211 |  | Welding |  | 7d | 2012-10-11 | 2012-10-17 | JF721.210 | 169d | 0d | Platforms, / Stairs & / handrails (AZ Pre-fabricated works) [0.4] | 39,862.37 |
| JF721.212 |  | Blasting/Painting |  | 7d | 2012-10-16 | 2012-10-22 | JF721.211 SS+6d | 169d | 0d | Platforms, / Stairs & / handrails (AZ Pre-fabricated works) [0.15] | 14,948.39 |
| JF721.213 |  | Inspect & Accept for use |  | 4d | 2012-10-23 | 2012-10-28 | JF721.212 | 169d | 0d | Platforms, / Stairs & / handrails (AZ Pre-fabricated works) [0.05] | 4,982.8 |
|  | 15 | **DELIEVERY OF THE PRE-FABRICATED MATERIAL TO MA'ADEN SITE** |  |  | 2012-08-12 | 2012-11-11 |  |  |  |  |  |
| JF721.220 |  | Paint Material |  | 4d | 2012-08-12 | 2012-08-15 | JF721.187 | 81d | 11d | Delievery of the Pre-Fabricated Material to Ma'aden Site [0.05] | 18,685.49 |
| JF721.219 |  | Aluminum Dome Roof |  | 92d | 2012-08-22 | 2012-11-11 | 2.6 | 159d | 115d | Delievery of the Pre-Fabricated Material to Ma'aden Site [0.15] | 56,056.46 |
| JF721.218 |  | Pipes & Fittings |  | 4d | 2012-08-24 | 2012-08-27 | JF721.190 | 70d | 0d | Delievery of the Pre-Fabricated Material to Ma'aden Site [0.05] | 18,685.49 |
| JF721.214 |  | Annular,Bottom & Sump |  | 3d | 2012-09-16 | 2012-09-19 | JF721.196 | 44d | 0d | Delievery of the Pre-Fabricated Material to Ma'aden Site [0.15] | 56,056.46 |
| JF721.215 |  | Shell Courses #1,#2,#3,#4 |  | 8d | 2012-09-20 | 2012-09-26 | JF721.201 | 98d | 54d | Delievery of the Pre-Fabricated Material to Ma'aden Site [0.35] | 130,798.41 |
| JF721.216 |  | Shell Nozzles & Manholes |  | 6d | 2012-09-29 | 2012-10-03 | JF721.207 | 148d | 104d | Delievery of the Pre-Fabricated Material to Ma'aden Site [0.1] | 37,370.97 |
| JF721.217 |  | Platforms,Stairs & Handrails |  | 8d | 2012-10-28 | 2012-11-04 | JF721.213 | 169d | 125d | Delievery of the Pre-Fabricated Material to Ma'aden Site [0.15] | 56,056.46 |
|  | 19 | **Supply of Materials to Site** |  |  | 2012-08-27 | 2012-08-27 |  |  |  |  |  |
| 2.8 |  | Supply of MAterial to Site | milestone | 0d | 2012-08-27 | 2012-08-27 | JF721.218, JF721.220 | 70d | 26d |  |  |
|  | 3 | **CONSTRUCTION (INCLUDING SHOP FABRICATION,SITE CONSTRUCTION,INSTALLATION WORKS,MOBILIZATION,PAINTING)** |  |  | 2012-07-04 | 2013-07-06 |  |  |  |  |  |
|  | 1 | **MOBILIZATION (INCLUDING ACCOMODATION,FABRICATION YARD & AZ EQUIPMENT)** |  |  | 2012-07-04 | 2012-07-27 |  |  |  |  |  |
| JF721.221 |  | Rental For Workers & Engineers Accomodation with Facilities |  | 5d | 2012-07-04 | 2012-07-08 | JF721.167 SS | 48d | 0d | Forman [40 h]; Diesel Truck [40 h]; Crane Operator [40 h]; Driver [40 h]; Fabricator [40 h]; Cutting Machine [40 h]; Project Engineer [40 h]; QC inspector [40 h]; Rigger [40 h]; Safety Officer [40 h]; Vehicle (pick up 3/4T 4*2) [40 h]; Mobilization(including Accomodation / ,fabrication yard, AZ equipment) [0.45] | 55,462.47 |
| JF721.222 |  | Complete Mobilize AZ Equipment to Site & Prepare the site fabrication yard |  | 25d | 2012-07-04 | 2012-07-25 | JF721.221 SS | 48d | 0d | Helper [480 h]; Diesel Truck [240 h]; Crane Operator [240 h]; Driver [240 h]; Fabricator [240 h]; Cutting Machine [240 h]; Project Engineer [240 h]; QC inspector [240 h]; Rigger [240 h]; Safety Officer [240 h]; Vehicle (pick up 3/4T 4*2) [240 h]; Mobilization(including Accomodation / ,fabrication yard, AZ equipment) [0.35] | 43,137.48 |
| JF721.223 |  | Ma'aden Inspection & Approval for Portacabins |  | 2d | 2012-07-25 | 2012-07-27 | JF721.222 | 48d | 0d | Forman [10 h]; Diesel Truck [10 h]; Crane Operator [10 h]; Driver [10 h]; Fabricator [10 h]; Cutting Machine [10 h]; Project Engineer [10 h]; QC inspector [10 h]; Rigger [10 h]; Safety Officer [10 h]; Vehicle (pick up 3/4T 4*2) [10 h]; Mobilization(including Accomodation / ,fabrication yard, AZ equipment) [0.2] | 24,649.99 |
|  | 19 | **Complete MOBILIZATION of camp with Catering and accommodation facilities** |  |  | 2012-07-27 | 2012-07-27 |  |  |  |  |  |
| 2.7 |  | Complete MOBILIZATION of camp with Catering and accommodation facilities | milestone | 0d | 2012-07-27 | 2012-07-27 | JF721.223 | 48d | 0d |  |  |

Notes:
- JF721.219: Steps: Drawings Recieved from Supplier; Submission/Approval from CLient; Roof Fabrication; Shipping of Fabricated Material; Delievery to Alzamil factory; Delievey to MA'aden Site
- JF721.215: Steps: Shell #1; Shell #2; Shell #3; Shell #4

| ID | WBS | Activity | Type | Duration | Start | Finish | Predecessors | Total float | Free float | Resources | Cost |
| --- | --- | --- | --- | --- | --- | --- | --- | --- | --- | --- | --- |
|  | 2 | **CIVIL WORKS** |  |  | 2012-07-27 | 2012-09-01 |  |  |  |  |  |
| JF721.224 |  | Layout/Stake-out |  | 3d | 2012-07-27 | 2012-07-29 | 2.7 | 48d | 0d | Forman [20 h]; Helper [60 h]; Carpenter [20 h]; Steel Workers [20 h]; Diesel Truck [20 h]; Crane Operator [20 h]; Driver [20 h]; Fabricator [20 h]; Cutting Machine [20 h]; Project Engineer [20 h]; QC inspector [20 h]; Rigger [20 h]; Safety Officer [20 h]; Vehicle (pick up 3/4T 4*2) [20 h]; Civil works [0.1] | 12,324.99 |
| JF721.225 |  | Excavation |  | 16d | 2012-07-30 | 2012-08-12 | JF721.224 | 48d | 0d | Forman [150 h]; Helper [450 h]; Bus [150 h]; Steel Workers [300 h]; Carpenter [300 h]; Diesel Truck [150 h]; Crane Operator [150 h]; Driver [150 h]; Fabricator [150 h]; Cutting Machine [150 h]; Project Engineer [150 h]; QC inspector [150 h]; Rigger [150 h]; Safety Officer [150 h]; Vehicle (pick up 3/4T 4*2) [150 h]; Civil works [0.45] | 55,462.47 |
| JF721.226 |  | SteelWorks/Formworks |  | 13d | 2012-08-12 | 2012-08-27 | JF721.225, JF721.173 | 48d | 0d | Steel Workers [240 h]; Carpenter [240 h]; Forman [120 h]; Helper [480 h]; Diesel Truck [120 h]; Crane Operator [120 h]; Driver [120 h]; Fabricator [120 h]; Cutting Machine [120 h]; Project Engineer [120 h]; QC inspector [120 h]; Rigger [120 h]; Safety Officer [120 h]; Vehicle (pick up 3/4T 4*2) [120 h]; Civil works [0.3] | 36,974.98 |
| JF721.227 |  | Soil Compaction |  | 6d | 2012-08-27 | 2012-09-01 | JF721.226 | 48d | 0d | Helper [250 h]; Vibrating Roller 16T [50 h]; Forman [50 h]; Carpenter [50 h]; Steel Workers [50 h]; Diesel Truck [50 h]; Crane Operator [50 h]; Driver [50 h]; Fabricator [50 h]; Cutting Machine [50 h]; Project Engineer [50 h]; QC inspector [50 h]; Rigger [50 h]; Safety Officer [50 h]; Vehicle (pick up 3/4T 4*2) [50 h]; Civil works [0.15] | 18,487.49 |
|  | 3 | **FOUNDATION WORKS** |  |  | 2012-09-01 | 2012-09-16 |  |  |  |  |  |
| JF721.228 |  | Concrete Pouring |  | 2d | 2012-09-01 | 2012-09-03 | JF721.227 | 48d | 0d | Helper [60 h]; Forman [10 h]; Diesel Truck [8 h]; Crane Operator [10 h]; Driver [10 h]; Fabricator [10 h]; Cutting Machine [10 h]; Project Engineer [10 h]; QC inspector [10 h]; Rigger [10 h]; Safety Officer [10 h]; Vehicle (pick up 3/4T 4*2) [10 h]; Foundation works [0.35] | 43,137.48 |
| JF721.229 |  | Concrete Curing |  | 3d | 2012-09-02 | 2012-09-04 | JF721.228 SS+1d | 48d | 0d | Helper [80 h]; Forman [20 h]; Diesel Truck [20 h]; Crane Operator [20 h]; Driver [20 h]; Fabricator [20 h]; Cutting Machine [20 h]; Project Engineer [20 h]; QC inspector [20 h]; Rigger [20 h]; Safety Officer [20 h]; Vehicle (pick up 3/4T 4*2) [20 h]; Foundation works [0.35] | 43,137.48 |
| JF721.230 |  | Removal of Formworks |  | 6d | 2012-09-04 | 2012-09-09 | JF721.229 SS+3d | 48d | 0d | Helper [300 h]; Diesel Truck [50 h]; Crane Operator [50 h]; Driver [50 h]; Fabricator [50 h]; Cutting Machine [50 h]; Project Engineer [50 h]; QC inspector [50 h]; Rigger [50 h]; Safety Officer [50 h]; Vehicle (pick up 3/4T 4*2) [50 h]; Foundation works [0.15] | 18,487.49 |
| JF721.231 |  | Backfilling |  | 7d | 2012-09-10 | 2012-09-16 | JF721.230 | 48d | 0d | Backhoe [60 h]; Helper [240 h]; Forman [60 h]; Diesel Truck [60 h]; Crane Operator [60 h]; Driver [60 h]; Fabricator [60 h]; Cutting Machine [60 h]; Project Engineer [60 h]; QC inspector [60 h]; Rigger [60 h]; Safety Officer [60 h]; Vehicle (pick up 3/4T 4*2) [60 h]; Foundation works [0.15] | 18,487.49 |
|  | 20 | **Complete construction of Civil/Structural Work , including excavation, backfill** |  |  | 2012-09-16 | 2012-09-16 |  |  |  |  |  |
| 2.9 |  | Complete COnstruction of Civil/Structural works | milestone | 0d | 2012-09-16 | 2012-09-16 | JF721.231 | 48d | 4d |  |  |
|  | 4 | **ANNULAR & BOTTOM PLATES (SITE Installation WORKS)** |  |  | 2012-09-19 | 2012-11-15 |  |  |  |  |  |
| JF721.232 |  | Erect & Weld Annular Plates |  | 15d | 2012-09-19 | 2012-10-02 | 2.8, 2.9, JF721.214 | 44d | 0d | Forman [70 h]; Fabricator [70 h]; Welder 6G [70 h]; Tack Welder [70 h]; Helper [140 h]; Compressor 450 CFM [70 h]; Diesel Truck [70 h]; Crane Operator [70 h]; Driver [70 h]; Cutting Machine [70 h]; Project Engineer [70 h]; QC inspector [70 h]; Vehicle (pick up 3/4T 4*2) [70 h]; Safety Officer [70 h]; Truck Flat Bed [70 h]; Annular & bottom / Plates (Site Installation works) [0.25] | 9,243.75 |
| JF721.233 |  | Erect & Tack Bottom Plates |  | 20d | 2012-10-02 | 2012-10-19 | JF721.232 | 44d | 0d | Compressor 450 CFM [60 h]; Crane Operator [60 h]; Forman [60 h]; Rigger [60 h]; Truck Flat Bed [60 h]; Tack Welder [60 h]; Helper [360 h]; Fabricator [60 h]; Welder 6G [60 h]; Diesel Truck [60 h]; Cutting Machine [60 h]; Vehicle (pick up 3/4T 4*2) [60 h]; Safety Officer [60 h]; Project Engineer [60 h]; QC inspector [60 h]; Driver [60 h]; Annular & bottom / Plates (Site Installation works) [0.2] | 7,395 |
| JF721.234 |  | Welding of Bottom Plates |  | 25d | 2012-10-19 | 2012-11-11 | JF721.233 | 44d | 0d | Welder 6G [140 h]; Forman [70 h]; Helper [350 h]; Compressor 450 CFM [140 h]; Tack Welder [140 h]; Diesel Truck [70 h]; Crane Operator [70 h]; Driver [70 h]; Fabricator [70 h]; Cutting Machine [70 h]; QC inspector [70 h]; Rigger [70 h]; Vehicle (pick up 3/4T 4*2) [70 h]; Safety Officer [70 h]; Project Engineer [70 h]; Truck Flat Bed [70 h]; Annular & bottom / Plates (Site Installation works) [0.3] | 11,092.49 |
| JF721.235 |  | Visual Inspection & Cleaning |  | 2d | 2012-11-11 | 2012-11-13 | JF721.234 | 44d | 0d | Forman [10 h]; Helper [20 h]; Welder 6G [60 h]; Compressor 450 CFM [60 h]; Diesel Truck [10 h]; Crane Operator [10 h]; Fabricator [10 h]; Cutting Machine [10 h]; Rigger [10 h]; Vehicle (pick up 3/4T 4*2) [10 h]; Safety Officer [10 h]; Project Engineer [10 h]; QC inspector [10 h]; Truck Flat Bed [10 h]; Driver [10 h]; Annular & bottom / Plates (Site Installation works) [0.1] | 3,697.5 |
| JF721.236 |  | Carry Out NDT & Vaccuum Box Test |  | 3d | 2012-11-13 | 2012-11-15 | JF721.235 | 44d | 0d | Forman [20 h]; Helper [40 h]; Welder 6G [120 h]; Compressor 450 CFM [120 h]; Diesel Truck [20 h]; Crane Operator [20 h]; Fabricator [20 h]; Cutting Machine [20 h]; QC inspector [20 h]; Rigger [20 h]; Vehicle (pick up 3/4T 4*2) [20 h]; Safety Officer [20 h]; Project Engineer [20 h]; Truck Flat Bed [20 h]; Driver [20 h]; Annular & bottom / Plates (Site Installation works) [0.15] | 5,546.25 |
|  | 5 | **SHELL COURSE #1(SITE INSTALLATION WORKS)** |  |  | 2012-11-14 | 2012-11-24 |  |  |  |  |  |
| JF721.237 |  | Prepare Shell Course # 1 for Erection |  | 4d | 2012-11-14 | 2012-11-17 | JF721.236 SS+1d, JF721.215 | 44d | 0d | Crane Operator [10 h]; Forman [10 h]; Rigger [10 h]; Fabricator [10 h]; Helper [20 h]; Cutting Machine [10 h]; Vehicle (pick up 3/4T 4*2) [10 h]; Safety Officer [10 h]; Project Engineer [10 h]; QC inspector [10 h]; Truck Flat Bed [10 h]; Driver [10 h]; Shell Course #1 / (site Installation works) [0.1] | 5,546.25 |
| JF721.238 |  | Erect & Tack Shell Course # 1 |  | 5d | 2012-11-17 | 2012-11-21 | JF721.237 | 44d | 0d | Crane Operator [20 h]; Forman [20 h]; Crane 25T [20 h]; Rigger [20 h]; Fabricator [20 h]; Tack Welder [120 h]; Compressor 450 CFM [120 h]; Cutting Machine [20 h]; Helper [40 h]; Vehicle (pick up 3/4T 4*2) [20 h]; Safety Officer [20 h]; Project Engineer [20 h]; QC inspector [20 h]; Truck Flat Bed [20 h]; Driver [20 h]; Shell Course #1 / (site Installation works) [0.2] | 11,092.49 |
| JF721.239 |  | Weld Outer Vertical Seam |  | 5d | 2012-11-18 | 2012-11-22 | JF721.238 SS+1d | 44d | 0d | Forman [20 h]; Fabricator [20 h]; Welder 6G [80 h]; Compressor 450 CFM [80 h]; Helper [60 h]; QC inspector [20 h]; Cutting Machine [20 h]; Tack Welder [20 h]; Vehicle (pick up 3/4T 4*2) [20 h]; Safety Officer [20 h]; Project Engineer [20 h]; Truck Flat Bed [20 h]; Driver [20 h]; Shell Course #1 / (site Installation works) [0.25] | 13,865.62 |
| JF721.240 |  | Backgouge & NDT Inside Vertical Seam |  | 5d | 2012-11-19 | 2012-11-23 | JF721.239 SS+1d | 44d | 0d | Helper [80 h]; Forman [20 h]; Cutting Machine [20 h]; Fabricator [20 h]; QC inspector [20 h]; Tack Welder [20 h]; Compressor 450 CFM [20 h]; Vehicle (pick up 3/4T 4*2) [20 h]; Safety Officer [20 h]; Project Engineer [20 h]; Truck Flat Bed [20 h]; Driver [20 h]; Shell Course #1 / (site Installation works) [0.15] | 8,319.37 |
| JF721.241 |  | Weld Inside Vertical Seam |  | 5d | 2012-11-20 | 2012-11-24 | JF721.240 SS+1d | 44d | 0d | Compressor 450 CFM [80 h]; Welder 6G [80 h]; Tack Welder [40 h]; Fabricator [40 h]; Forman [20 h]; QC inspector [20 h]; Cutting Machine [20 h]; Helper [140 h]; Vehicle (pick up 3/4T 4*2) [20 h]; Safety Officer [20 h]; Project Engineer [20 h]; Truck Flat Bed [20 h]; Driver [20 h]; Shell Course #1 / (site Installation works) [0.3] | 16,638.74 |

| ID | WBS | Activity | Duration | Start | Finish | Predecessors | Total float | Free float | Resources | Cost |
| --- | --- | --- | --- | --- | --- | --- | --- | --- | --- | --- |
|  | 6 | **SHELL COURSE#2(SITE INSTALLATION WORKS & TESTING)** |  | 2012-11-21 | 2012-12-05 |  |  |  |  |  |
| JF721.242 |  | Prepare Shell Course # 2 for Erection | 4d | 2012-11-21 | 2012-11-25 | JF721.241 SS+2d | 44d | 0d | Crane Operator [10 h]; Forman [10 h]; Rigger [10 h]; Fabricator [20 h]; Helper [60 h]; Diesel Truck [10 h]; Tack Welder [20 h]; Scaffolder [20 h]; Vehicle (pick up 3/4T 4*2) [10 h]; Safety Officer [10 h]; Project Engineer [10 h]; QC inspector [10 h]; Truck Flat Bed [10 h]; Driver [10 h]; Shell Course #2 / (site Installation works& testing) [0.05] | 3,697.5 |
| JF721.243 |  | Erect & Tack Shell Course # 2 | 5d | 2012-11-25 | 2012-11-29 | JF721.242 | 44d | 0d | Crane Operator [20 h]; Diesel Truck [20 h]; Forman [20 h]; Rigger [20 h]; Fabricator [40 h]; Tack Welder [20 h]; Compressor 450 CFM [20 h]; Helper [60 h]; Scaffolder [40 h]; Vehicle (pick up 3/4T 4*2) [20 h]; Safety Officer [20 h]; Project Engineer [20 h]; QC inspector [20 h]; Truck Flat Bed [20 h]; Driver [20 h]; Shell Course #2 / (site Installation works& testing) [0.1] | 7,395 |
| JF721.244 |  | Weld Outer Vertical Seam | 6d | 2012-11-26 | 2012-12-01 | JF721.243 SS+1d | 44d | 0d | Forman [30 h]; Fabricator [30 h]; Welder 6G [300 h]; Compressor 450 CFM [300 h]; Helper [90 h]; Tack Welder [30 h]; Scaffolder [60 h]; Vehicle (pick up 3/4T 4*2) [30 h]; Safety Officer [30 h]; Project Engineer [30 h]; QC inspector [30 h]; Truck Flat Bed [30 h]; Driver [30 h]; Shell Course #2 / (site Installation works& testing) [0.2] | 14,789.99 |
| JF721.245 |  | Backgouge & NDT Inside Vertical Seam | 5d | 2012-11-27 | 2012-12-01 | JF721.244 SS+1d | 44d | 0d | Fabricator [20 h]; Forman [20 h]; Helper [60 h]; Scaffolder [40 h]; Vehicle (pick up 3/4T 4*2) [20 h]; Safety Officer [20 h]; Project Engineer [20 h]; QC inspector [20 h]; Truck Flat Bed [20 h]; Driver [20 h]; Shell Course #2 / (site Installation works& testing) [0.1] | 7,395 |
| JF721.246 |  | Weld Inside Vertical Seam | 5d | 2012-11-28 | 2012-12-02 | JF721.245 SS+1d | 44d | 0d | Forman [20 h]; Welder 6G [220 h]; Compressor 450 CFM [220 h]; Helper [80 h]; Cutting Machine [20 h]; Tack Welder [20 h]; Scaffolder [40 h]; Vehicle (pick up 3/4T 4*2) [20 h]; Safety Officer [20 h]; Project Engineer [20 h]; QC inspector [20 h]; Truck Flat Bed [20 h]; Driver [20 h]; Shell Course #2 / (site Installation works& testing) [0.2] | 14,789.99 |
| JF721.247 |  | "Fit & Tack Horizontal Seam between / Shell Course # 1 & 2" | 5d | 2012-11-28 | 2012-12-03 | JF721.246 SS+1d | 44d | 0d | Forman [20 h]; Fabricator [80 h]; Tack Welder [60 h]; Compressor 450 CFM [60 h]; Cutting Machine [20 h]; Helper [120 h]; Scaffolder [40 h]; Vehicle (pick up 3/4T 4*2) [20 h]; Safety Officer [20 h]; Project Engineer [20 h]; QC inspector [20 h]; Truck Flat Bed [20 h]; Driver [20 h]; Shell Course #2 / (site Installation works& testing) [0.05] | 3,697.5 |
| JF721.248 |  | "Weld Outer Horizontal Seam between / Shell Course # 1 & 2" | 7d | 2012-11-29 | 2012-12-05 | JF721.247 SS+1d | 44d | 0d | Forman [40 h]; Welder 6G [560 h]; Compressor 450 CFM [560 h]; Cutting Machine [40 h]; Tack Welder [120 h]; Helper [240 h]; Scaffolder [80 h]; Vehicle (pick up 3/4T 4*2) [40 h]; Safety Officer [40 h]; Project Engineer [40 h]; QC inspector [40 h]; Truck Flat Bed [40 h]; Driver [40 h]; Shell Course #2 / (site Installation works& testing) [0.1] | 7,395 |
| JF721.249 |  | "Backgouge & NDT Inside Horizontal / Seam between Shell Course# 1 & 2" | 5d | 2012-11-30 | 2012-12-04 | JF721.248 SS+1d | 44d | 0d | Forman [20 h]; Fabricator [60 h]; Helper [120 h]; Scaffolder [40 h]; Vehicle (pick up 3/4T 4*2) [20 h]; Safety Officer [20 h]; Project Engineer [20 h]; QC inspector [20 h]; Truck Flat Bed [20 h]; Driver [20 h]; Shell Course #2 / (site Installation works& testing) [0.05] | 3,697.5 |
| JF721.250 |  | Weld Inner Horizontal Seam between / Shell Course # 1 & 2" | 5d | 2012-12-01 | 2012-12-05 | JF721.249 SS+1d | 44d | 0d | Forman [20 h]; Welder 6G [280 h]; Compressor 450 CFM [280 h]; Cutting Machine [20 h]; Helper [120 h]; Tack Welder [60 h]; Scaffolder [40 h]; Vehicle (pick up 3/4T 4*2) [20 h]; Safety Officer [20 h]; Project Engineer [20 h]; QC inspector [20 h]; Truck Flat Bed [20 h]; Driver [20 h]; Shell Course #2 / (site Installation works& testing) [0.15] | 11,092.49 |
|  | 7 | **SHELL COURSE#3 (SITE INSTALLATION WORKS & TESTING)** |  | 2012-12-01 | 2012-12-16 |  |  |  |  |  |
| JF721.251 |  | Prepare Shell Course # 3 for Erection | 5d | 2012-12-01 | 2012-12-05 | JF721.250 SS | 44d | 0d | Forman [10 h]; Crane Operator [10 h]; Rigger [10 h]; Fabricator [30 h]; Helper [60 h]; Diesel Truck [10 h]; Scaffolder [20 h]; Vehicle (pick up 3/4T 4*2) [10 h]; Safety Officer [10 h]; Project Engineer [10 h]; QC inspector [10 h]; Truck Flat Bed [10 h]; Driver [10 h]; Shell Course #3 / (site Installation works& testing) [0.05] | 3,697.5 |
| JF721.252 |  | Erect & Tack Shell Course # 3 | 5d | 2012-12-05 | 2012-12-10 | JF721.251 | 44d | 0d | Diesel Truck [20 h]; Crane Operator [20 h]; Forman [20 h]; Rigger [20 h]; Truck Flat Bed [20 h]; Fabricator [20 h]; Tack Welder [80 h]; Compressor 450 CFM [80 h]; Helper [80 h]; Scaffolder [40 h]; Vehicle (pick up 3/4T 4*2) [20 h]; Safety Officer [20 h]; Project Engineer [20 h]; QC inspector [20 h]; Driver [20 h]; Shell Course #3 / (site Installation works& testing) [0.1] | 7,395 |
| JF721.253 |  | Weld Outer Vertical Seam | 6d | 2012-12-06 | 2012-12-11 | JF721.252 SS+1d | 44d | 0d | Helper [15 h]; Forman [30 h]; Welder 6G [330 h]; Compressor 450 CFM [330 h]; Cutting Machine [30 h]; Scaffolder [60 h]; Tack Welder [90 h]; Vehicle (pick up 3/4T 4*2) [30 h]; Safety Officer [30 h]; Project Engineer [30 h]; QC inspector [30 h]; Truck Flat Bed [30 h]; Driver [30 h]; Shell Course #3 / (site Installation works& testing) [0.2] | 14,789.99 |
| JF721.254 |  | Backgouge & NDT Inside Vertical Seam | 5d | 2012-12-07 | 2012-12-11 | JF721.253 SS+1d | 44d | 0d | Forman [20 h]; Helper [60 h]; Fabricator [60 h]; Scaffolder [40 h]; Vehicle (pick up 3/4T 4*2) [20 h]; Safety Officer [20 h]; Project Engineer [20 h]; QC inspector [20 h]; Truck Flat Bed [20 h]; Driver [20 h]; Shell Course #3 / (site Installation works& testing) [0.1] | 7,395 |
| JF721.255 |  | Weld Inside Vertical Seam | 5d | 2012-12-08 | 2012-12-12 | JF721.254 SS+1d | 44d | 0d | Forman [20 h]; Welder 6G [160 h]; Helper [100 h]; Compressor 450 CFM [160 h]; Cutting Machine [20 h]; Tack Welder [40 h]; Scaffolder [40 h]; Vehicle (pick up 3/4T 4*2) [20 h]; Safety Officer [20 h]; Project Engineer [20 h]; QC inspector [20 h]; Truck Flat Bed [20 h]; Driver [20 h]; Shell Course #3 / (site Installation works& testing) [0.2] | 14,789.99 |
| JF721.256 |  | "Fit & Tack Horizontal Seam between / Shell Course # 2 & 3" | 5d | 2012-12-09 | 2012-12-13 | JF721.255 SS+1d | 44d | 0d | Forman [20 h]; Fabricator [40 h]; Compressor 450 CFM [40 h]; Helper [100 h]; Tack Welder [40 h]; Scaffolder [20 h]; Vehicle (pick up 3/4T 4*2) [20 h]; Safety Officer [20 h]; Project Engineer [20 h]; QC inspector [20 h]; Truck Flat Bed [20 h]; Driver [20 h]; Shell Course #3 / (site Installation works& testing) [0.05] | 3,697.5 |
| JF721.257 |  | "Weld Outer Horizontal Seam between / Shell Course # 2 & 3" | 7d | 2012-12-10 | 2012-12-16 | JF721.256 SS+1d | 44d | 0d | Forman [40 h]; Welder 6G [320 h]; Compressor 450 CFM [320 h]; Cutting Machine [40 h]; QC inspector [40 h]; Tack Welder [40 h]; Helper [160 h]; Scaffolder [40 h]; Vehicle (pick up 3/4T 4*2) [40 h]; Safety Officer [40 h]; Project Engineer [40 h]; Truck Flat Bed [40 h]; Driver [40 h]; Shell Course #3 / (site Installation works& testing) [0.1] | 7,395 |
| JF721.258 |  | "Backgouge & NDT Inside Horizontal / Seam between Shell Course# 2 & 3" | 5d | 2012-12-11 | 2012-12-15 | JF721.257 SS+1d | 44d | 0d | Forman [20 h]; QC inspector [20 h]; Helper [80 h]; Fabricator [20 h]; Scaffolder [20 h]; Vehicle (pick up 3/4T 4*2) [20 h]; Safety Officer [20 h]; Project Engineer [20 h]; Truck Flat Bed [20 h]; Driver [20 h]; Shell Course #3 / (site Installation works& testing) [0.05] | 3,697.5 |
| JF721.259 |  | Weld Inner Horizontal Seam between / Shell Course # 2 & 3" | 5d | 2012-12-11 | 2012-12-16 | JF721.258 SS+1d | 44d | 0d | Forman [20 h]; Welder 6G [160 h]; Compressor 450 CFM [160 h]; Cutting Machine [20 h]; Tack Welder [20 h]; Helper [80 h]; Vehicle (pick up 3/4T 4*2) [20 h]; Safety Officer [20 h]; Project Engineer [20 h]; QC inspector [20 h]; Truck Flat Bed [20 h]; Driver [20 h]; Shell Course #3 / (site Installation works& testing) [0.15] | 11,092.49 |
|  | 8 | **SHELL COURSE#4 (SITE (SITE INSTALLATION WORKS & TESTING)** |  | 2012-11-24 | 2012-12-30 |  |  |  |  |  |
| JF721.269 |  | Fit, Weld Shell Course # 1 Annular Plate & Oil Test | 9d | 2012-11-24 | 2012-12-02 | JF721.241 | 69d | 25d | Fabricator [120 h]; Tack Welder [60 h]; Compressor 450 CFM [180 h]; Cutting Machine [60 h]; Helper [240 h]; Welder 6G [360 h]; Scaffolder [120 h]; Vehicle (pick up 3/4T 4*2) [60 h]; Safety Officer [60 h]; Project Engineer [60 h]; QC inspector [60 h]; Truck Flat Bed [60 h]; Driver [60 h]; Shell Course #4 (site Installation works & testing) [0.05] | 3,697.5 |
| JF721.260 |  | Prepare Shell Course # 4 for Erection | 4d | 2012-12-16 | 2012-12-19 | JF721.259, JF721.269 SS | 44d | 0d | Forman [10 h]; Diesel Truck [10 h]; Crane Operator [10 h]; Rigger [10 h]; Truck Flat Bed [10 h]; Fabricator [20 h]; Helper [40 h]; Vehicle (pick up 3/4T 4*2) [10 h]; Safety Officer [10 h]; Project Engineer [10 h]; QC inspector [10 h]; Driver [10 h]; Shell Course #4 (site Installation works & testing) [0.05] | 3,697.5 |
| JF721.261 |  | Erect & Tack Shell Course # 4 | 5d | 2012-12-19 | 2012-12-23 | JF721.260 | 44d | 0d | Compressor 450 CFM [40 h]; Cutting Machine [20 h]; Helper [60 h]; Tack Welder [40 h]; Fabricator [40 h]; Diesel Truck [20 h]; Crane Operator [20 h]; Forman [20 h]; Vehicle (pick up 3/4T 4*2) [20 h]; Safety Officer [20 h]; Project Engineer [20 h]; QC inspector [20 h]; Truck Flat Bed [20 h]; Driver [20 h]; Shell Course #4 (site Installation works & testing) [0.1] | 7,395 |
| JF721.262 |  | Weld Outer Vertical Seam | 6d | 2012-12-20 | 2012-12-25 | JF721.261 SS+1d | 44d | 0d | Forman [30 h]; Rigger [30 h]; Fabricator [60 h]; Welder 6G [240 h]; Compressor 450 CFM [240 h]; Cutting Machine [30 h]; Tack Welder [30 h]; Helper [90 h]; Vehicle (pick up 3/4T 4*2) [30 h]; Safety Officer [30 h]; Project Engineer [30 h]; QC inspector [30 h]; Truck Flat Bed [30 h]; Driver [30 h]; Shell Course #4 (site Installation works & testing) [0.2] | 14,789.99 |
| JF721.263 |  | Backgouge & NDT Inside Vertical Seam | 5d | 2012-12-21 | 2012-12-25 | JF721.262 SS+1d | 44d | 0d | Forman [20 h]; Fabricator [20 h]; Helper [60 h]; Vehicle (pick up 3/4T 4*2) [20 h]; Safety Officer [20 h]; Project Engineer [20 h]; QC inspector [20 h]; Truck Flat Bed [20 h]; Driver [20 h]; Shell Course #4 (site Installation works & testing) [0.1] | 7,395 |
| JF721.264 |  | Weld Inside Vertical Seam | 5d | 2012-12-22 | 2012-12-26 | JF721.263 SS+1d | 44d | 0d | Forman [20 h]; Fabricator [20 h]; Welder 6G [100 h]; Compressor 450 CFM [100 h]; Cutting Machine [20 h]; Helper [60 h]; Tack Welder [20 h]; Vehicle (pick up 3/4T 4*2) [20 h]; Safety Officer [20 h]; Project Engineer [20 h]; QC inspector [20 h]; Truck Flat Bed [20 h]; Shell Course #4 (site Installation works & testing) [0.15] | 11,092.49 |
| JF721.265 |  | "Fit & Tack Horizontal Seam between / Shell Course # 3 & 4" | 5d | 2012-12-23 | 2012-12-27 | JF721.264 SS+1d | 44d | 0d | Forman [20 h]; Fabricator [40 h]; Tack Welder [40 h]; Compressor 450 CFM [40 h]; Cutting Machine [20 h]; Helper [60 h]; Vehicle (pick up 3/4T 4*2) [20 h]; Safety Officer [20 h]; Project Engineer [20 h]; QC inspector [20 h]; Truck Flat Bed [20 h]; Driver [20 h]; Shell Course #4 (site Installation works & testing) [0.1] | 7,395 |
| JF721.266 |  | Weld Outer Horizontal Seam between / Shell Course # 3 & 4 | 7d | 2012-12-24 | 2012-12-30 | JF721.265 SS+1d | 44d | 0d | Forman [40 h]; QC inspector [40 h]; Welder 6G [160 h]; Compressor 450 CFM [160 h]; Cutting Machine [40 h]; Tack Welder [80 h]; Helper [120 h]; Vehicle (pick up 3/4T 4*2) [40 h]; Safety Officer [40 h]; Project Engineer [40 h]; Truck Flat Bed [40 h]; Shell Course #4 (site Installation works & testing) [0.1] | 7,395 |
| JF721.267 |  | "Backgouge & NDT Inside Horizontal / Seam between Shell Course# 3 & 4" | 5d | 2012-12-24 | 2012-12-29 | JF721.266 SS+1d | 44d | 0d | Forman [20 h]; Fabricator [20 h]; Helper [60 h]; Vehicle (pick up 3/4T 4*2) [20 h]; Safety Officer [20 h]; Project Engineer [20 h]; QC inspector [20 h]; Truck Flat Bed [20 h]; Shell Course #4 (site Installation works & testing) [0.05] | 3,697.5 |
| JF721.268 |  | Weld Inner Horizontal Seam between / Shell Course # 3 & 4" | 5d | 2012-12-25 | 2012-12-30 | JF721.267 SS+1d | 44d | 0d | Forman [20 h]; Welder 6G [160 h]; Compressor 450 CFM [160 h]; Cutting Machine [20 h]; Helper [60 h]; Vehicle (pick up 3/4T 4*2) [20 h]; Safety Officer [20 h]; Project Engineer [20 h]; QC inspector [20 h]; Truck Flat Bed [20 h]; Driver [20 h]; Shell Course #4 (site Installation works & testing) [0.1] | 7,395 |

| ID | WBS | Activity | Type | Duration | Start | Finish | Predecessors | Total float | Free float | Resources | Cost |
| --- | --- | --- | --- | --- | --- | --- | --- | --- | --- | --- | --- |
|  | 9 | **CURB ANGLE(SITE INSTALLATION WORKS)** |  |  | 2012-12-30 | 2013-01-09 |  |  |  |  |  |
| JF721.270 |  | Erect & Tack Curve Angle |  | 5d | 2012-12-30 | 2013-01-03 | JF721.268 | 44d | 0d | Forman [20 h]; Diesel Truck [20 h]; Crane Operator [20 h]; Project Engineer [20 h]; Compressor 450 CFM [20 h]; Tack Welder [20 h]; Helper [60 h]; Cutting Machine [20 h]; Truck Flat Bed [20 h]; Rigger [20 h]; Fabricator [20 h]; Vehicle (pick up 3/4T 4*2) [20 h]; Safety Officer [20 h]; QC inspector [20 h]; Driver [20 h]; Curve Angel / (site Installation works) [0.3] | 7,395 |
| JF721.271 |  | Weld Curve Angle |  | 7d | 2013-01-03 | 2013-01-09 | JF721.270 | 44d | 0d | Forman [40 h]; Welder 6G [320 h]; Helper [160 h]; Compressor 450 CFM [320 h]; Cutting Machine [40 h]; Tack Welder [40 h]; Vehicle (pick up 3/4T 4*2) [40 h]; Safety Officer [40 h]; Project Engineer [40 h]; QC inspector [40 h]; Truck Flat Bed [40 h]; Driver [40 h]; Curve Angel / (site Installation works) [0.7] | 17,254.99 |
|  | 10 | **SHELL MANHOLES & NOZZLES (SITE Installation WORKS & TESTING)** |  |  | 2013-01-03 | 2013-01-12 |  |  |  |  |  |
| JF721.272 |  | MArk & Cut Holes |  | 6d | 2013-01-03 | 2013-01-08 | JF721.271 SS, JF721.216 | 44d | 0d | Fabricator [30 h]; Helper [120 h]; Cutting Machine [30 h]; Vehicle (pick up 3/4T 4*2) [30 h]; Safety Officer [30 h]; Project Engineer [30 h]; QC inspector [30 h]; Truck Flat Bed [30 h]; Driver [30 h]; Shell manholes & / nozzles(site Installation works & testing) [0.1] | 3,697.5 |
| JF721.273 |  | Fit & Tack Manholes ,Nozzles on Shell |  | 5d | 2013-01-03 | 2013-01-08 | JF721.272 SS+1d | 44d | 0d | Tack Welder [20 h]; Fabricator [20 h]; Helper [80 h]; Compressor 450 CFM [20 h]; Cutting Machine [20 h]; Vehicle (pick up 3/4T 4*2) [20 h]; Safety Officer [20 h]; Project Engineer [20 h]; QC inspector [20 h]; Truck Flat Bed [20 h]; Driver [20 h]; Shell manholes & / nozzles(site Installation works & testing) [0.3] | 11,092.49 |
| JF721.274 |  | Weld MAnholes & Nozzles on shell |  | 5d | 2013-01-05 | 2013-01-09 | JF721.273 SS+1d | 44d | 0d | Welder 6G [160 h]; Compressor 450 CFM [160 h]; Helper [80 h]; Cutting Machine [50 h]; Tack Welder [20 h]; Vehicle (pick up 3/4T 4*2) [20 h]; Safety Officer [20 h]; Project Engineer [20 h]; QC inspector [20 h]; Truck Flat Bed [20 h]; Driver [20 h]; Shell manholes & / nozzles(site Installation works & testing) [0.45] | 16,638.74 |
| JF721.275 |  | NDT on Manholes & Nozzles on shell |  | 4d | 2013-01-09 | 2013-01-12 | JF721.274 | 44d | 0d | Helper [50 h]; Fabricator [30 h]; Vehicle (pick up 3/4T 4*2) [10 h]; Safety Officer [10 h]; Project Engineer [10 h]; QC inspector [10 h]; Truck Flat Bed [10 h]; Driver [10 h]; Shell manholes & / nozzles(site Installation works & testing) [0.15] | 5,546.25 |
|  | 11 | **ALUMINUM DOME ROOF (SITE INSTALLATION WORKS)** |  |  | 2013-01-09 | 2013-02-18 |  |  |  |  |  |
| JF721.276 |  | Prepare Tank for Roof Contruction |  | 6d | 2013-01-09 | 2013-01-14 | JF721.219 SS+45d, JF721.275 SS | 44d | 0d | Third party for ALuminum Dome Roof Supervisor [30 h]; Truck Flat Bed [30 h]; Diesel Truck [30 h]; Helper [120 h]; Fabricator [60 h]; Crane Operator [30 h]; Forman [30 h]; QC inspector [30 h]; Project Engineer [30 h]; Safety Officer [30 h]; Vehicle (pick up 3/4T 4*2) [30 h]; Driver [30 h]; Aluminum Doom Roof / (Site Installation works) [0.15] | 12,941.24 |
| JF721.277 |  | Install Shoe Support Structure on Shell |  | 8d | 2013-01-14 | 2013-01-21 | JF721.276 | 44d | 0d | Fabricator [50 h]; Third party for ALuminum Dome Roof Supervisor [50 h]; Forman [50 h]; Diesel Truck [50 h]; Crane Operator [50 h]; Rigger [50 h]; Helper [200 h]; Cutting Machine [50 h]; Compressor 450 CFM [100 h]; Tack Welder [50 h]; Welder 6G [100 h]; Project Engineer [50 h]; QC inspector [50 h]; Safety Officer [50 h]; Vehicle (pick up 3/4T 4*2) [50 h]; Driver [50 h]; Truck Flat Bed [50 h]; Aluminum Doom Roof / (Site Installation works) [0.2] | 17,254.99 |
| JF721.278 |  | Install / Assemble Roof Rafters |  | 19d | 2013-01-21 | 2013-02-05 | JF721.277 | 44d | 0d | Crane Operator [160 h]; Diesel Truck [160 h]; Third party for ALuminum Dome Roof Supervisor [160 h]; Forman [160 h]; Rigger [160 h]; Fabricator [320 h]; Helper [800 h]; Cutting Machine [160 h]; Compressor 450 CFM [160 h]; Tack Welder [160 h]; Welder 6G [160 h]; Project Engineer [160 h]; QC inspector [160 h]; Safety Officer [160 h]; Vehicle (pick up 3/4T 4*2) [160 h]; Driver [160 h]; Truck Flat Bed [160 h]; Aluminum Doom Roof / (Site Installation works) [0.25] | 21,568.74 |
| JF721.279 |  | Installation of Roof Plates |  | 10d | 2013-02-05 | 2013-02-14 | JF721.278 | 44d | 0d | Third party for ALuminum Dome Roof Supervisor [70 h]; Safety Officer [70 h]; Diesel Truck [70 h]; Forman [70 h]; Rigger [70 h]; Fabricator [140 h]; Helper [420 h]; Project Engineer [70 h]; QC inspector [70 h]; Vehicle (pick up 3/4T 4*2) [70 h]; Driver [70 h]; Truck Flat Bed [70 h]; Aluminum Doom Roof / (Site Installation works) [0.3] | 25,882.49 |
| JF721.280 |  | Install Roof Manholes & Nozzles |  | 5d | 2013-02-14 | 2013-02-18 | JF721.279 | 44d | 0d | Forman [20 h]; Fabricator [40 h]; Helper [120 h]; Crane Operator [20 h]; Diesel Truck [20 h]; Rigger [20 h]; Tack Welder [20 h]; Welder 6G [20 h]; Compressor 450 CFM [20 h]; Cutting Machine [20 h]; Project Engineer [20 h]; QC inspector [20 h]; Safety Officer [20 h]; Vehicle (pick up 3/4T 4*2) [20 h]; Driver [20 h]; Truck Flat Bed [20 h]; Aluminum Doom Roof / (Site Installation works) [0.1] | 8,627.5 |
|  | 12 | **PLATFORMS & HANDRAILS (SITE INSTALLATION WORKS)** |  |  | 2013-02-18 | 2013-02-25 |  |  |  |  |  |
| JF721.281 |  | Erect & Fix Stairs, Handrails & Platforms on Shell |  | 7d | 2013-02-18 | 2013-02-24 | JF721.280, JF721.217 | 44d | 0d | Forman [40 h]; Crane Operator [40 h]; Diesel Truck [40 h]; Fabricator [80 h]; Helper [200 h]; Rigger [40 h]; Welder 6G [80 h]; Tack Welder [80 h]; Cutting Machine [40 h]; Compressor 450 CFM [80 h]; Project Engineer [40 h]; QC inspector [40 h]; Safety Officer [40 h]; Vehicle (pick up 3/4T 4*2) [40 h]; Driver [40 h]; Truck Flat Bed [40 h]; Platforms & / handrails (site Installation works) [0.35] | 21,568.74 |
| JF721.282 |  | Erect & Fix Roof Platforms & Handrails |  | 8d | 2013-02-18 | 2013-02-25 | JF721.281 SS | 44d | 0d | Diesel Truck [50 h]; Forman [50 h]; Crane Operator [50 h]; Rigger [50 h]; Fabricator [100 h]; Helper [200 h]; Cutting Machine [50 h]; Compressor 450 CFM [100 h]; Tack Welder [50 h]; Welder 6G [100 h]; Project Engineer [50 h]; QC inspector [50 h]; Safety Officer [50 h]; Vehicle (pick up 3/4T 4*2) [50 h]; Driver [50 h]; Truck Flat Bed [50 h]; Platforms & / handrails (site Installation works) [0.65] | 40,056.23 |
|  | 21 | **MCC** |  |  | 2013-02-25 | 2013-02-25 |  |  |  |  |  |
| 2.B |  | MCC | milestone | 0d | 2013-02-25 | 2013-02-25 | JF721.282 | 44d | 0d |  |  |
|  | 13 | **HYDROTESTING** |  |  | 2013-02-25 | 2013-04-05 |  |  |  |  |  |
| JF721.283 |  | Install Blind Flanges |  | 2d | 2013-02-25 | 2013-02-27 | 2.B | 44d | 0d | Helper [20 h]; Fabricator [10 h]; Forman [10 h]; Project Engineer [10 h]; QC inspector [10 h]; Safety Officer [10 h]; Vehicle (pick up 3/4T 4*2) [10 h]; Driver [10 h]; Truck Flat Bed [10 h]; Hydrotesting [0.15] | 7,395 |
| JF721.284 |  | Tank Water Filling |  | 24d | 2013-02-27 | 2013-03-19 | JF721.283 | 44d | 0d | Water truck 30,000 Gallons [230 h]; Helper [460 h]; Forman [80 h]; Project Engineer [230 h]; QC inspector [230 h]; Safety Officer [230 h]; Vehicle (pick up 3/4T 4*2) [230 h]; Driver [230 h]; Truck Flat Bed [230 h]; Hydrotesting [0.2] | 9,859.99 |
| JF721.285 |  | Hold Water for 48 Hours |  | 3d | 2013-03-20 | 2013-03-22 | JF721.284 | 44d | 0d | Helper [160 h]; Project Engineer [20 h]; QC inspector [20 h]; Safety Officer [20 h]; Vehicle (pick up 3/4T 4*2) [20 h]; Driver [20 h]; Truck Flat Bed [20 h]; Hydrotesting [0.3] | 14,789.99 |
| JF721.286 |  | Drain Water from Tank |  | 13d | 2013-03-22 | 2013-04-02 | JF721.285 | 45d | 0d | Helper [960 h]; Forman [120 h]; Project Engineer [120 h]; QC inspector [120 h]; Safety Officer [120 h]; Vehicle (pick up 3/4T 4*2) [120 h]; Driver [120 h]; Truck Flat Bed [120 h]; Hydrotesting [0.15] | 7,395 |
| JF721.287 |  | Clean & Dry Out Tank |  | 3d | 2013-04-02 | 2013-04-05 | JF721.286 | 45d | 0d | Forman [20 h]; Helper [260 h]; Project Engineer [20 h]; QC inspector [20 h]; Safety Officer [20 h]; Vehicle (pick up 3/4T 4*2) [20 h]; Driver [20 h]; Truck Flat Bed [20 h]; Hydrotesting [0.2] | 9,859.99 |

| ID | WBS | Activity | Type | Duration | Start | Finish | Predecessors | Total float | Free float | Resources | Cost |
| --- | --- | --- | --- | --- | --- | --- | --- | --- | --- | --- | --- |
|  | 22 | **Final Testing** |  |  | 2013-04-05 | 2013-04-05 |  |  |  |  |  |
| 4.B |  | Final Testing | milestone | 0d | 2013-04-05 | 2013-04-05 | JF721.287 | 45d | 0d |  |  |
|  | 14 | **EXTERNAL SITE PAINTING** |  |  | 2013-03-22 | 2013-04-08 |  |  |  |  |  |
| JF721.288 |  | Erect Scafolding Outside Tank |  | 9d | 2013-03-22 | 2013-03-30 | JF721.285 | 44d | 0d | Forman [80 h]; Scaffolder [160 h]; Helper [560 h]; Project Engineer [80 h]; QC inspector [80 h]; Safety Officer [80 h]; Vehicle (pick up 3/4T 4*2) [80 h]; Driver [80 h]; Truck Flat Bed [80 h]; External site painting [0.2] | 7,395 |
| JF721.289 |  | External Shell Blast & Prime |  | 5d | 2013-03-30 | 2013-04-03 | JF721.288 | 44d | 0d | Painter [40 h]; Blaster [40 h]; Helper [360 h]; Project Engineer [40 h]; QC inspector [40 h]; Safety Officer [40 h]; Vehicle (pick up 3/4T 4*2) [40 h]; Driver [40 h]; Truck Flat Bed [40 h]; External site painting [0.3] | 11,092.49 |
| JF721.290 |  | External Shell Secondary & Final Coat |  | 5d | 2013-03-31 | 2013-04-04 | JF721.289 SS+1d | 44d | 0d | Helper [360 h]; Blaster [40 h]; Painter [40 h]; Project Engineer [40 h]; QC inspector [40 h]; Safety Officer [40 h]; Vehicle (pick up 3/4T 4*2) [40 h]; Driver [40 h]; Truck Flat Bed [40 h]; External site painting [0.3] | 11,092.49 |
| JF721.291 |  | External Shell Paint Inspection |  | 2d | 2013-04-04 | 2013-04-06 | JF721.290 | 44d | 0d | QC inspector [10 h]; Forman [10 h]; Helper [30 h]; Project Engineer [10 h]; Safety Officer [10 h]; Vehicle (pick up 3/4T 4*2) [10 h]; Driver [10 h]; Truck Flat Bed [10 h]; External site painting [0.1] | 3,697.5 |
| JF721.292 |  | Dismantle External Scaffolding |  | 3d | 2013-04-06 | 2013-04-08 | JF721.291 | 44d | 0d | Scaffolder [40 h]; Forman [20 h]; Helper [160 h]; Project Engineer [20 h]; QC inspector [20 h]; Safety Officer [20 h]; Vehicle (pick up 3/4T 4*2) [20 h]; Driver [20 h]; Truck Flat Bed [20 h]; External site painting [0.1] | 3,697.5 |
|  | 15 | **INTERNAL SITE PAINTING** |  |  | 2013-04-05 | 2013-04-25 |  |  |  |  |  |
| JF721.293 |  | Erect Scafolding Inside Tank |  | 7d | 2013-04-05 | 2013-04-11 | 4.B | 45d | 1d | Forman [60 h]; Scaffolder [120 h]; Helper [480 h]; Project Engineer [60 h]; QC inspector [60 h]; Safety Officer [60 h]; Vehicle (pick up 3/4T 4*2) [60 h]; Driver [60 h]; Truck Flat Bed [60 h]; internal site painting [0.15] | 9,243.75 |
| JF721.294 |  | Internal Shell Blast & Prime |  | 4d | 2013-04-08 | 2013-04-12 | JF721.293 SS+3d, JF721.292 | 44d | 0d | Blaster [60 h]; Painter [60 h]; Helper [240 h]; Project Engineer [30 h]; QC inspector [30 h]; Safety Officer [30 h]; Vehicle (pick up 3/4T 4*2) [30 h]; Driver [30 h]; Truck Flat Bed [30 h]; internal site painting [0.2] | 12,324.99 |
| JF721.295 |  | Internal Shell Secondary & Final Coat |  | 4d | 2013-04-12 | 2013-04-15 | JF721.294 | 44d | 0d | Painter [30 h]; Blaster [30 h]; Helper [210 h]; Project Engineer [30 h]; QC inspector [30 h]; Safety Officer [30 h]; Vehicle (pick up 3/4T 4*2) [30 h]; Driver [30 h]; Truck Flat Bed [30 h]; internal site painting [0.2] | 12,324.99 |
| JF721.296 |  | Internal Shell Paint Inspection |  | 2d | 2013-04-12 | 2013-04-14 | JF721.295 SS | 44d | 0d | Forman [10 h]; QC inspector [10 h]; Helper [20 h]; Project Engineer [10 h]; Safety Officer [10 h]; Vehicle (pick up 3/4T 4*2) [10 h]; Driver [10 h]; Truck Flat Bed [10 h]; internal site painting [0.05] | 3,081.25 |
| JF721.297 |  | Dismantle Internal Scaffolding |  | 5d | 2013-04-14 | 2013-04-18 | JF721.296 | 44d | 0d | Forman [40 h]; Scaffolder [80 h]; Helper [200 h]; Project Engineer [40 h]; QC inspector [40 h]; Safety Officer [40 h]; Vehicle (pick up 3/4T 4*2) [40 h]; Driver [40 h]; Truck Flat Bed [40 h]; internal site painting [0.05] | 3,081.25 |
| JF721.298 |  | Bottom/Annular Plate Blast & Prime |  | 3d | 2013-04-18 | 2013-04-21 | JF721.297 | 44d | 0d | Blaster [40 h]; Painter [40 h]; Fabricator [20 h]; Tack Welder [20 h]; Welder 6G [20 h]; Compressor 450 CFM [20 h]; Cutting Machine [20 h]; Helper [100 h]; Project Engineer [20 h]; QC inspector [20 h]; Safety Officer [20 h]; Vehicle (pick up 3/4T 4*2) [20 h]; Driver [20 h]; Truck Flat Bed [20 h]; internal site painting [0.15] | 9,243.75 |
| JF721.299 |  | Bottom/Annular Plate Secondary & Final Coat |  | 3d | 2013-04-21 | 2013-04-23 | JF721.298 | 44d | 0d | Painter [20 h]; Blaster [20 h]; Welder 6G [20 h]; Compressor 450 CFM [20 h]; Cutting Machine [20 h]; Fabricator [20 h]; Helper [100 h]; Project Engineer [20 h]; QC inspector [20 h]; Safety Officer [20 h]; Vehicle (pick up 3/4T 4*2) [20 h]; Driver [20 h]; Truck Flat Bed [20 h]; internal site painting [0.15] | 9,243.75 |
| JF721.300 |  | Bottom/Annular Plate Paint Inspection |  | 2d | 2013-04-23 | 2013-04-25 | JF721.299 | 44d | 0d | Forman [10 h]; QC inspector [10 h]; Fabricator [20 h]; Welder 6G [10 h]; Compressor 450 CFM [10 h]; Cutting Machine [10 h]; Helper [40 h]; Project Engineer [10 h]; Safety Officer [10 h]; Vehicle (pick up 3/4T 4*2) [10 h]; Driver [10 h]; Truck Flat Bed [10 h]; internal site painting [0.05] | 3,081.25 |
|  | 16 | **ELECTRICAL SITE WORKS** |  |  | 2013-06-09 | 2013-06-16 |  |  |  |  |  |
| JF721.301 |  | Tanks lighting |  | 3d | 2013-06-09 | 2013-06-11 | 2.12 | 44d | 0d | Forman [20 h]; Helper [80 h]; Tack Welder [20 h]; Project Engineer [20 h]; QC inspector [20 h]; Safety Officer [20 h]; Vehicle (pick up 3/4T 4*2) [20 h]; Driver [20 h]; Truck Flat Bed [20 h]; Electrical Site Works [0.3] | 7,395 |
| JF721.302 |  | Tanks lighting protection |  | 3d | 2013-06-11 | 2013-06-13 | JF721.301 | 44d | 0d | Forman [20 h]; Helper [80 h]; Tack Welder [20 h]; Project Engineer [20 h]; QC inspector [20 h]; Safety Officer [20 h]; Vehicle (pick up 3/4T 4*2) [20 h]; Driver [20 h]; Truck Flat Bed [20 h]; Electrical Site Works [0.3] | 7,395 |
| JF721.303 |  | Grounding system |  | 3d | 2013-06-14 | 2013-06-16 | JF721.302 | 44d | 0d | Forman [20 h]; Helper [60 h]; Project Engineer [20 h]; QC inspector [20 h]; Safety Officer [20 h]; Vehicle (pick up 3/4T 4*2) [20 h]; Driver [20 h]; Truck Flat Bed [20 h]; Electrical Site Works [0.4] | 9,860 |
|  | 23 | **Complete Installation of Task Lighting for the tanks including Cabling** |  |  | 2013-06-16 | 2013-06-16 |  |  |  |  |  |
| 2.10 |  | Complete Installation | milestone | 0d | 2013-06-16 | 2013-06-16 | JF721.303 | 44d | 0d |  |  |
|  | 17 | **THIRD PARTY INSPECTION** |  |  | 2013-06-16 | 2013-07-03 |  |  |  |  |  |
| JF721.304 |  | Concrete testing |  | 4d | 2013-06-16 | 2013-06-20 | 2.10 | 44d | 0d | Concrete Testing-Third party inspection [30 h]; Forman [30 h]; Helper [30 h]; Project Engineer [30 h]; QC inspector [30 h]; Safety Officer [30 h]; Vehicle (pick up 3/4T 4*2) [30 h]; Driver [30 h]; Truck Flat Bed [30 h]; Third Party Inspection [0.1] | 9,860 |
| JF721.305 |  | RT testing for the welding |  | 5d | 2013-06-20 | 2013-06-24 | JF721.304 | 44d | 0d | Forman [40 h]; Helper [40 h]; Project Engineer [40 h]; QC inspector [40 h]; Safety Officer [40 h]; Vehicle (pick up 3/4T 4*2) [40 h]; Driver [40 h]; Truck Flat Bed [40 h]; Third Party Inspection [0.45] | 44,369.98 |
| JF721.306 |  | Sand testing |  | 5d | 2013-06-24 | 2013-06-29 | JF721.305 | 44d | 0d | Forman [40 h]; Helper [40 h]; Project Engineer [40 h]; QC inspector [40 h]; Safety Officer [40 h]; Vehicle (pick up 3/4T 4*2) [40 h]; Driver [40 h]; Truck Flat Bed [40 h]; Third Party Inspection [0.1] | 9,860 |
| JF721.307 |  | Tank Calibration |  | 5d | 2013-06-29 | 2013-07-03 | JF721.306 | 44d | 0d | Helper [40 h]; Forman [20 h]; Project Engineer [20 h]; QC inspector [20 h]; Safety Officer [20 h]; Vehicle (pick up 3/4T 4*2) [20 h]; Driver [20 h]; Truck Flat Bed [20 h]; Third Party Inspection [0.35] | 34,509.98 |

| ID | WBS | Activity | Type | Duration | Start | Finish | Predecessors | Total float | Free float | Resources | Cost |
| --- | --- | --- | --- | --- | --- | --- | --- | --- | --- | --- | --- |
|  | 24 | **Third Party Testing and Commissioning** |  |  | 2013-07-03 | 2013-07-03 |  |  |  |  |  |
| 3.B |  | Third Party | milestone | 0d | 2013-07-03 | 2013-07-03 | JF721.307 | 44d | 0d |  |  |
|  | 18 | **HAND OVER TO CLIENT (COMMISSIONING)** |  |  | 2013-07-03 | 2013-07-06 |  |  |  |  |  |
| JF721.308 |  | FInal Inspection & Hand over to client |  | 4d | 2013-07-03 | 2013-07-06 | 3.B | 44d | 0d | Project Engineer [30 h]; Forman [30 h]; QC inspector [30 h]; Helper [90 h]; Truck Flat Bed [30 h]; Driver [30 h]; Safety Officer [30 h]; Vehicle (pick up 3/4T 4*2) [30 h]; Hand over to Client (commissioning) [1] | 67,787.46 |
|  | 25 | **Project Completion (Tk3)** |  |  | 2013-07-06 | 2013-07-06 |  |  |  |  |  |
| 6.B |  | Project Completion | milestone | 0d | 2013-07-06 | 2013-07-06 | JF721.308, 6.A FF | 44d | 10d |  |  |
|  | 3 | **TANK#3 100 A** |  |  | 2012-06-30 | 2013-07-15 |  |  |  |  |  |
|  | 1 | **ENGINEERING** |  |  | 2012-06-30 | 2012-07-26 |  |  |  |  |  |
|  | 1 | **SOIL INVESTIGATION SUBCONTRACTOR** |  |  | 2012-06-30 | 2012-07-01 |  |  |  |  |  |
| JF721.309 |  | Soil Investigation Works |  | 2d | 2012-06-30 | 2012-07-01 | JF721.155 SS | 0d |  | Geo Technical Survey [20 h]; Soil investigation / sub contractor [1] | 12,426.27 |
|  | 4 | **Complete survey and Geotechnical Investigation for Master Pump Station** |  |  | 2012-07-01 | 2012-07-01 |  |  |  |  |  |
| 3.1 |  | Complete survey and Geotechnical Investigation for both Master Pump Station | milestone | 0d | 2012-07-01 | 2012-07-01 | JF721.309 | 34d | 0d |  |  |
|  | 2 | **ENGINEERING DESIGN CALCULATIONS)** |  |  | 2012-07-01 | 2012-07-17 |  |  |  |  |  |
| JF721.310 |  | 60% Submittal |  | 1d | 2012-07-01 | 2012-07-02 | 3.1 | 44d | 0d | Mechanical Design Engineer [8 h]; Engineering / Design Calculations [0.15] | 2,795.91 |
| JF721.311 |  | 60% Comments Incooperation |  | 7d | 2012-07-02 | 2012-07-08 | JF721.310 | 44d | 0d | Mechanical Design Engineer [56 h]; Engineering / Design Calculations [0.2] | 3,727.88 |
| JF721.312 |  | 90% Submittal |  | 1d | 2012-07-08 | 2012-07-09 | JF721.311 | 44d | 0d | Mechanical Design Engineer [8 h]; Engineering / Design Calculations [0.15] | 2,795.91 |
| JF721.313 |  | 90% Comments Incooperation |  | 7d | 2012-07-09 | 2012-07-15 | JF721.312 | 44d | 0d | Mechanical Design Engineer [56 h]; Engineering / Design Calculations [0.2] | 3,727.88 |
| JF721.314 |  | IFC |  | 3d | 2012-07-15 | 2012-07-17 | JF721.313 | 44d | 0d | Mechanical Design Engineer [24 h]; Engineering / Design Calculations [0.3] | 5,591.82 |
|  | 5 | **Complete Engineering design and Calculations** |  |  | 2012-07-17 | 2012-07-17 |  |  |  |  |  |
| 3.2 |  | Complete Engineering design and Calculations | milestone | 0d | 2012-07-17 | 2012-07-17 | JF721.314 FF | 44d | 0d |  |  |
|  | 3 | **ENGINEERING TANK & FOUNDATION DRAWINGS** |  |  | 2012-07-17 | 2012-07-26 |  |  |  |  |  |
| JF721.315 |  | 60% Submittal (Tank & Foundation Drawings) |  | 1d | 2012-07-17 | 2012-07-18 | 3.2 | 44d | 0d | Mechanical Design Engineer [8 h]; Structural Design Engineer [8 h]; Quantity Surveyor (Material Specialist) [8 h]; Engineering / Tank & / foundation Drawings [0.15] | 4,659.85 |
| JF721.316 |  | 60% Comments Incooperation (Tanks & Foundation Drawings) |  | 5d | 2012-07-18 | 2012-07-23 | JF721.315 | 44d | 0d | Quantity Surveyor (Material Specialist) [40 h]; Mechanical Design Engineer [40 h]; Structural Design Engineer [40 h]; Engineering / Tank & / foundation Drawings [0.2] | 6,213.13 |
| JF721.317 |  | 90% Submittal (Tanks & Foundation Drawings) |  | 1d | 2012-07-23 | 2012-07-23 | JF721.316 | 44d | 0d | Structural Design Engineer [8 h]; Quantity Surveyor (Material Specialist) [8 h]; Mechanical Design Engineer [8 h]; Engineering / Tank & / foundation Drawings [0.15] | 4,659.85 |
| JF721.318 |  | 90% Comments Incooperation (Tanks & Foundation Drawings) |  | 2d | 2012-07-23 | 2012-07-25 | JF721.317 | 44d | 0d | Mechanical Design Engineer [16 h]; Quantity Surveyor (Material Specialist) [16 h]; Structural Design Engineer [16 h]; Engineering / Tank & / foundation Drawings [0.2] | 6,213.13 |
| JF721.319 |  | IFC |  | 1d | 2012-07-25 | 2012-07-26 | JF721.318 | 45d | 0d | Quantity Surveyor (Material Specialist) [8 h]; Structural Design Engineer [8 h]; Mechanical Design Engineer [8 h]; Engineering / Tank & / foundation Drawings [0.3] | 9,319.7 |

Notes:
- 3: DESIGN,ENGINEERING,SUPPLY OF / MATERIALS,MANUFACTURING,PREFABRICATION,ASSUMBLY,PAINTING&COATING,ERECTION,SHOP / TESTING,INSPECTION,PACKING AND DELIEVERY TO SITE,OPERATING & MAINTENANCE / MANUALS AND SPARE PARTS PACKADGE
- JF721.309: Steps: Soil Contractor Mobilization; Start of work; Finishing & Moving to 2nd Tank
- JF721.311: Steps: Recieving the Comments from client; Incooperating the Comments
- JF721.313: Steps: Recieving the Comments from client; Incooperating the Comments
- JF721.314: Steps: Receving Final Approval from client; Preparing the Drawings to IFC

| ID | WBS | Activity | Type | Duration | Start | Finish | Predecessors | Total float | Free float | Resources | Cost |
| --- | --- | --- | --- | --- | --- | --- | --- | --- | --- | --- | --- |
|  | 6 | **Complete Fabrication and GA Drawing with Bill of Quantities** |  |  | 2012-07-26 | 2012-07-26 |  |  |  |  |  |
| 3.3 |  | Complete Fabrication and GA Drawing with Bill of Quantities | milestone | 0d | 2012-07-26 | 2012-07-26 | JF721.319 FF | 45d | 1d |  |  |
|  | 2 | **PORCURMENT (INCLUDING DELIEVERY OF RAW MATERIAL & PREFABRICATION OF MATERIAL AT ALZAMIL FACTORY)** |  |  | 2012-07-01 | 2013-06-20 |  |  |  |  |  |
|  | 1 | **CAMP FACILITIES & SITE OFFICIES** |  |  | 2012-07-01 | 2012-07-10 |  |  |  |  |  |
| JF721.320 |  | PO Issued |  | 3d | 2012-07-01 | 2012-07-03 | 3.1 | 34d | 0d | Camp Facilities & Site Offices [0.6] | 74,741.95 |
| JF721.321 |  | Ma'aden Site Delievery |  | 7d | 2012-07-04 | 2012-07-10 | JF721.320 | 34d | 0d | Camp Facilities & Site Offices [0.4] | 49,827.96 |
|  | 2 | **CATHODIC PROTECTION SYSTEM SUBCONTRACTOR** |  |  | 2012-07-24 | 2013-05-23 |  |  |  |  |  |
| JF721.322 |  | Approval for Vendor Drawings & SPecifications |  | 3d | 2012-07-24 | 2012-07-27 | JF721.318 SS+1d | 44d | 0d | Cathodic / protection System subcontractor [0.1] | 4,982.8 |
| JF721.323 |  | PO Issued |  | 27d | 2012-07-27 | 2012-08-22 | JF721.322 | 166d | 0d | Cathodic / protection System subcontractor [0.2] | 9,965.59 |
| JF721.324 |  | CP System Delievered to Ma'aden Site & Installed |  | 30d | 2013-04-25 | 2013-05-21 | JF721.454 SS | 34d | 0d | Helper [500 h]; Fabricator [250 h]; Forman [250 h]; Diesel Truck [250 h]; Crane Operator [250 h]; Driver [250 h]; Truck Flat Bed [250 h]; Cutting Machine [250 h]; Project Engineer [250 h]; QC inspector [250 h]; Safety Officer [250 h]; Vehicle (pick up 3/4T 4*2) [250 h]; Cathodic / protection System subcontractor [0.3] | 14,948.39 |
| JF721.325 |  | Ma'aden CP Inspection |  | 3d | 2013-05-21 | 2013-05-23 | JF721.324 | 34d | 0d | Fabricator [10 h]; Helper [20 h]; Diesel Truck [10 h]; Crane Operator [10 h]; Driver [10 h]; Truck Flat Bed [10 h]; Cutting Machine [10 h]; Project Engineer [10 h]; QC inspector [10 h]; Safety Officer [10 h]; Vehicle (pick up 3/4T 4*2) [10 h]; Cathodic / protection System subcontractor [0.4] | 19,931.18 |
|  | 18 | **Complete installation of Cathodic Protection and CP monitoring for the Storage Tanks.** |  |  | 2013-05-23 | 2013-05-23 |  |  |  |  |  |
| 3.11 |  | Complete Installation of Cathodic Protection | milestone | 0d | 2013-05-23 | 2013-05-23 | JF721.325 | 34d | 0d |  |  |
|  | 3 | **CIVIL & FOUNDATION MATERIAL** |  |  | 2012-07-10 | 2012-07-19 |  |  |  |  |  |
| JF721.326 |  | PO Issued |  | 3d | 2012-07-10 | 2012-07-12 | JF721.321 | 60d | 0d | Civil & Foundation [0.6] | 29,896.78 |
| JF721.327 |  | Ma'aden Site Delievery |  | 8d | 2012-07-12 | 2012-07-19 | JF721.326 | 60d | 26d | Civil & Foundation [0.4] | 19,931.18 |
|  | 4 | **ALUMINUM DOME ROOF SUBCONTRACTOR** |  |  | 2012-07-24 | 2012-08-22 |  |  |  |  |  |
| JF721.328 |  | Approval For Vendor Drawings & Specifications |  | 3d | 2012-07-24 | 2012-07-27 | JF721.322 SS | 44d | 0d | Aluminum Doom Roof subcontractor [0.35] | 87,198.94 |
| JF721.329 |  | P.O Issued |  | 27d | 2012-07-27 | 2012-08-22 | JF721.328 | 166d | 0d | Aluminum Doom Roof subcontractor [0.65] | 161,940.88 |
|  | 5 | **INSTRUMENTATION SUBCONTRACTOR** |  |  | 2012-07-24 | 2013-06-20 |  |  |  |  |  |
| JF721.330 |  | Approval for vendor Drawings & Specifcations |  | 3d | 2012-07-24 | 2012-07-27 | JF721.328 SS | 44d | 0d | Instrumentation / subcontractor [0.1] | 4,982.8 |
| JF721.331 |  | P.O Issued |  | 27d | 2012-07-27 | 2012-08-22 | JF721.330 | 166d | 0d | Instrumentation / subcontractor [0.2] | 9,965.59 |
| JF721.332 |  | Instrumentation Delievered to Ma'aden & Installed |  | 29d | 2013-05-23 | 2013-06-17 | 3.11 | 34d | 0d | Forman [140 h]; Helper [280 h]; Fabricator [140 h]; Diesel Truck [140 h]; Crane Operator [140 h]; Driver [140 h]; Truck Flat Bed [140 h]; Cutting Machine [140 h]; Project Engineer [140 h]; QC inspector [140 h]; Safety Officer [140 h]; Vehicle (pick up 3/4T 4*2) [140 h]; Instrumentation / subcontractor [0.3] | 14,948.39 |
| JF721.333 |  | Ma'aden Instrumentation Inspection |  | 3d | 2013-06-17 | 2013-06-20 | JF721.332 | 34d | 0d | Forman [10 h]; Helper [20 h]; QC inspector [10 h]; Diesel Truck [10 h]; Crane Operator [10 h]; Driver [10 h]; Truck Flat Bed [10 h]; Cutting Machine [10 h]; Project Engineer [10 h]; Safety Officer [10 h]; Vehicle (pick up 3/4T 4*2) [10 h]; Instrumentation / subcontractor [0.4] | 19,931.18 |

Notes:
- JF721.321: Steps: Purchase Portacabins Locally; Deliever to MPS
- JF721.324: Steps: Delievery of CP System to site; Installation after complete internal tank painting
- JF721.332: Steps: Delievery of Instrumentation to site; Installation

| ID | WBS | Activity | Type | Duration | Start | Finish | Predecessors | Total float | Free float | Resources | Cost |
| --- | --- | --- | --- | --- | --- | --- | --- | --- | --- | --- | --- |
|  | 19 | **Installation of only field instruments, which includes level transmitters and level gauges** |  |  | 2013-06-20 | 2013-06-20 |  |  |  |  |  |
| 3.12 |  | Complete Installation for instruments | milestone | 0d | 2013-06-20 | 2013-06-20 | JF721.333 | 34d | 0d |  |  |
|  | 6 | **PLATES SUPPLIER** |  |  | 2012-07-17 | 2012-07-23 |  |  |  |  |  |
| JF721.334 |  | Approve Vendor Drawings & Specifcations |  | 3d | 2012-07-17 | 2012-07-20 | JF721.314 | 44d | 0d | Plates Supplier [0.25] | 87,198.93 |
| JF721.335 |  | P.O Issued |  | 3d | 2012-07-20 | 2012-07-23 | JF721.334 | 44d | 0d | Plates Supplier [0.75] | 261,596.8 |
|  | 17 | **Material Requisition approval for Steel plates, Cathodic Protection, field instruments etc.** |  |  | 2012-07-27 | 2012-07-27 |  |  |  |  |  |
| 3.5 |  | Material Requisition approval for Steel plates, Cathodic Protection, field instruments etc. | milestone | 0d | 2012-07-27 | 2012-07-27 | JF721.330 | 44d | 0d |  |  |
|  | 16 | **PURCHASE ORDER PLACEMENT FOR MAJOR MATERIALS** |  |  | 2012-08-22 | 2012-08-22 |  |  |  |  |  |
| 3.6 |  | Purchase Order placement for Major Materials | milestone | 0d | 2012-08-22 | 2012-08-22 | JF721.323, JF721.329, JF721.331 | 166d | 0d |  |  |
|  | 7 | **PROFILE MATERIAL INCLUDING(beams,Angels,Round bars,Flatbars,Checkers Plates)** |  |  | 2012-07-27 | 2012-08-06 |  |  |  |  |  |
| JF721.336 |  | Approval for Vendor Drawings & Specifications |  | 6d | 2012-07-27 | 2012-08-01 | 3.5, 3.3 | 44d | 0d | Profile material / including(beams,Angels,Round bars,Flatbars,Checkers Plates) [0.25] | 6,228.49 |
| JF721.337 |  | PO Issued |  | 6d | 2012-08-01 | 2012-08-06 | JF721.336 | 158d | 0d | Profile material / including(beams,Angels,Round bars,Flatbars,Checkers Plates) [0.75] | 18,685.49 |
|  | 8 | **PIPES&FITTINGS INCLUDING(FLANGES,ELBOWS,PAD PLATES,PIPES,NUTS,BOLTS)SUPPLIER INCLDUDING SPARE PARTS** |  |  | 2012-07-27 | 2012-08-06 |  |  |  |  |  |
| JF721.338 |  | Approval for Vendor Drawings & Specifications |  | 6d | 2012-07-27 | 2012-08-01 | JF721.336 SS | 44d | 0d | Pipes & fittings / (including(Flanges,elbows, / pad plates,pipes, / nuts,bolts) supplier including Spar [0.25] | 12,456.99 |
| JF721.339 |  | PO issued |  | 6d | 2012-08-01 | 2012-08-06 | JF721.338 | 44d | 0d | Pipes & fittings / (including(Flanges,elbows, / pad plates,pipes, / nuts,bolts) supplier including Spar [0.75] | 37,370.97 |
|  | 9 | **PAINT SUPPLIER** |  |  | 2012-08-01 | 2012-08-11 |  |  |  |  |  |
| JF721.340 |  | Approval For vendor Specifcations |  | 8d | 2012-08-01 | 2012-08-08 | JF721.338 | 85d | 0d | Paint supplier [0.25] | 12,456.99 |
| JF721.341 |  | PO issued |  | 4d | 2012-08-08 | 2012-08-11 | JF721.340 | 85d | 0d | Paint supplier [0.75] | 37,370.97 |
|  | 10 | **RAW MATERIAL DELIEVERY TO ALZAMIL FACTORY** |  |  | 2012-07-23 | 2012-10-13 |  |  |  |  |  |
| JF721.342 |  | Plates |  | 92d | 2012-07-23 | 2012-10-13 | JF721.335 | 44d | 0d | Raw Material Delievery to Alzamil Factory [0.7] | 435,994.68 |
| JF721.343 |  | Pipes & Fittings |  | 47d | 2012-08-06 | 2012-09-19 | JF721.339 | 44d | 0d | Raw Material Delievery to Alzamil Factory [0.15] | 93,427.43 |
| JF721.344 |  | Profile Material |  | 32d | 2012-08-06 | 2012-09-06 | JF721.337 | 158d | 8d | Raw Material Delievery to Alzamil Factory [0.15] | 93,427.43 |
|  | 11 | **ANNULAR,BUTTOM & SUMP PLATE FABRICATION (AZ PRE-FABRICATION WORKS)** |  |  | 2012-09-06 | 2012-09-18 |  |  |  |  |  |
| JF721.345 |  | Define Layout |  | 3d | 2012-09-06 | 2012-09-09 | JF721.342 SS+49d | 44d | 0d | Annular,buttom& / sump plate Fabrication (AZ Pre-fabricated wroks) [0.05] | 6,228.5 |
| JF721.346 |  | Cutting |  | 3d | 2012-09-06 | 2012-09-09 | JF721.345 SS | 44d | 0d | Annular,buttom& / sump plate Fabrication (AZ Pre-fabricated wroks) [0.15] | 18,685.49 |
| JF721.347 |  | Fit-up |  | 4d | 2012-09-10 | 2012-09-13 | JF721.346 SS+5d | 44d | 0d | Annular,buttom& / sump plate Fabrication (AZ Pre-fabricated wroks) [0.2] | 24,913.98 |
| JF721.348 |  | Welding |  | 4d | 2012-09-11 | 2012-09-15 | JF721.347 SS+1d | 44d | 0d | Annular,buttom& / sump plate Fabrication (AZ Pre-fabricated wroks) [0.45] | 56,056.46 |
| JF721.349 |  | Shop Blasting/Painting |  | 4d | 2012-09-12 | 2012-09-16 | JF721.348 SS+1d | 44d | 0d | Annular,buttom& / sump plate Fabrication (AZ Pre-fabricated wroks) [0.1] | 12,456.99 |
| JF721.350 |  | Inspect & Accept for use |  | 3d | 2012-09-16 | 2012-09-18 | JF721.349 | 44d | 0d | Annular,buttom& / sump plate Fabrication (AZ Pre-fabricated wroks) [0.05] | 6,228.5 |

| ID | WBS | Activity | Duration | Start | Finish | Predecessors | Total float | Free float | Resources | Cost |
| --- | --- | --- | --- | --- | --- | --- | --- | --- | --- | --- |
|  | 12 | **SHELL COURSES (AZ PRE-FABRICATED WORKS) #1,#2,#3,#4** |  | 2012-09-09 | 2012-09-22 |  |  |  |  |  |
| JF721.351 |  | Define Layout | 4d | 2012-09-09 | 2012-09-12 | JF721.345 | 100d | 0d | Shell courses / (AZ Pre-fabricated works) (#1,#2,#3,#4) [0.05] | 9,965.59 |
| JF721.352 |  | Cutting | 5d | 2012-09-09 | 2012-09-13 | JF721.351 SS | 100d | 0d | Shell courses / (AZ Pre-fabricated works) (#1,#2,#3,#4) [0.5] | 99,655.93 |
| JF721.353 |  | Bevelling/Rolling | 6d | 2012-09-10 | 2012-09-16 | JF721.352 SS+2d | 100d | 0d | Shell courses / (AZ Pre-fabricated works) (#1,#2,#3,#4) [0.2] | 39,862.37 |
| JF721.354 |  | Shop Blasting/Painting | 6d | 2012-09-13 | 2012-09-18 | JF721.353 SS+3d | 100d | 0d | Shell courses / (AZ Pre-fabricated works) (#1,#2,#3,#4) [0.2] | 39,862.37 |
| JF721.355 |  | Inspect & Accept for use | 4d | 2012-09-18 | 2012-09-22 | JF721.354 | 100d | 0d | Shell courses / (AZ Pre-fabricated works) (#1,#2,#3,#4) [0.05] | 9,965.59 |
|  | 13 | **SHELL NOZZLES & MANHOLES(AZ PRE-FABRICATED WORKS)** |  | 2012-09-13 | 2012-09-29 |  |  |  |  |  |
| JF721.356 |  | Define layout | 3d | 2012-09-13 | 2012-09-16 | JF721.344, JF721.352 | 150d | 0d | Shell Nozzles / &manholes (AZ Pre-fabricated works) [0.1] | 7,474.19 |
| JF721.357 |  | Cutting | 4d | 2012-09-16 | 2012-09-19 | JF721.356 | 150d | 0d | Shell Nozzles / &manholes (AZ Pre-fabricated works) [0.2] | 14,948.39 |
| JF721.358 |  | Bevelling | 5d | 2012-09-16 | 2012-09-20 | JF721.357 SS+1d | 150d | 0d | Shell Nozzles / &manholes (AZ Pre-fabricated works) [0.2] | 14,948.39 |
| JF721.359 |  | Fit-up/Welding | 6d | 2012-09-18 | 2012-09-23 | JF721.358 SS+2d | 150d | 0d | Shell Nozzles / &manholes (AZ Pre-fabricated works) [0.4] | 29,896.78 |
| JF721.360 |  | Blasting/Painting | 7d | 2012-09-20 | 2012-09-26 | JF721.359 SS+3d | 150d | 0d | Shell Nozzles / &manholes (AZ Pre-fabricated works) [0.05] | 3,737.1 |
| JF721.361 |  | Inspect & Accept for use | 3d | 2012-09-27 | 2012-09-29 | JF721.360 | 150d | 0d | Shell Nozzles / &manholes (AZ Pre-fabricated works) [0.05] | 3,737.1 |
|  | 14 | **PLATFORMS,STARIS &HANDRAILS9AZ-PRE FABRICATED WORKS)** |  | 2012-09-23 | 2012-10-29 |  |  |  |  |  |
| JF721.362 |  | Define Layout | 5d | 2012-09-23 | 2012-09-27 | JF721.359 | 167d | 0d | Platforms, / Stairs & / handrails (AZ Pre-fabricated works) [0.1] | 9,965.59 |
| JF721.363 |  | Cutting | 7d | 2012-09-27 | 2012-10-03 | JF721.362 | 167d | 0d | Platforms, / Stairs & / handrails (AZ Pre-fabricated works) [0.1] | 9,965.59 |
| JF721.364 |  | Fit-Up | 10d | 2012-10-03 | 2012-10-12 | JF721.363 | 167d | 0d | Platforms, / Stairs & / handrails (AZ Pre-fabricated works) [0.2] | 19,931.19 |
| JF721.365 |  | Welding | 7d | 2012-10-12 | 2012-10-18 | JF721.364 | 167d | 0d | Platforms, / Stairs & / handrails (AZ Pre-fabricated works) [0.4] | 39,862.37 |
| JF721.366 |  | Blasting/Painting | 7d | 2012-10-18 | 2012-10-24 | JF721.365 | 167d | 0d | Platforms, / Stairs & / handrails (AZ Pre-fabricated works) [0.15] | 14,948.39 |
| JF721.367 |  | Inspect & Accept for use | 4d | 2012-10-24 | 2012-10-29 | JF721.366 | 167d | 0d | Platforms, / Stairs & / handrails (AZ Pre-fabricated works) [0.05] | 4,982.8 |
|  | 15 | **DELIEVERY OF THE PRE-FABRICATED MATERIAL TO MA'ADEN SITE** |  | 2012-08-12 | 2012-11-11 |  |  |  |  |  |
| JF721.374 |  | Paint Material | 4d | 2012-08-12 | 2012-08-15 | JF721.341 | 85d | 41d | Delievery of the Pre-Fabricated Material to Ma'aden Site [0.05] | 18,685.49 |
| JF721.373 |  | Aluminum Dome Roof | 92d | 2012-08-22 | 2012-11-11 | 3.6 | 166d | 132d | Delievery of the Pre-Fabricated Material to Ma'aden Site [0.15] | 56,056.46 |
| JF721.368 |  | Annular,Bottom & Sump | 5d | 2012-09-18 | 2012-09-22 | JF721.350 | 44d | 10d | Delievery of the Pre-Fabricated Material to Ma'aden Site [0.15] | 56,056.46 |
| JF721.372 |  | Pipes & Fittings | 4d | 2012-09-19 | 2012-09-22 | JF721.343 | 44d | 0d | Delievery of the Pre-Fabricated Material to Ma'aden Site [0.05] | 18,685.49 |
| JF721.369 |  | Shell Courses #1,#2,#3,#4 | 8d | 2012-09-22 | 2012-09-29 | JF721.355 | 100d | 66d | Delievery of the Pre-Fabricated Material to Ma'aden Site [0.35] | 130,798.41 |
| JF721.370 |  | Shell Nozzles & Manholes | 6d | 2012-09-29 | 2012-10-04 | JF721.361 | 150d | 116d | Delievery of the Pre-Fabricated Material to Ma'aden Site [0.1] | 37,370.97 |
| JF721.371 |  | Platforms,Stairs & Handrails | 6d | 2012-10-29 | 2012-11-04 | JF721.367 | 167d | 133d | Delievery of the Pre-Fabricated Material to Ma'aden Site [0.15] | 56,056.46 |

Notes:
- JF721.373: Steps: Drawings Recieved from Supplier; Submission/Approval from CLient; Roof Fabrication; Shipping of Fabricated Material; Delievery to Alzamil factory; Delievey to MA'aden Site
- JF721.369: Steps: Shell #1; Shell #2; Shell #3; Shell #4

| ID | WBS | Activity | Type | Duration | Start | Finish | Predecessors | Total float | Free float | Resources | Cost |
| --- | --- | --- | --- | --- | --- | --- | --- | --- | --- | --- | --- |
|  | 20 | **Supply of Materials to Site** |  |  | 2012-09-22 | 2012-09-22 |  |  |  |  |  |
| 3.8 |  | Supply of materials to Site | milestone | 0d | 2012-09-22 | 2012-09-22 | JF721.372, JF721.374 | 44d | 10d |  |  |
|  | 3 | **CONSTRUCTION (INCLUDING SHOP FABRICATION,SITE CONSTRUCTION,INSTALLATION WORKS,MOBILIZATION,PAINTING)** |  |  | 2012-07-04 | 2013-07-15 |  |  |  |  |  |
|  | 1 | **MOBILIZATION(INCLUDING ACCOMODATION,FABRICATION YARD & AZ EQUIPMENT)** |  |  | 2012-07-04 | 2012-07-27 |  |  |  |  |  |
| JF721.375 |  | Rental For Workers & Engineers Accomodation with Facilities |  | 5d | 2012-07-04 | 2012-07-08 | JF721.321 SS | 34d | 0d | Forman [40 h]; Crane Operator [40 h]; Diesel Truck [40 h]; Driver [40 h]; Truck Flat Bed [40 h]; Cutting Machine [40 h]; Project Engineer [40 h]; QC inspector [40 h]; Safety Officer [40 h]; Vehicle (pick up 3/4T 4*2) [40 h]; Mobilization(including Accomodation / ,fabrication yard, AZ equipment) [0.45] | 55,462.47 |
| JF721.376 |  | Complete Mobilize AZ Equipment to Site & Prepare the site fabrication yard |  | 25d | 2012-07-04 | 2012-07-25 | JF721.375 SS | 34d | 0d | Helper [480 h]; Crane Operator [240 h]; Diesel Truck [240 h]; Driver [240 h]; Truck Flat Bed [240 h]; Cutting Machine [240 h]; Project Engineer [240 h]; QC inspector [240 h]; Safety Officer [240 h]; Vehicle (pick up 3/4T 4*2) [240 h]; Mobilization(including Accomodation / ,fabrication yard, AZ equipment) [0.35] | 43,137.48 |
| JF721.377 |  | Ma'aden Inspection & Approval for Portacabins |  | 2d | 2012-07-25 | 2012-07-27 | JF721.376 | 34d | 0d | Project Engineer [10 h]; Forman [10 h]; Crane Operator [10 h]; Diesel Truck [10 h]; Driver [10 h]; Truck Flat Bed [10 h]; Cutting Machine [10 h]; QC inspector [10 h]; Safety Officer [10 h]; Vehicle (pick up 3/4T 4*2) [10 h]; Mobilization(including Accomodation / ,fabrication yard, AZ equipment) [0.2] | 24,649.99 |
|  | 19 | **Complete MOBILIZATION of camp with Catering and accommodation facilities** |  |  | 2012-07-27 | 2012-07-27 |  |  |  |  |  |
| 3.7 |  | Complete MOBILIZATION of camp with Catering and accommodation facilities | milestone | 0d | 2012-07-27 | 2012-07-27 | JF721.377 | 34d | 0d |  |  |
|  | 2 | **CIVIL WORKS** |  |  | 2012-07-27 | 2012-09-02 |  |  |  |  |  |
| JF721.378 |  | Layout/Stake-out |  | 3d | 2012-07-27 | 2012-07-29 | 3.7 | 34d | 0d | Forman [20 h]; Helper [60 h]; Carpenter [40 h]; Steel Workers [20 h]; Crane Operator [20 h]; Diesel Truck [20 h]; Driver [20 h]; Truck Flat Bed [20 h]; Cutting Machine [20 h]; Project Engineer [20 h]; QC inspector [20 h]; Safety Officer [20 h]; Vehicle (pick up 3/4T 4*2) [20 h]; Civil works [0.1] | 12,324.99 |
| JF721.379 |  | Excavation |  | 16d | 2012-07-28 | 2012-08-11 | JF721.378 SS+1d | 34d | 0d | Forman [150 h]; Helper [450 h]; Bus [150 h]; Carpenter [300 h]; Steel Workers [300 h]; Crane Operator [150 h]; Diesel Truck [150 h]; Driver [150 h]; Truck Flat Bed [150 h]; Cutting Machine [150 h]; Project Engineer [150 h]; QC inspector [150 h]; Safety Officer [150 h]; Vehicle (pick up 3/4T 4*2) [150 h]; Civil works [0.45] | 55,462.47 |
| JF721.380 |  | SteelWorks/Formworks |  | 11d | 2012-08-11 | 2012-08-23 | JF721.379, JF721.327 | 34d | 0d | Steel Workers [200 h]; Carpenter [200 h]; Forman [100 h]; Helper [400 h]; Crane Operator [100 h]; Diesel Truck [100 h]; Driver [100 h]; Truck Flat Bed [100 h]; Cutting Machine [100 h]; Project Engineer [100 h]; QC inspector [100 h]; Safety Officer [100 h]; Vehicle (pick up 3/4T 4*2) [100 h]; Civil works [0.3] | 36,974.98 |
| JF721.381 |  | Soil Compaction |  | 11d | 2012-08-23 | 2012-09-02 | JF721.380 | 34d | 0d | Helper [300 h]; Vibrating Roller 16T [100 h]; Forman [100 h]; Crane Operator [100 h]; Diesel Truck [100 h]; Driver [100 h]; Truck Flat Bed [100 h]; Cutting Machine [100 h]; Project Engineer [100 h]; QC inspector [100 h]; Safety Officer [100 h]; Vehicle (pick up 3/4T 4*2) [100 h]; Civil works [0.15] | 18,487.49 |
|  | 3 | **FOUNDATION WORKS** |  |  | 2012-09-02 | 2012-10-01 |  |  |  |  |  |
| JF721.382 |  | Concrete Pouring |  | 6d | 2012-09-02 | 2012-09-07 | JF721.381 | 34d | 0d | Helper [300 h]; Forman [50 h]; Crane Operator [50 h]; Diesel Truck [8 h]; Driver [50 h]; Truck Flat Bed [50 h]; Cutting Machine [50 h]; Project Engineer [50 h]; QC inspector [50 h]; Safety Officer [50 h]; Vehicle (pick up 3/4T 4*2) [50 h]; Foundation works [0.35] | 43,137.48 |
| JF721.383 |  | Concrete Curing |  | 3d | 2012-09-07 | 2012-09-09 | JF721.382 | 34d | 0d | Helper [100 h]; Forman [20 h]; Crane Operator [20 h]; Diesel Truck [20 h]; Driver [20 h]; Truck Flat Bed [20 h]; Cutting Machine [20 h]; Project Engineer [20 h]; QC inspector [20 h]; Safety Officer [20 h]; Vehicle (pick up 3/4T 4*2) [20 h]; Foundation works [0.35] | 43,137.48 |
| JF721.384 |  | Removal of Formworks |  | 11d | 2012-09-10 | 2012-09-19 | JF721.383 | 34d | 0d | Helper [600 h]; Crane Operator [100 h]; Diesel Truck [100 h]; Driver [100 h]; Truck Flat Bed [100 h]; Cutting Machine [100 h]; Project Engineer [100 h]; QC inspector [100 h]; Safety Officer [100 h]; Vehicle (pick up 3/4T 4*2) [100 h]; Foundation works [0.15] | 18,487.49 |
| JF721.385 |  | Backfilling |  | 14d | 2012-09-19 | 2012-10-01 | JF721.384 | 34d | 0d | Backhoe [130 h]; Helper [520 h]; Forman [130 h]; Scaffolder [260 h]; Crane Operator [130 h]; Diesel Truck [130 h]; Driver [130 h]; Truck Flat Bed [130 h]; Cutting Machine [130 h]; Project Engineer [130 h]; QC inspector [130 h]; Safety Officer [130 h]; Vehicle (pick up 3/4T 4*2) [130 h]; Foundation works [0.15] | 18,487.49 |
|  | 20 | **Complete construction of Civil/Structural Work , including excavation, backfill** |  |  | 2012-10-01 | 2012-10-01 |  |  |  |  |  |
| 3.9 |  | Complete COnstruction of Civil/Structural works | milestone | 0d | 2012-10-01 | 2012-10-01 | JF721.385 | 34d | 0d |  |  |
|  | 4 | **ANNULAR & BOTTOM PLATES (SITE INSTALLATION WORKS)** |  |  | 2012-10-01 | 2012-11-27 |  |  |  |  |  |
| JF721.386 |  | Erect & Weld Annular Plates |  | 15d | 2012-10-01 | 2012-10-14 | 3.8, 3.9, JF721.368 | 34d | 0d | Forman [70 h]; Crane Operator [70 h]; Rigger [70 h]; Fabricator [140 h]; Welder 6G [140 h]; Tack Welder [70 h]; Helper [350 h]; Crane 25T [70 h]; Truck Flat Bed [70 h]; Compressor 450 CFM [140 h]; Cutting Machine [70 h]; Driver [70 h]; Project Engineer [70 h]; QC inspector [70 h]; Safety Officer [70 h]; Vehicle (pick up 3/4T 4*2) [70 h]; Annular & bottom / Plates (Site Installation works) [0.25] | 9,243.75 |
| JF721.387 |  | Erect & Tack Bottom Plates |  | 20d | 2012-10-14 | 2012-11-01 | JF721.386 | 34d | 0d | Compressor 450 CFM [120 h]; Crane Operator [60 h]; Forman [60 h]; Crane 25T [60 h]; Rigger [60 h]; Tack Welder [120 h]; Helper [240 h]; Fabricator [120 h]; Driver [60 h]; Truck Flat Bed [60 h]; Project Engineer [60 h]; QC inspector [60 h]; Safety Officer [60 h]; Vehicle (pick up 3/4T 4*2) [60 h]; Annular & bottom / Plates (Site Installation works) [0.2] | 7,395 |
| JF721.388 |  | Welding of Bottom Plates |  | 25d | 2012-11-02 | 2012-11-23 | JF721.387 | 34d | 0d | Welder 6G [420 h]; Forman [70 h]; Helper [210 h]; Compressor 450 CFM [420 h]; Cutting Machine [70 h]; Driver [70 h]; Truck Flat Bed [70 h]; Project Engineer [70 h]; QC inspector [70 h]; Safety Officer [70 h]; Vehicle (pick up 3/4T 4*2) [70 h]; Annular & bottom / Plates (Site Installation works) [0.3] | 11,092.49 |
| JF721.389 |  | Visual Inspection & Cleaning |  | 2d | 2012-11-24 | 2012-11-25 | JF721.388 | 34d | 0d | QC inspector [10 h]; Project Engineer [10 h]; Forman [10 h]; Helper [20 h]; Driver [10 h]; Truck Flat Bed [10 h]; Safety Officer [10 h]; Vehicle (pick up 3/4T 4*2) [10 h]; Annular & bottom / Plates (Site Installation works) [0.1] | 3,697.5 |
| JF721.390 |  | Carry Out NDT & Vaccuum Box Test |  | 3d | 2012-11-25 | 2012-11-27 | JF721.389 | 34d | 0d | Forman [20 h]; Helper [80 h]; Driver [20 h]; Truck Flat Bed [20 h]; Project Engineer [20 h]; QC inspector [20 h]; Safety Officer [20 h]; Vehicle (pick up 3/4T 4*2) [20 h]; Annular & bottom / Plates (Site Installation works) [0.15] | 5,546.25 |

| ID | WBS | Activity | Duration | Start | Finish | Predecessors | Total float | Free float | Resources | Cost |
| --- | --- | --- | --- | --- | --- | --- | --- | --- | --- | --- |
|  | 5 | **SHELL COURSE #1(SITE INSTALLATION WORKS)** |  | 2012-11-26 | 2012-12-06 |  |  |  |  |  |
| JF721.391 |  | Prepare Shell Course # 1 for Erection | 4d | 2012-11-26 | 2012-11-29 | JF721.390 SS+1d, JF721.369 | 34d | 0d | Crane Operator [10 h]; Forman [10 h]; Crane 25T [10 h]; Rigger [10 h]; Fabricator [20 h]; Helper [80 h]; Cutting Machine [10 h]; Tack Welder [20 h]; Compressor 450 CFM [20 h]; Driver [10 h]; Truck Flat Bed [10 h]; Project Engineer [10 h]; QC inspector [10 h]; Safety Officer [10 h]; Vehicle (pick up 3/4T 4*2) [10 h]; Shell Course #1 / (site Installation works) [0.1] | 5,546.25 |
| JF721.392 |  | Erect & Tack Shell Course # 1 | 5d | 2012-11-29 | 2012-12-04 | JF721.391 | 34d | 0d | Crane Operator [20 h]; Forman [20 h]; Crane 25T [20 h]; Rigger [20 h]; Fabricator [40 h]; Tack Welder [40 h]; Compressor 450 CFM [40 h]; Cutting Machine [20 h]; Helper [140 h]; Driver [20 h]; Truck Flat Bed [20 h]; Project Engineer [20 h]; QC inspector [20 h]; Safety Officer [20 h]; Vehicle (pick up 3/4T 4*2) [20 h]; Shell Course #1 / (site Installation works) [0.2] | 11,092.49 |
| JF721.393 |  | Weld Outer Vertical Seam | 5d | 2012-11-30 | 2012-12-04 | JF721.392 SS+1d | 34d | 0d | Forman [20 h]; Welder 6G [160 h]; Compressor 450 CFM [160 h]; Helper [100 h]; Cutting Machine [20 h]; Tack Welder [40 h]; Driver [20 h]; Truck Flat Bed [20 h]; Project Engineer [20 h]; QC inspector [20 h]; Safety Officer [20 h]; Vehicle (pick up 3/4T 4*2) [20 h]; Shell Course #1 / (site Installation works) [0.25] | 13,865.62 |
| JF721.394 |  | Backgouge & NDT Inside Vertical Seam | 5d | 2012-12-01 | 2012-12-05 | JF721.393 SS+1d | 34d | 0d | Helper [80 h]; Forman [20 h]; Fabricator [20 h]; Driver [20 h]; Truck Flat Bed [20 h]; Project Engineer [20 h]; QC inspector [20 h]; Safety Officer [20 h]; Vehicle (pick up 3/4T 4*2) [20 h]; Shell Course #1 / (site Installation works) [0.15] | 8,319.37 |
| JF721.395 |  | Weld Inside Vertical Seam | 5d | 2012-12-02 | 2012-12-06 | JF721.394 SS+1d | 34d | 0d | Compressor 450 CFM [200 h]; Welder 6G [200 h]; Tack Welder [20 h]; Forman [20 h]; Cutting Machine [20 h]; Helper [80 h]; Driver [20 h]; Truck Flat Bed [20 h]; Project Engineer [20 h]; QC inspector [20 h]; Safety Officer [20 h]; Vehicle (pick up 3/4T 4*2) [20 h]; Shell Course #1 / (site Installation works) [0.3] | 16,638.74 |
|  | 6 | **SHELL COURSE#2(SITE INSTALLATION WORKS & TESTING)** |  | 2012-12-04 | 2012-12-17 |  |  |  |  |  |
| JF721.396 |  | Prepare Shell Course # 2 for Erection | 4d | 2012-12-04 | 2012-12-07 | JF721.395 SS+2d | 34d | 0d | Truck Flat Bed [10 h]; Crane Operator [10 h]; Forman [10 h]; Rigger [10 h]; Fabricator [30 h]; Helper [80 h]; Diesel Truck [10 h]; Driver [10 h]; Project Engineer [10 h]; QC inspector [10 h]; Safety Officer [10 h]; Vehicle (pick up 3/4T 4*2) [10 h]; Shell Course #2 / (site Installation works& testing) [0.05] | 3,697.5 |
| JF721.397 |  | Erect & Tack Shell Course # 2 | 5d | 2012-12-07 | 2012-12-11 | JF721.396 | 34d | 0d | Crane Operator [20 h]; Diesel Truck [20 h]; Forman [20 h]; Rigger [20 h]; Fabricator [60 h]; Tack Welder [60 h]; Compressor 450 CFM [60 h]; Helper [140 h]; Driver [20 h]; Truck Flat Bed [20 h]; Project Engineer [20 h]; QC inspector [20 h]; Safety Officer [20 h]; Vehicle (pick up 3/4T 4*2) [20 h]; Shell Course #2 / (site Installation works& testing) [0.1] | 7,395 |
| JF721.398 |  | Weld Outer Vertical Seam | 6d | 2012-12-08 | 2012-12-13 | JF721.397 SS+1d | 34d | 0d | Forman [30 h]; Welder 6G [420 h]; Compressor 450 CFM [420 h]; Helper [180 h]; Tack Welder [90 h]; Driver [30 h]; Truck Flat Bed [30 h]; Project Engineer [30 h]; QC inspector [30 h]; Safety Officer [30 h]; Vehicle (pick up 3/4T 4*2) [30 h]; Shell Course #2 / (site Installation works& testing) [0.2] | 14,789.99 |
| JF721.399 |  | Backgouge & NDT Inside Vertical Seam | 5d | 2012-12-09 | 2012-12-13 | JF721.398 SS+1d | 34d | 0d | Fabricator [40 h]; Forman [20 h]; Helper [120 h]; Driver [20 h]; Truck Flat Bed [20 h]; Project Engineer [20 h]; QC inspector [20 h]; Safety Officer [20 h]; Vehicle (pick up 3/4T 4*2) [20 h]; Shell Course #2 / (site Installation works& testing) [0.1] | 7,395 |
| JF721.400 |  | Weld Inside Vertical Seam | 5d | 2012-12-10 | 2012-12-14 | JF721.399 SS+1d | 34d | 0d | Forman [20 h]; Welder 6G [280 h]; Compressor 450 CFM [280 h]; Helper [120 h]; Cutting Machine [20 h]; Tack Welder [40 h]; Driver [20 h]; Truck Flat Bed [20 h]; Project Engineer [20 h]; QC inspector [20 h]; Safety Officer [20 h]; Vehicle (pick up 3/4T 4*2) [20 h]; Shell Course #2 / (site Installation works& testing) [0.2] | 14,789.99 |
| JF721.401 |  | "Fit & Tack Horizontal Seam between / Shell Course # 1 & 2" | 5d | 2012-12-11 | 2012-12-15 | JF721.400 SS+1d | 34d | 0d | Forman [20 h]; Fabricator [60 h]; Tack Welder [60 h]; Compressor 450 CFM [60 h]; Cutting Machine [20 h]; Helper [120 h]; Driver [20 h]; Truck Flat Bed [20 h]; Project Engineer [20 h]; QC inspector [20 h]; Safety Officer [20 h]; Vehicle (pick up 3/4T 4*2) [20 h]; Shell Course #2 / (site Installation works& testing) [0.05] | 3,697.5 |
| JF721.402 |  | "Weld Outer Horizontal Seam between / Shell Course # 1 & 2" | 7d | 2012-12-11 | 2012-12-17 | JF721.401 SS+1d | 34d | 0d | Forman [40 h]; Welder 6G [400 h]; Compressor 450 CFM [400 h]; Cutting Machine [40 h]; Helper [240 h]; Tack Welder [80 h]; Driver [40 h]; Truck Flat Bed [40 h]; Project Engineer [40 h]; QC inspector [40 h]; Safety Officer [40 h]; Vehicle (pick up 3/4T 4*2) [40 h]; Shell Course #2 / (site Installation works& testing) [0.1] | 7,395 |
| JF721.403 |  | "Backgouge & NDT Inside Horizontal / Seam between Shell Course# 1 & 2" | 5d | 2012-12-12 | 2012-12-17 | JF721.402 SS+1d | 34d | 0d | Forman [20 h]; Fabricator [60 h]; Helper [120 h]; Driver [20 h]; Truck Flat Bed [20 h]; Project Engineer [20 h]; QC inspector [20 h]; Safety Officer [20 h]; Vehicle (pick up 3/4T 4*2) [20 h]; Shell Course #2 / (site Installation works& testing) [0.05] | 3,697.5 |
| JF721.404 |  | Weld Inner Horizontal Seam between / Shell Course # 1 & 2" | 5d | 2012-12-13 | 2012-12-17 | JF721.403 SS+1d | 34d | 0d | Forman [20 h]; Welder 6G [160 h]; Compressor 450 CFM [160 h]; Cutting Machine [20 h]; Helper [140 h]; Tack Welder [40 h]; Driver [20 h]; Truck Flat Bed [20 h]; Project Engineer [20 h]; QC inspector [20 h]; Safety Officer [20 h]; Vehicle (pick up 3/4T 4*2) [20 h]; Shell Course #2 / (site Installation works& testing) [0.15] | 11,092.49 |
|  | 7 | **SHELL COURSE#3 (SITE INSTALLATION WORKS & TESTING)** |  | 2012-12-13 | 2012-12-27 |  |  |  |  |  |
| JF721.405 |  | Prepare Shell Course # 3 for Erection | 4d | 2012-12-13 | 2012-12-17 | JF721.404 SS | 34d | 0d | Forman [10 h]; Crane Operator [10 h]; Rigger [10 h]; Fabricator [30 h]; Helper [80 h]; Diesel Truck [10 h]; Driver [10 h]; Truck Flat Bed [10 h]; Project Engineer [10 h]; QC inspector [10 h]; Safety Officer [10 h]; Vehicle (pick up 3/4T 4*2) [10 h]; Shell Course #3 / (site Installation works& testing) [0.05] | 3,697.5 |
| JF721.406 |  | Erect & Tack Shell Course # 3 | 5d | 2012-12-17 | 2012-12-21 | JF721.405 | 34d | 0d | Diesel Truck [20 h]; Crane Operator [20 h]; Forman [20 h]; Rigger [20 h]; Fabricator [40 h]; Tack Welder [40 h]; Compressor 450 CFM [40 h]; Helper [120 h]; Driver [20 h]; Truck Flat Bed [20 h]; Project Engineer [20 h]; QC inspector [20 h]; Safety Officer [20 h]; Vehicle (pick up 3/4T 4*2) [20 h]; Shell Course #3 / (site Installation works& testing) [0.1] | 7,395 |
| JF721.407 |  | Weld Outer Vertical Seam | 6d | 2012-12-17 | 2012-12-23 | JF721.406 SS+1d | 34d | 0d | Helper [120 h]; Forman [30 h]; Welder 6G [240 h]; Compressor 450 CFM [240 h]; Cutting Machine [30 h]; Tack Welder [30 h]; Driver [30 h]; Truck Flat Bed [30 h]; Project Engineer [30 h]; QC inspector [30 h]; Safety Officer [30 h]; Vehicle (pick up 3/4T 4*2) [30 h]; Shell Course #3 / (site Installation works& testing) [0.2] | 14,789.99 |
| JF721.408 |  | Backgouge & NDT Inside Vertical Seam | 5d | 2012-12-18 | 2012-12-23 | JF721.407 SS+1d | 34d | 0d | Forman [20 h]; Helper [60 h]; Fabricator [20 h]; Driver [20 h]; Truck Flat Bed [20 h]; Project Engineer [20 h]; QC inspector [20 h]; Safety Officer [20 h]; Vehicle (pick up 3/4T 4*2) [20 h]; Shell Course #3 / (site Installation works& testing) [0.1] | 7,395 |
| JF721.409 |  | Weld Inside Vertical Seam | 5d | 2012-12-19 | 2012-12-23 | JF721.408 SS+1d | 34d | 0d | Forman [20 h]; Welder 6G [160 h]; Helper [80 h]; Compressor 450 CFM [160 h]; Cutting Machine [20 h]; Tack Welder [20 h]; Driver [20 h]; Truck Flat Bed [20 h]; Project Engineer [20 h]; QC inspector [20 h]; Safety Officer [20 h]; Vehicle (pick up 3/4T 4*2) [20 h]; Shell Course #3 / (site Installation works& testing) [0.2] | 14,789.99 |
| JF721.410 |  | "Fit & Tack Horizontal Seam between / Shell Course # 2 & 3" | 5d | 2012-12-20 | 2012-12-24 | JF721.409 SS+1d | 34d | 0d | Forman [20 h]; Fabricator [40 h]; Compressor 450 CFM [40 h]; Helper [80 h]; Tack Welder [40 h]; Driver [20 h]; Truck Flat Bed [20 h]; Project Engineer [20 h]; QC inspector [20 h]; Safety Officer [20 h]; Vehicle (pick up 3/4T 4*2) [20 h]; Shell Course #3 / (site Installation works& testing) [0.05] | 3,697.5 |
| JF721.411 |  | "Weld Outer Horizontal Seam between / Shell Course # 2 & 3" | 7d | 2012-12-21 | 2012-12-27 | JF721.410 SS+1d | 34d | 0d | Forman [40 h]; Welder 6G [320 h]; Compressor 450 CFM [320 h]; Cutting Machine [40 h]; QC inspector [40 h]; Helper [160 h]; Tack Welder [40 h]; Driver [40 h]; Truck Flat Bed [40 h]; Project Engineer [40 h]; Safety Officer [40 h]; Vehicle (pick up 3/4T 4*2) [40 h]; Shell Course #3 / (site Installation works& testing) [0.1] | 7,395 |
| JF721.412 |  | "Backgouge & NDT Inside Horizontal / Seam between Shell Course# 2 & 3" | 5d | 2012-12-22 | 2012-12-26 | JF721.411 SS+1d | 34d | 0d | Forman [20 h]; Helper [60 h]; Fabricator [20 h]; Driver [20 h]; Truck Flat Bed [20 h]; Project Engineer [20 h]; QC inspector [20 h]; Safety Officer [20 h]; Vehicle (pick up 3/4T 4*2) [20 h]; Shell Course #3 / (site Installation works& testing) [0.05] | 3,697.5 |
| JF721.413 |  | Weld Inner Horizontal Seam between / Shell Course # 2 & 3" | 5d | 2012-12-23 | 2012-12-27 | JF721.412 SS+1d | 34d | 0d | Forman [20 h]; Welder 6G [160 h]; QC inspector [20 h]; Compressor 450 CFM [160 h]; Cutting Machine [20 h]; Helper [60 h]; Driver [20 h]; Truck Flat Bed [20 h]; Project Engineer [20 h]; Safety Officer [20 h]; Vehicle (pick up 3/4T 4*2) [20 h]; Shell Course #3 / (site Installation works& testing) [0.15] | 11,092.49 |

| ID | WBS | Activity | Duration | Start | Finish | Predecessors | Total float | Free float | Resources | Cost |
| --- | --- | --- | --- | --- | --- | --- | --- | --- | --- | --- |
|  | 8 | **SHELL COURSE#4 (SITE INSTALLATION WORKS & TESTING)** |  | 2012-12-06 | 2013-01-09 |  |  |  |  |  |
| JF721.423 |  | Fit, Weld Shell Course # 1 Annular Plate & Oil Test | 9d | 2012-12-06 | 2012-12-14 | JF721.395 | 58d | 24d | Fabricator [180 h]; Tack Welder [180 h]; Compressor 450 CFM [840 h]; Cutting Machine [60 h]; Helper [420 h]; Welder 6G [840 h]; Driver [60 h]; Truck Flat Bed [60 h]; Project Engineer [60 h]; QC inspector [60 h]; Safety Officer [60 h]; Vehicle (pick up 3/4T 4*2) [60 h]; Shell Course #4 (site Installation works & testing) [0.05] | 3,697.5 |
| JF721.414 |  | Prepare Shell Course # 4 for Erection | 4d | 2012-12-27 | 2012-12-30 | JF721.413, JF721.423 SS | 34d | 0d | Forman [10 h]; Diesel Truck [10 h]; Crane Operator [10 h]; Rigger [10 h]; Fabricator [20 h]; Helper [40 h]; Driver [10 h]; Truck Flat Bed [10 h]; Project Engineer [10 h]; QC inspector [10 h]; Safety Officer [10 h]; Vehicle (pick up 3/4T 4*2) [10 h]; Shell Course #4 (site Installation works & testing) [0.05] | 3,697.5 |
| JF721.415 |  | Erect & Tack Shell Course # 4 | 5d | 2012-12-30 | 2013-01-03 | JF721.414 | 34d | 0d | Compressor 450 CFM [40 h]; Cutting Machine [20 h]; Helper [100 h]; Tack Welder [40 h]; Fabricator [40 h]; Diesel Truck [20 h]; Crane Operator [20 h]; Forman [20 h]; Driver [20 h]; Truck Flat Bed [20 h]; Project Engineer [20 h]; QC inspector [20 h]; Safety Officer [20 h]; Vehicle (pick up 3/4T 4*2) [20 h]; Shell Course #4 (site Installation works & testing) [0.1] | 7,395 |
| JF721.416 |  | Weld Outer Vertical Seam | 6d | 2012-12-31 | 2013-01-05 | JF721.415 SS+1d | 34d | 0d | Forman [30 h]; Rigger [30 h]; Welder 6G [240 h]; Compressor 450 CFM [240 h]; Cutting Machine [30 h]; Tack Welder [30 h]; Helper [120 h]; Driver [30 h]; Truck Flat Bed [30 h]; Project Engineer [30 h]; QC inspector [30 h]; Safety Officer [30 h]; Vehicle (pick up 3/4T 4*2) [30 h]; Shell Course #4 (site Installation works & testing) [0.2] | 14,789.99 |
| JF721.417 |  | Backgouge & NDT Inside Vertical Seam | 5d | 2013-01-01 | 2013-01-05 | JF721.416 SS+1d | 34d | 0d | Forman [20 h]; Fabricator [20 h]; Helper [80 h]; Driver [20 h]; Truck Flat Bed [20 h]; Project Engineer [20 h]; QC inspector [20 h]; Safety Officer [20 h]; Vehicle (pick up 3/4T 4*2) [20 h]; Shell Course #4 (site Installation works & testing) [0.1] | 7,395 |
| JF721.418 |  | Weld Inside Vertical Seam | 5d | 2013-01-02 | 2013-01-06 | JF721.417 SS+1d | 34d | 0d | Forman [20 h]; Welder 6G [160 h]; Compressor 450 CFM [160 h]; Cutting Machine [20 h]; Helper [80 h]; Tack Welder [20 h]; Driver [20 h]; Truck Flat Bed [20 h]; Project Engineer [20 h]; QC inspector [20 h]; Safety Officer [20 h]; Vehicle (pick up 3/4T 4*2) [20 h]; Shell Course #4 (site Installation works & testing) [0.15] | 11,092.49 |
| JF721.419 |  | "Fit & Tack Horizontal Seam between / Shell Course # 3 & 4" | 5d | 2013-01-03 | 2013-01-07 | JF721.418 SS+1d | 34d | 0d | Forman [20 h]; Fabricator [40 h]; Tack Welder [40 h]; Compressor 450 CFM [40 h]; Cutting Machine [20 h]; Helper [80 h]; Driver [20 h]; Truck Flat Bed [20 h]; Project Engineer [20 h]; QC inspector [20 h]; Safety Officer [20 h]; Vehicle (pick up 3/4T 4*2) [20 h]; Shell Course #4 (site Installation works & testing) [0.1] | 7,395 |
| JF721.420 |  | Weld Outer Horizontal Seam between / Shell Course # 3 & 4 | 7d | 2013-01-03 | 2013-01-09 | JF721.419 SS+1d | 34d | 0d | Forman [40 h]; Welder 6G [320 h]; Compressor 450 CFM [320 h]; Cutting Machine [40 h]; Tack Welder [40 h]; Helper [120 h]; Driver [40 h]; Truck Flat Bed [40 h]; Project Engineer [40 h]; QC inspector [40 h]; Safety Officer [40 h]; Vehicle (pick up 3/4T 4*2) [40 h]; Shell Course #4 (site Installation works & testing) [0.1] | 7,395 |
| JF721.421 |  | "Backgouge & NDT Inside Horizontal / Seam between Shell Course# 3 & 4" | 5d | 2013-01-05 | 2013-01-09 | JF721.420 SS+1d | 34d | 0d | Forman [20 h]; Fabricator [20 h]; Helper [60 h]; QC inspector [20 h]; Driver [20 h]; Truck Flat Bed [20 h]; Project Engineer [20 h]; Safety Officer [20 h]; Vehicle (pick up 3/4T 4*2) [20 h]; Shell Course #4 (site Installation works & testing) [0.05] | 3,697.5 |
| JF721.422 |  | Weld Inner Horizontal Seam between / Shell Course # 3 & 4" | 5d | 2013-01-06 | 2013-01-09 | JF721.421 SS+1d | 34d | 0d | Forman [20 h]; QC inspector [20 h]; Welder 6G [160 h]; Compressor 450 CFM [160 h]; Cutting Machine [20 h]; Helper [60 h]; Tack Welder [20 h]; Driver [20 h]; Truck Flat Bed [20 h]; Project Engineer [20 h]; Safety Officer [20 h]; Vehicle (pick up 3/4T 4*2) [20 h]; Shell Course #4 (site Installation works & testing) [0.1] | 7,395 |
|  | 9 | **CURB ANGLE(SITE INSTALLATION WORKS)** |  | 2013-01-10 | 2013-01-20 |  |  |  |  |  |
| JF721.424 |  | Erect & Tack Curve Angle | 5d | 2013-01-10 | 2013-01-14 | JF721.422 | 34d | 0d | Forman [20 h]; Diesel Truck [20 h]; Crane Operator [20 h]; Project Engineer [20 h]; Compressor 450 CFM [20 h]; Tack Welder [20 h]; Helper [20 h]; Cutting Machine [20 h]; Truck Flat Bed [20 h]; Rigger [20 h]; Fabricator [40 h]; Driver [20 h]; QC inspector [20 h]; Safety Officer [20 h]; Vehicle (pick up 3/4T 4*2) [20 h]; Curve Angel / (site Installation works) [0.3] | 7,395 |
| JF721.425 |  | Weld Curve Angle | 7d | 2013-01-14 | 2013-01-20 | JF721.424 | 34d | 0d | Forman [40 h]; Welder 6G [200 h]; Helper [120 h]; Compressor 450 CFM [200 h]; Cutting Machine [40 h]; Tack Welder [40 h]; Driver [40 h]; Truck Flat Bed [40 h]; Project Engineer [40 h]; QC inspector [40 h]; Safety Officer [40 h]; Vehicle (pick up 3/4T 4*2) [40 h]; Curve Angel / (site Installation works) [0.7] | 17,254.99 |
|  | 10 | **SHELL MANHOLES & NOZZLES (SITE INSTALLATION WORKS)** |  | 2013-01-14 | 2013-01-23 |  |  |  |  |  |
| JF721.426 |  | MArk & Cut Holes | 6d | 2013-01-14 | 2013-01-19 | JF721.425 SS, JF721.370 | 34d | 0d | Fabricator [60 h]; Helper [120 h]; Cutting Machine [30 h]; Driver [30 h]; Truck Flat Bed [30 h]; Project Engineer [30 h]; QC inspector [30 h]; Safety Officer [30 h]; Vehicle (pick up 3/4T 4*2) [30 h]; Shell manholes & / nozzles(site Installation works & testing) [0.1] | 3,697.5 |
| JF721.427 |  | Fit & Tack Manholes ,Nozzles on Shell | 5d | 2013-01-15 | 2013-01-19 | JF721.426 SS+1d | 34d | 0d | Tack Welder [20 h]; Fabricator [20 h]; Helper [60 h]; Compressor 450 CFM [20 h]; Cutting Machine [20 h]; Driver [20 h]; Truck Flat Bed [20 h]; Project Engineer [20 h]; QC inspector [20 h]; Safety Officer [20 h]; Vehicle (pick up 3/4T 4*2) [20 h]; Shell manholes & / nozzles(site Installation works & testing) [0.3] | 11,092.49 |
| JF721.428 |  | Weld MAnholes & Nozzles on shell | 5d | 2013-01-16 | 2013-01-20 | JF721.427 SS+1d | 34d | 0d | Welder 6G [120 h]; Compressor 450 CFM [120 h]; Helper [60 h]; Cutting Machine [50 h]; Tack Welder [20 h]; Driver [20 h]; Truck Flat Bed [20 h]; Project Engineer [20 h]; QC inspector [20 h]; Safety Officer [20 h]; Vehicle (pick up 3/4T 4*2) [20 h]; Shell manholes & / nozzles(site Installation works & testing) [0.45] | 16,638.74 |
| JF721.429 |  | NDT on Manholes & Nozzles on shell | 4d | 2013-01-20 | 2013-01-23 | JF721.428 | 34d | 0d | Fabricator [10 h]; Helper [20 h]; Driver [10 h]; Truck Flat Bed [10 h]; Project Engineer [10 h]; QC inspector [10 h]; Safety Officer [10 h]; Vehicle (pick up 3/4T 4*2) [10 h]; Shell manholes & / nozzles(site Installation works & testing) [0.15] | 5,546.25 |
|  | 11 | **ALUMINUM DOME ROOF (SITE INSTALLATION WORKS)** |  | 2013-01-23 | 2013-02-25 |  |  |  |  |  |
| JF721.430 |  | Prepare Tank for Roof Contruction | 5d | 2013-01-23 | 2013-01-27 | JF721.373 SS+45d, JF721.429 | 34d | 0d | Third party for ALuminum Dome Roof Supervisor [16 h]; Diesel Truck [20 h]; Helper [80 h]; Fabricator [40 h]; Crane Operator [20 h]; Forman [20 h]; Tack Welder [20 h]; Driver [20 h]; Truck Flat Bed [20 h]; Project Engineer [20 h]; QC inspector [20 h]; Safety Officer [20 h]; Vehicle (pick up 3/4T 4*2) [20 h]; Aluminum Doom Roof / (Site Installation works) [0.15] | 12,941.24 |
| JF721.431 |  | Install Shoe Support Structure on Shell | 7d | 2013-01-27 | 2013-02-02 | JF721.430 | 34d | 0d | Fabricator [80 h]; Third party for ALuminum Dome Roof Supervisor [40 h]; Forman [20 h]; Diesel Truck [40 h]; Crane Operator [40 h]; Rigger [40 h]; Helper [160 h]; Welder 6G [80 h]; Tack Welder [80 h]; Compressor 450 CFM [80 h]; Cutting Machine [40 h]; Driver [40 h]; Truck Flat Bed [40 h]; Project Engineer [40 h]; QC inspector [40 h]; Safety Officer [40 h]; Vehicle (pick up 3/4T 4*2) [40 h]; Aluminum Doom Roof / (Site Installation works) [0.2] | 17,254.99 |
| JF721.432 |  | Install / Assemble Roof Rafters | 13d | 2013-02-02 | 2013-02-13 | JF721.431 | 34d | 0d | Crane Operator [100 h]; Diesel Truck [100 h]; Third party for ALuminum Dome Roof Supervisor [100 h]; Forman [100 h]; Rigger [100 h]; Fabricator [200 h]; Helper [600 h]; Driver [100 h]; Truck Flat Bed [100 h]; Project Engineer [100 h]; QC inspector [100 h]; Safety Officer [100 h]; Vehicle (pick up 3/4T 4*2) [100 h]; Aluminum Doom Roof / (Site Installation works) [0.25] | 21,568.74 |
| JF721.433 |  | Installation of Roof Plates | 9d | 2013-02-13 | 2013-02-21 | JF721.432 | 34d | 0d | Third party for ALuminum Dome Roof Supervisor [60 h]; Project Engineer [60 h]; QC inspector [60 h]; Diesel Truck [60 h]; Forman [60 h]; Rigger [60 h]; Fabricator [120 h]; Helper [360 h]; Driver [60 h]; Truck Flat Bed [60 h]; Safety Officer [60 h]; Vehicle (pick up 3/4T 4*2) [60 h]; Aluminum Doom Roof / (Site Installation works) [0.3] | 25,882.49 |
| JF721.434 |  | Install Roof Manholes & Nozzles | 5d | 2013-02-21 | 2013-02-25 | JF721.433 | 34d | 0d | Forman [20 h]; Fabricator [40 h]; Helper [120 h]; Crane Operator [20 h]; Diesel Truck [20 h]; Rigger [20 h]; Driver [20 h]; Truck Flat Bed [20 h]; Project Engineer [20 h]; QC inspector [20 h]; Safety Officer [20 h]; Vehicle (pick up 3/4T 4*2) [20 h]; Aluminum Doom Roof / (Site Installation works) [0.1] | 8,627.5 |

| ID | WBS | Activity | Type | Duration | Start | Finish | Predecessors | Total float | Free float | Resources | Cost |
| --- | --- | --- | --- | --- | --- | --- | --- | --- | --- | --- | --- |
|  | 12 | **PLATFORMS & HANDRAILS (SITE INSTALLATION WORKS)** |  |  | 2013-02-25 | 2013-02-28 |  |  |  |  |  |
| JF721.435 |  | Erect & Fix Stairs, Handrails & Platforms on Shell |  | 3d | 2013-02-25 | 2013-02-28 | JF721.434, JF721.371 | 34d | 0d | Forman [20 h]; Crane Operator [20 h]; Diesel Truck [20 h]; Fabricator [40 h]; Helper [120 h]; Rigger [20 h]; Scaffolder [40 h]; Driver [20 h]; Truck Flat Bed [20 h]; Project Engineer [20 h]; QC inspector [20 h]; Safety Officer [20 h]; Vehicle (pick up 3/4T 4*2) [20 h]; Platforms & / handrails (site Installation works) [0.35] | 21,568.74 |
| JF721.436 |  | Erect & Fix Roof Platforms & Handrails |  | 4d | 2013-02-25 | 2013-02-28 | JF721.435 SS | 34d | 0d | Diesel Truck [30 h]; Forman [30 h]; Crane Operator [30 h]; Rigger [30 h]; Fabricator [60 h]; Helper [180 h]; Scaffolder [60 h]; Driver [30 h]; Truck Flat Bed [30 h]; Project Engineer [30 h]; QC inspector [30 h]; Safety Officer [30 h]; Vehicle (pick up 3/4T 4*2) [30 h]; Platforms & / handrails (site Installation works) [0.65] | 40,056.23 |
|  | 25 | **MCC** |  |  | 2013-02-28 | 2013-02-28 |  |  |  |  |  |
| 2.C |  | MCC | milestone | 0d | 2013-02-28 | 2013-02-28 | JF721.436 | 34d | 0d |  |  |
|  | 13 | **HYDROTESTING** |  |  | 2013-02-28 | 2013-03-29 |  |  |  |  |  |
| JF721.437 |  | Install Blind Flanges |  | 2d | 2013-02-28 | 2013-03-02 | 2.C | 34d | 0d | Helper [60 h]; Fabricator [20 h]; Forman [10 h]; Scaffolder [20 h]; Driver [10 h]; Truck Flat Bed [10 h]; Project Engineer [10 h]; QC inspector [10 h]; Safety Officer [10 h]; Vehicle (pick up 3/4T 4*2) [10 h]; Hydrotesting [0.15] | 7,395 |
| JF721.438 |  | Tank Water Filling |  | 22d | 2013-03-03 | 2013-03-21 | JF721.437 | 34d | 0d | Water truck 30,000 Gallons [260 h]; Helper [780 h]; Forman [260 h]; Driver [260 h]; Truck Flat Bed [260 h]; Project Engineer [260 h]; QC inspector [260 h]; Safety Officer [260 h]; Vehicle (pick up 3/4T 4*2) [260 h]; Hydrotesting [0.2] | 9,859.99 |
| JF721.439 |  | Hold Water for 48 Hours |  | 3d | 2013-03-21 | 2013-03-24 | JF721.438 | 34d | 0d | Helper [40 h]; Driver [20 h]; Truck Flat Bed [20 h]; Project Engineer [20 h]; QC inspector [20 h]; Safety Officer [20 h]; Vehicle (pick up 3/4T 4*2) [20 h]; Hydrotesting [0.3] | 14,789.99 |
| JF721.440 |  | Drain Water from Tank |  | 4d | 2013-03-24 | 2013-03-27 | JF721.439 | 45d | 0d | Helper [900 h]; Forman [150 h]; Driver [150 h]; Truck Flat Bed [150 h]; Project Engineer [150 h]; QC inspector [150 h]; Safety Officer [150 h]; Vehicle (pick up 3/4T 4*2) [150 h]; Hydrotesting [0.15] | 7,395 |
| JF721.441 |  | Clean & Dry Out Tank |  | 2d | 2013-03-27 | 2013-03-29 | JF721.440 | 45d | 0d | Forman [30 h]; Helper [240 h]; Driver [30 h]; Truck Flat Bed [30 h]; Project Engineer [30 h]; QC inspector [30 h]; Safety Officer [30 h]; Vehicle (pick up 3/4T 4*2) [30 h]; Hydrotesting [0.2] | 9,859.99 |
|  | 21 | **Final Testing** |  |  | 2013-03-29 | 2013-03-29 |  |  |  |  |  |
| 4.C |  | Final Testing | milestone | 0d | 2013-03-29 | 2013-03-29 | JF721.441 | 45d | 0d |  |  |
|  | 14 | **EXTERNAL SITE PAINTING** |  |  | 2013-03-24 | 2013-04-10 |  |  |  |  |  |
| JF721.442 |  | Erect Scafolding Outside Tank |  | 9d | 2013-03-24 | 2013-04-01 | JF721.439 | 34d | 0d | Forman [80 h]; Scaffolder [160 h]; Helper [400 h]; Driver [80 h]; Truck Flat Bed [80 h]; Project Engineer [80 h]; QC inspector [80 h]; Safety Officer [80 h]; Vehicle (pick up 3/4T 4*2) [80 h]; External site painting [0.2] | 7,395 |
| JF721.443 |  | External Shell Blast & Prime |  | 5d | 2013-04-01 | 2013-04-05 | JF721.442 | 34d | 0d | Painter [80 h]; Blaster [80 h]; Helper [320 h]; Driver [40 h]; Truck Flat Bed [40 h]; Project Engineer [40 h]; QC inspector [40 h]; Safety Officer [40 h]; Vehicle (pick up 3/4T 4*2) [40 h]; External site painting [0.3] | 11,092.49 |
| JF721.444 |  | External Shell Secondary & Final Coat |  | 5d | 2013-04-02 | 2013-04-06 | JF721.443 SS+1d | 34d | 0d | Helper [280 h]; Blaster [80 h]; Painter [80 h]; Driver [40 h]; Truck Flat Bed [40 h]; Project Engineer [40 h]; QC inspector [40 h]; Safety Officer [40 h]; Vehicle (pick up 3/4T 4*2) [40 h]; External site painting [0.3] | 11,092.49 |
| JF721.445 |  | External Shell Paint Inspection |  | 2d | 2013-04-06 | 2013-04-08 | JF721.444 | 34d | 0d | Forman [10 h]; Helper [50 h]; Blaster [20 h]; Painter [20 h]; Driver [10 h]; Truck Flat Bed [10 h]; Project Engineer [10 h]; QC inspector [10 h]; Safety Officer [10 h]; Vehicle (pick up 3/4T 4*2) [10 h]; External site painting [0.1] | 3,697.5 |
| JF721.446 |  | Dismantle External Scaffolding |  | 3d | 2013-04-08 | 2013-04-10 | JF721.445 | 34d | 0d | Scaffolder [40 h]; Forman [20 h]; Helper [120 h]; Driver [20 h]; Truck Flat Bed [20 h]; Project Engineer [20 h]; QC inspector [20 h]; Safety Officer [20 h]; Vehicle (pick up 3/4T 4*2) [20 h]; External site painting [0.1] | 3,697.5 |
|  | 15 | **INTERNAL SITE PAINTING** |  |  | 2013-03-29 | 2013-04-27 |  |  |  |  |  |
| JF721.447 |  | Erect Scafolding Inside Tank |  | 7d | 2013-03-29 | 2013-04-04 | 4.C | 45d | 11d | Forman [80 h]; Scaffolder [120 h]; Helper [540 h]; Driver [60 h]; Truck Flat Bed [60 h]; Project Engineer [60 h]; QC inspector [60 h]; Safety Officer [60 h]; Vehicle (pick up 3/4T 4*2) [60 h]; internal site painting [0.15] | 9,243.75 |
| JF721.448 |  | Internal Shell Blast & Prime |  | 4d | 2013-04-10 | 2013-04-14 | JF721.447 SS+3d, JF721.446 | 34d | 0d | Blaster [60 h]; Painter [60 h]; Helper [180 h]; Driver [30 h]; Truck Flat Bed [30 h]; Project Engineer [30 h]; QC inspector [30 h]; Safety Officer [30 h]; Vehicle (pick up 3/4T 4*2) [30 h]; internal site painting [0.2] | 12,324.99 |
| JF721.449 |  | Internal Shell Secondary & Final Coat |  | 4d | 2013-04-14 | 2013-04-17 | JF721.448 | 34d | 0d | Painter [60 h]; Helper [180 h]; Blaster [60 h]; Driver [30 h]; Truck Flat Bed [30 h]; Project Engineer [30 h]; QC inspector [30 h]; Safety Officer [30 h]; Vehicle (pick up 3/4T 4*2) [30 h]; internal site painting [0.2] | 12,324.99 |
| JF721.450 |  | Internal Shell Paint Inspection |  | 2d | 2013-04-14 | 2013-04-15 | JF721.449 SS | 34d | 0d | Forman [10 h]; QC inspector [10 h]; Driver [10 h]; Truck Flat Bed [10 h]; Project Engineer [10 h]; Safety Officer [10 h]; Vehicle (pick up 3/4T 4*2) [10 h]; internal site painting [0.05] | 3,081.25 |
| JF721.451 |  | Dismantle Internal Scaffolding |  | 5d | 2013-04-15 | 2013-04-20 | JF721.450 | 34d | 0d | Forman [40 h]; Scaffolder [80 h]; Helper [240 h]; Driver [40 h]; Truck Flat Bed [40 h]; Project Engineer [40 h]; QC inspector [40 h]; Safety Officer [40 h]; Vehicle (pick up 3/4T 4*2) [40 h]; internal site painting [0.05] | 3,081.25 |
| JF721.452 |  | Bottom/Annular Plate Blast & Prime |  | 3d | 2013-04-20 | 2013-04-22 | JF721.451 | 34d | 0d | Blaster [40 h]; Painter [40 h]; Helper [80 h]; Driver [20 h]; Truck Flat Bed [20 h]; Project Engineer [20 h]; QC inspector [20 h]; Safety Officer [20 h]; Vehicle (pick up 3/4T 4*2) [20 h]; internal site painting [0.15] | 9,243.75 |
| JF721.453 |  | Bottom/Annular Plate Secondary & Final Coat |  | 3d | 2013-04-22 | 2013-04-25 | JF721.452 | 34d | 0d | Painter [40 h]; Blaster [40 h]; Helper [60 h]; Driver [20 h]; Truck Flat Bed [20 h]; Project Engineer [20 h]; QC inspector [20 h]; Safety Officer [20 h]; Vehicle (pick up 3/4T 4*2) [20 h]; internal site painting [0.15] | 9,243.75 |
| JF721.454 |  | Bottom/Annular Plate Paint Inspection |  | 2d | 2013-04-25 | 2013-04-27 | JF721.453 | 34d | 0d | Forman [10 h]; QC inspector [10 h]; Driver [10 h]; Truck Flat Bed [10 h]; Project Engineer [10 h]; Safety Officer [10 h]; Vehicle (pick up 3/4T 4*2) [10 h]; internal site painting [0.05] | 3,081.25 |

| ID | WBS | Activity | Type | Duration | Start | Finish | Predecessors | Total float | Free float | Resources | Cost |
| --- | --- | --- | --- | --- | --- | --- | --- | --- | --- | --- | --- |
|  | 16 | **ELECTRICAL SITE WORKS** |  |  | 2013-06-20 | 2013-06-27 |  |  |  |  |  |
| JF721.455 |  | Tanks lighting |  | 3d | 2013-06-20 | 2013-06-22 | 3.12 | 34d | 0d | Forman [20 h]; Helper [60 h]; Fabricator [20 h]; Compressor 450 CFM [20 h]; Cutting Machine [20 h]; Welder 6G [20 h]; Driver [20 h]; Truck Flat Bed [20 h]; Project Engineer [20 h]; QC inspector [20 h]; Safety Officer [20 h]; Vehicle (pick up 3/4T 4*2) [20 h]; Electrical Site Works [0.3] | 7,395 |
| JF721.456 |  | Tanks lighting protection |  | 3d | 2013-06-23 | 2013-06-25 | JF721.455 | 34d | 0d | Forman [20 h]; Helper [60 h]; Cutting Machine [20 h]; Compressor 450 CFM [20 h]; Welder 6G [20 h]; Driver [20 h]; Truck Flat Bed [20 h]; Project Engineer [20 h]; QC inspector [20 h]; Safety Officer [20 h]; Vehicle (pick up 3/4T 4*2) [20 h]; Electrical Site Works [0.3] | 7,395 |
| JF721.457 |  | Grounding system |  | 3d | 2013-06-25 | 2013-06-27 | JF721.456 | 34d | 0d | Forman [20 h]; Helper [40 h]; Driver [20 h]; Truck Flat Bed [20 h]; Project Engineer [20 h]; QC inspector [20 h]; Safety Officer [20 h]; Vehicle (pick up 3/4T 4*2) [20 h]; Electrical Site Works [0.4] | 9,860 |
|  | 22 | **Complete Installation of Task Lighting for the tanks including Cabling** |  |  | 2013-06-27 | 2013-06-27 |  |  |  |  |  |
| 3.10 |  | Complete Installation | milestone | 0d | 2013-06-27 | 2013-06-27 | JF721.457 | 34d | 0d |  |  |
|  | 17 | **THIRD PARTY INSPECTION** |  |  | 2013-06-27 | 2013-07-12 |  |  |  |  |  |
| JF721.458 |  | Concrete testing |  | 4d | 2013-06-27 | 2013-07-01 | 3.10 | 34d | 0d | Concrete Testing-Third party inspection [30 h]; Forman [30 h]; Helper [30 h]; Driver [30 h]; Truck Flat Bed [30 h]; Project Engineer [30 h]; QC inspector [30 h]; Safety Officer [30 h]; Vehicle (pick up 3/4T 4*2) [30 h]; Third Party Inspection [0.1] | 9,860 |
| JF721.459 |  | RT testing for the welding |  | 5d | 2013-07-01 | 2013-07-05 | JF721.458 | 34d | 0d | Forman [40 h]; QC inspector [40 h]; Helper [40 h]; Driver [40 h]; Truck Flat Bed [40 h]; Project Engineer [40 h]; Safety Officer [40 h]; Vehicle (pick up 3/4T 4*2) [40 h]; Third Party Inspection [0.45] | 44,369.98 |
| JF721.460 |  | Sand testing |  | 5d | 2013-07-06 | 2013-07-09 | JF721.459 | 34d | 0d | Forman [40 h]; Helper [40 h]; Driver [40 h]; Truck Flat Bed [40 h]; Project Engineer [40 h]; QC inspector [40 h]; Safety Officer [40 h]; Vehicle (pick up 3/4T 4*2) [40 h]; Third Party Inspection [0.1] | 9,860 |
| JF721.461 |  | Tank Calibration |  | 3d | 2013-07-10 | 2013-07-12 | JF721.460 | 34d | 0d | Helper [40 h]; Forman [20 h]; Driver [20 h]; Truck Flat Bed [20 h]; Project Engineer [20 h]; QC inspector [20 h]; Safety Officer [20 h]; Vehicle (pick up 3/4T 4*2) [20 h]; Third Party Inspection [0.35] | 34,509.98 |
|  | 23 | **Third Party Testing and Commissioning** |  |  | 2013-07-12 | 2013-07-12 |  |  |  |  |  |
| 3.C |  | Third Party Testing | milestone | 0d | 2013-07-12 | 2013-07-12 | JF721.461 | 34d | 0d |  |  |
|  | 18 | **HAND OVER TO CLIENT (COMMISSIONING)** |  |  | 2013-07-12 | 2013-07-15 |  |  |  |  |  |
| JF721.462 |  | FInal Inspection & Hand over to client |  | 3d | 2013-07-12 | 2013-07-15 | 3.C | 34d | 0d | Project Engineer [30 h]; Forman [30 h]; QC inspector [30 h]; Helper [90 h]; Driver [30 h]; Truck Flat Bed [30 h]; Safety Officer [30 h]; Vehicle (pick up 3/4T 4*2) [30 h]; Hand over to Client (commissioning) [1] | 67,787.46 |
|  | 24 | **Project Completion (TK3)** |  |  | 2013-07-15 | 2013-07-15 |  |  |  |  |  |
| 6.C |  | Project Completion | milestone | 0d | 2013-07-15 | 2013-07-15 | JF721.462, 6.B FF | 34d | 29d |  |  |
|  | 2 | **ADWIHI SITE** |  |  | 2012-06-30 | 2013-08-15 |  |  |  |  |  |
|  | 1 | **TANK#4 101 B** |  |  | 2012-06-30 | 2013-08-10 |  |  |  |  |  |
|  | 1 | **ENGINEERING** |  |  | 2012-06-30 | 2012-07-26 |  |  |  |  |  |
|  | 1 | **SOIL INVESTIGATION SUBCONTRACTOR** |  |  | 2012-06-30 | 2012-07-01 |  |  |  |  |  |
| JF721.463 |  | Soil Investigation Works |  | 2d | 2012-06-30 | 2012-07-01 | JF721.309 SS | 0d |  | Geo Technical Survey [20 h]; Soil investigation / sub contractor [1] | 17,511.8 |
|  | 4 | **Complete survey and Geotechnical Investigation for Ad-Duaihi Storage Facility.** |  |  | 2012-07-01 | 2012-07-01 |  |  |  |  |  |
| 4.1 |  | Complete survey and Geotechnical Investigation for Ad-Duaihi Storage Facility. | milestone | 0d | 2012-07-01 | 2012-07-01 | JF721.463 | 5d | 0d |  |  |

Notes:
- 2: RECIEVED TANK COORIDNATES / 4TH OF OCTOBER 2012 FROM RADICON / WAITING FOR JUSTIFICATION LETTER FROM RADICON TO PRESENT TO MA'ADEN FOR / PROJECT TIME EXTENSION / DESIGN,ENGINEERING,SUPPLY OF / MATERIALS,MANUFACTURING,PREFABRICATION,ASSUMBLY,PAINTING&COATING,ERECTION,SHOP / TESTING,INSPECTION,PACKING AND DELIEVERY TO SITE,OPERATING & MAINTENANCE / MANUALS AND SPARE PARTS PACKADGE
- 1: DESIGN,ENGINEERING,SUPPLY OF / MATERIALS,MANUFACTURING,PREFABRICATION,ASSUMBLY,PAINTING&COATING,ERECTION,SHOP / TESTING,INSPECTION,PACKING AND DELIEVERY TO SITE,OPERATING & MAINTENANCE / MANUALS AND SPARE PARTS PACKADGE
- JF721.463: Steps: Soil Contractor Mobilization; Start of work; Finishing & Moving to 2nd Tank

| ID | WBS | Activity | Type | Duration | Start | Finish | Predecessors | Total float | Free float | Resources | Cost |
| --- | --- | --- | --- | --- | --- | --- | --- | --- | --- | --- | --- |
|  | 2 | **ENGINEERING DESIGN CALCULATIONS)** |  |  | 2012-07-01 | 2012-07-17 |  |  |  |  |  |
| JF721.464 |  | 60% Submittal |  | 1d | 2012-07-01 | 2012-07-02 | 4.1 | 5d | 0d | Mechanical Design Engineer [8 h]; Engineering / Design Calculations [0.15] | 3,940.16 |
| JF721.465 |  | 60% Comments Incooperation |  | 7d | 2012-07-02 | 2012-07-08 | JF721.464 | 5d | 0d | Mechanical Design Engineer [56 h]; Engineering / Design Calculations [0.2] | 5,253.54 |
| JF721.466 |  | 90% Submittal |  | 1d | 2012-07-08 | 2012-07-09 | JF721.465 | 5d | 0d | Mechanical Design Engineer [8 h]; Engineering / Design Calculations [0.15] | 3,940.16 |
| JF721.467 |  | 90% Comments Incooperation |  | 7d | 2012-07-09 | 2012-07-15 | JF721.466 | 5d | 0d | Mechanical Design Engineer [56 h]; Engineering / Design Calculations [0.2] | 5,253.54 |
| JF721.468 |  | IFC |  | 3d | 2012-07-15 | 2012-07-17 | JF721.467 | 5d | 0d | Mechanical Design Engineer [24 h]; Engineering / Design Calculations [0.3] | 7,880.31 |
|  | 5 | **Complete Engineering design and Calculations** |  |  | 2012-07-17 | 2012-07-17 |  |  |  |  |  |
| 4.2 |  | Complete Engineering design and Calculations | milestone | 0d | 2012-07-17 | 2012-07-17 | JF721.468 FF | 5d | 0d |  |  |
|  | 3 | **ENGINEERING TANK & FOUNDATION DRAWINGS** |  |  | 2012-07-17 | 2012-07-26 |  |  |  |  |  |
| JF721.469 |  | 60% Submittal (Tank & Foundation Drawings) |  | 1d | 2012-07-17 | 2012-07-18 | 4.2 | 5d | 0d | Mechanical Design Engineer [8 h]; Structural Design Engineer [8 h]; Quantity Surveyor (Material Specialist) [8 h]; Engineering / Tank & / foundation Drawings [0.15] | 6,566.93 |
| JF721.470 |  | 60% Comments Incooperation (Tanks & Foundation Drawings) |  | 5d | 2012-07-18 | 2012-07-23 | JF721.469 | 5d | 0d | Quantity Surveyor (Material Specialist) [40 h]; Structural Design Engineer [40 h]; Mechanical Design Engineer [40 h]; Engineering / Tank & / foundation Drawings [0.2] | 8,755.9 |
| JF721.471 |  | 90% Submittal (Tanks & Foundation Drawings) |  | 1d | 2012-07-23 | 2012-07-23 | JF721.470 | 5d | 0d | Quantity Surveyor (Material Specialist) [8 h]; Structural Design Engineer [8 h]; Mechanical Design Engineer [8 h]; Engineering / Tank & / foundation Drawings [0.15] | 6,566.93 |
| JF721.472 |  | 90% Comments Incooperation (Tanks & Foundation Drawings) |  | 2d | 2012-07-23 | 2012-07-25 | JF721.471 | 5d | 0d | Structural Design Engineer [16 h]; Quantity Surveyor (Material Specialist) [16 h]; Mechanical Design Engineer [16 h]; Engineering / Tank & / foundation Drawings [0.2] | 8,755.9 |
| JF721.473 |  | IFC |  | 1d | 2012-07-25 | 2012-07-26 | JF721.472 | 5d | 0d | Quantity Surveyor (Material Specialist) [8 h]; Structural Design Engineer [8 h]; Mechanical Design Engineer [8 h]; Engineering / Tank & / foundation Drawings [0.3] | 13,133.85 |
|  | 6 | **Complete Fabrication and GA Drawing with Bill of Quantities** |  |  | 2012-07-26 | 2012-07-26 |  |  |  |  |  |
| 4.3 |  | Complete Fabrication and GA Drawing with Bill of Quantities | milestone | 0d | 2012-07-26 | 2012-07-26 | JF721.473 FF | 5d | 0d |  |  |
|  | 2 | **PORCURMENT (INCLUDING DELIEVERY OF RAW MATERIAL & PREFABRICATION OF MATERIAL AT ALZAMIL FACTORY)** |  |  | 2012-07-17 | 2013-07-22 |  |  |  |  |  |
|  | 1 | **CAMP FACILITIES & SITE OFFICES** |  |  | 2012-07-26 | 2012-09-16 |  |  |  |  |  |
| JF721.474 |  | PO Issued |  | 6d | 2012-07-26 | 2012-07-31 | 4.3 | 5d | 0d | Camp Facilities & Site Offices [0.6] | 99,426.97 |
| JF721.475 |  | Ma'aden Site Delievery |  | 51d | 2012-07-31 | 2012-09-16 | JF721.474 | 5d | 0d | Camp Facilities & Site Offices [0.4] | 66,284.64 |
|  | 2 | **CATHODIC PROTECTION SYSTEM SUBCONTRACTOR** |  |  | 2012-07-24 | 2013-07-03 |  |  |  |  |  |
| JF721.476 |  | Approval for Vendor Drawings & SPecifications |  | 2d | 2012-07-24 | 2012-07-26 | JF721.472 SS+1d | 36d | 0d | Cathodic / protection System subcontractor [0.1] | 6,628.47 |
| JF721.477 |  | PO Issued |  | 28d | 2012-07-26 | 2012-08-22 | JF721.476 | 124d | 0d | Cathodic / protection System subcontractor [0.2] | 13,256.93 |
| JF721.478 |  | CP System Delievered to Ma'aden Site & Installed |  | 14d | 2013-06-19 | 2013-07-01 | JF721.608 | 5d | 0d | Fabricator [200 h]; Forman [200 h]; Helper [400 h]; Vehicle (pick up 3/4T 4*2) [200 h]; Rigger [200 h]; QC inspector [200 h]; Project Engineer [200 h]; Safety Officer [200 h]; Cutting Machine [200 h]; Truck Flat Bed [200 h]; Driver [200 h]; Crane Operator [200 h]; Diesel Truck [200 h]; Cathodic / protection System subcontractor [0.3] | 19,885.4 |
| JF721.479 |  | Ma'aden CP Inspection |  | 2d | 2013-07-01 | 2013-07-03 | JF721.478 | 5d | 0d | Forman [10 h]; Helper [20 h]; QC inspector [10 h]; Vehicle (pick up 3/4T 4*2) [10 h]; Safety Officer [10 h]; Project Engineer [10 h]; Cutting Machine [10 h]; Truck Flat Bed [10 h]; Driver [10 h]; Crane Operator [10 h]; Diesel Truck [10 h]; Rigger [10 h]; Cathodic / protection System subcontractor [0.4] | 26,513.86 |

Notes:
- JF721.465: Steps: Recieving the Comments from client; Incooperating the Comments
- JF721.467: Steps: Recieving the Comments from client; Incooperating the Comments
- JF721.468: Steps: Receving Final Approval from client; Preparing the Drawings to IFC
- JF721.475: Steps: Purchase Portacabins Locally; Deliever to MPS
- JF721.478: Steps: Delievery of CP System to site; Installation after complete internal tank painting

| ID | WBS | Activity | Type | Duration | Start | Finish | Predecessors | Total float | Free float | Resources | Cost |
| --- | --- | --- | --- | --- | --- | --- | --- | --- | --- | --- | --- |
|  | 18 | **Complete installation of Cathodic Protection and CP monitoring for the Storage Tanks.** |  |  | 2013-07-03 | 2013-07-03 |  |  |  |  |  |
| 4.11 |  | Complete Installation of Cathodic Protection | milestone | 0d | 2013-07-03 | 2013-07-03 | JF721.479 | 5d | 0d |  |  |
|  | 3 | **CIVIL & FOUNDATION** |  |  | 2012-09-16 | 2012-09-24 |  |  |  |  |  |
| JF721.480 |  | PO Issued |  | 2d | 2012-09-16 | 2012-09-18 | JF721.475 | 28d | 0d | Civil & Foundation Material [0.6] | 39,770.79 |
| JF721.481 |  | Ma'aden Site Delievery |  | 7d | 2012-09-18 | 2012-09-24 | JF721.480 | 28d | 23d | Civil & Foundation Material [0.4] | 26,513.86 |
|  | 4 | **ALUMINUM DOME ROOF SUBCONTRACTOR** |  |  | 2012-07-24 | 2012-07-29 |  |  |  |  |  |
| JF721.482 |  | Approval For Vendor Drawings & Specifications |  | 2d | 2012-07-24 | 2012-07-26 | JF721.476 SS | 36d | 0d | Aluminum Doom Roof subcontractor [0.35] | 115,998.13 |
| JF721.483 |  | P.O Issued |  | 4d | 2012-07-26 | 2012-07-29 | JF721.482 | 148d | 24d | Aluminum Doom Roof subcontractor [0.65] | 215,425.1 |
|  | 5 | **INSTRUMENTATION SUBCONTRACTOR** |  |  | 2012-07-24 | 2013-07-22 |  |  |  |  |  |
| JF721.484 |  | Approval for vendor Drawings & Specifcations |  | 3d | 2012-07-24 | 2012-07-27 | JF721.482 SS | 36d | 0d | Instrumentation / subcontractor [0.1] | 6,628.47 |
| JF721.485 |  | P.O Issued |  | 7d | 2012-07-27 | 2012-08-02 | JF721.484 | 144d | 20d | Instrumentation / subcontractor [0.2] | 13,256.93 |
| JF721.486 |  | Instrumentation Delievered to Ma'aden & Installed |  | 20d | 2013-07-03 | 2013-07-20 | 4.11 | 5d | 0d | Forman [130 h]; Fabricator [130 h]; Helper [260 h]; Vehicle (pick up 3/4T 4*2) [130 h]; Rigger [130 h]; Safety Officer [130 h]; QC inspector [130 h]; Project Engineer [130 h]; Cutting Machine [130 h]; Truck Flat Bed [130 h]; Driver [130 h]; Crane Operator [130 h]; Diesel Truck [130 h]; Instrumentation / subcontractor [0.3] | 19,885.4 |
| JF721.487 |  | Ma'aden Instrumentation Inspection |  | 2d | 2013-07-20 | 2013-07-22 | JF721.486 | 5d | 0d | Helper [20 h]; Forman [10 h]; QC inspector [10 h]; Vehicle (pick up 3/4T 4*2) [10 h]; Safety Officer [10 h]; Rigger [10 h]; Project Engineer [10 h]; Truck Flat Bed [10 h]; Fabricator [10 h]; Driver [10 h]; Diesel Truck [10 h]; Crane Operator [10 h]; Cutting Machine [10 h]; Instrumentation / subcontractor [0.4] | 26,513.86 |
|  | 19 | **Installation of only field instruments, which includes level transmitters and level gauges** |  |  | 2013-07-22 | 2013-07-22 |  |  |  |  |  |
| 4.12 |  | Complete Installation for instruments | milestone | 0d | 2013-07-22 | 2013-07-22 | JF721.487 | 5d | 0d |  |  |
|  | 6 | **PLATES SUPPLIER** |  |  | 2012-07-17 | 2012-07-21 |  |  |  |  |  |
| JF721.488 |  | Approve Vendor Drawings & Specifcations |  | 2d | 2012-07-17 | 2012-07-19 | JF721.468 | 38d | 0d | Plates Supplier [0.25] | 115,998.13 |
| JF721.489 |  | P.O Issued |  | 2d | 2012-07-19 | 2012-07-21 | JF721.488 | 38d | 0d | Plates Supplier [0.75] | 347,994.39 |
|  | 16 | **Material Requisition approval for Steel plates, Cathodic Protection, field instruments etc.** |  |  | 2012-07-27 | 2012-07-27 |  |  |  |  |  |
| 4.5 |  | Material Requisition approval for Steel plates, Cathodic Protection, field instruments etc. | milestone | 0d | 2012-07-27 | 2012-07-27 | JF721.484 | 36d | 0d |  |  |
|  | 17 | **Purchase Order placement for Major Materials** |  |  | 2012-08-22 | 2012-08-22 |  |  |  |  |  |
| 4.6 |  | Purchase Order placement for Major Materials | milestone | 0d | 2012-08-22 | 2012-08-22 | JF721.477, JF721.483, JF721.485 | 124d | 0d |  |  |
|  | 7 | **PROFILE MATERIAL INCLUDING(beams,Angels,Round bars,Flatbars,Checkers Plates)** |  |  | 2012-07-27 | 2012-08-05 |  |  |  |  |  |
| JF721.490 |  | Approval for Vendor Drawings & Specifications |  | 5d | 2012-07-27 | 2012-07-31 | 4.5 | 36d | 0d | Profile material / including(beams,Angels,Round bars,Flatbars,Checkers Plates) [0.25] | 8,285.58 |
| JF721.491 |  | PO Issued |  | 5d | 2012-07-31 | 2012-08-05 | JF721.490 | 158d | 0d | Profile material / including(beams,Angels,Round bars,Flatbars,Checkers Plates) [0.75] | 24,856.74 |

Notes:
- JF721.486: Steps: Delievery of Instrumentation to site; Installation

| ID | WBS | Activity | Duration | Start | Finish | Predecessors | Total float | Free float | Resources | Cost |
| --- | --- | --- | --- | --- | --- | --- | --- | --- | --- | --- |
|  | 8 | **PIPES&FITTINGSINCLUDING(FLANGES,ELBOWS,PAD PLATES,PIPES,NUTS,BOLTS)SUPPLIER INCLDUDING SPARE PARTS** |  | 2012-07-27 | 2012-08-05 |  |  |  |  |  |
| JF721.492 |  | Approval for Vendor Drawings & Specifications | 5d | 2012-07-27 | 2012-07-31 | JF721.490 SS | 36d | 0d | Pipes & fittings / (including(Flanges,elbows, / pad plates,pipes, / nuts,bolts) supplier including Spar [0.25] | 16,571.16 |
| JF721.493 |  | PO issued | 5d | 2012-07-31 | 2012-08-05 | JF721.492 | 36d | 0d | Pipes & fittings / (including(Flanges,elbows, / pad plates,pipes, / nuts,bolts) supplier including Spar [0.75] | 49,713.49 |
|  | 9 | **PAINT SUPPLIER** |  | 2012-07-31 | 2012-08-09 |  |  |  |  |  |
| JF721.494 |  | Approval For vendor Specifcations | 7d | 2012-07-31 | 2012-08-06 | JF721.492 | 77d | 0d | Paint supplier [0.25] | 16,571.16 |
| JF721.495 |  | PO issued | 3d | 2012-08-06 | 2012-08-09 | JF721.494 | 77d | 0d | Paint supplier [0.75] | 49,713.49 |
|  | 10 | **RAW MATERIAL DELIEVERY TO ALZAMIL FACTORY** |  | 2012-07-21 | 2012-10-10 |  |  |  |  |  |
| JF721.496 |  | Plates | 91d | 2012-07-21 | 2012-10-10 | JF721.489 | 38d | 0d | Raw Material Delievery to Alzamil Factory [0.7] | 347,994.39 |
| JF721.497 |  | Profile Material | 31d | 2012-08-05 | 2012-09-03 | JF721.491 | 158d | 32d | Raw Material Delievery to Alzamil Factory [0.15] | 74,570.23 |
| JF721.498 |  | Pipes & Fittings | 46d | 2012-08-05 | 2012-09-16 | JF721.493 | 36d | 0d | Raw Material Delievery to Alzamil Factory [0.15] | 74,570.23 |
|  | 11 | **ANNULAR,BUTTOM & SUMP PLATE FABRICATION (AZ PRE-FABRICATION WORKS)** |  | 2012-09-14 | 2012-10-01 |  |  |  |  |  |
| JF721.499 |  | Define Layout | 4d | 2012-09-14 | 2012-09-17 | JF721.496 SS+60d | 38d | 0d | Annular,buttom& / sump plate Fabrication (AZ Pre-fabricated wroks) [0.05] | 8,285.58 |
| JF721.500 |  | Cutting | 8d | 2012-09-14 | 2012-09-20 | JF721.499 SS | 38d | 0d | Annular,buttom& / sump plate Fabrication (AZ Pre-fabricated wroks) [0.15] | 24,856.74 |
| JF721.501 |  | Fit-up | 7d | 2012-09-18 | 2012-09-24 | JF721.500 SS+5d | 38d | 0d | Annular,buttom& / sump plate Fabrication (AZ Pre-fabricated wroks) [0.2] | 33,142.32 |
| JF721.502 |  | Welding | 8d | 2012-09-20 | 2012-09-26 | JF721.501 SS+2d | 38d | 0d | Annular,buttom& / sump plate Fabrication (AZ Pre-fabricated wroks) [0.45] | 74,570.22 |
| JF721.503 |  | Shop Blasting/Painting | 7d | 2012-09-23 | 2012-09-29 | JF721.502 SS+4d | 38d | 0d | Annular,buttom& / sump plate Fabrication (AZ Pre-fabricated wroks) [0.1] | 16,571.16 |
| JF721.504 |  | Inspect & Accept for use | 2d | 2012-09-29 | 2012-10-01 | JF721.503 | 38d | 0d | Annular,buttom& / sump plate Fabrication (AZ Pre-fabricated wroks) [0.05] | 8,285.58 |
|  | 12 | **SHELL COURSES (AZ PRE-FABRICATED WORKS) #1,#2,#3,#4** |  | 2012-09-17 | 2012-10-16 |  |  |  |  |  |
| JF721.505 |  | Define Layout | 7d | 2012-09-17 | 2012-09-23 | JF721.499 | 77d | 0d | Shell courses / (AZ Pre-fabricated works) (#1,#2,#3,#4) [0.05] | 13,256.93 |
| JF721.506 |  | Cutting | 16d | 2012-09-17 | 2012-10-01 | JF721.505 SS | 77d | 0d | Shell courses / (AZ Pre-fabricated works) (#1,#2,#3,#4) [0.5] | 132,569.29 |
| JF721.507 |  | Bevelling/Rolling | 16d | 2012-09-20 | 2012-10-04 | JF721.506 SS+4d | 77d | 0d | Shell courses / (AZ Pre-fabricated works) (#1,#2,#3,#4) [0.2] | 53,027.72 |
| JF721.508 |  | Shop Blasting/Painting | 21d | 2012-09-25 | 2012-10-13 | JF721.507 SS+5d | 77d | 0d | Shell courses / (AZ Pre-fabricated works) (#1,#2,#3,#4) [0.2] | 53,027.72 |
| JF721.509 |  | Inspect & Accept for use | 3d | 2012-10-13 | 2012-10-16 | JF721.508 | 77d | 0d | Shell courses / (AZ Pre-fabricated works) (#1,#2,#3,#4) [0.05] | 13,256.93 |
|  | 13 | **SHELL NOZZLES & MANHOLES(AZ PRE-FABRICATED WORKS)** |  | 2012-10-01 | 2012-10-23 |  |  |  |  |  |
| JF721.510 |  | Define layout | 3d | 2012-10-01 | 2012-10-03 | JF721.497, JF721.506 | 126d | 0d | Shell Nozzles / &manholes (AZ Pre-fabricated works) [0.1] | 9,942.7 |
| JF721.511 |  | Cutting | 5d | 2012-10-03 | 2012-10-08 | JF721.510 | 126d | 0d | Shell Nozzles / &manholes (AZ Pre-fabricated works) [0.2] | 19,885.39 |
| JF721.512 |  | Bevelling | 6d | 2012-10-06 | 2012-10-10 | JF721.511 SS+2d | 126d | 0d | Shell Nozzles / &manholes (AZ Pre-fabricated works) [0.2] | 19,885.39 |
| JF721.513 |  | Fit-up/Welding | 13d | 2012-10-08 | 2012-10-19 | JF721.512 SS+3d | 126d | 0d | Shell Nozzles / &manholes (AZ Pre-fabricated works) [0.4] | 39,770.79 |
| JF721.514 |  | Blasting/Painting | 9d | 2012-10-14 | 2012-10-22 | JF721.513 SS+7d | 126d | 0d | Shell Nozzles / &manholes (AZ Pre-fabricated works) [0.05] | 4,971.35 |
| JF721.515 |  | Inspect & Accept for use | 2d | 2012-10-22 | 2012-10-23 | JF721.514 | 126d | 0d | Shell Nozzles / &manholes (AZ Pre-fabricated works) [0.05] | 4,971.35 |

| ID | WBS | Activity | Type | Duration | Start | Finish | Predecessors | Total float | Free float | Resources | Cost |
| --- | --- | --- | --- | --- | --- | --- | --- | --- | --- | --- | --- |
|  | 14 | **PLATFORMS,STARIS &HANDRAILS9AZ-PRE FABRICATED WORKS)** |  |  | 2012-10-19 | 2012-11-27 |  |  |  |  |  |
| JF721.516 |  | Define Layout |  | 4d | 2012-10-19 | 2012-10-22 | JF721.513 | 150d | 0d | Platforms, / Stairs & / handrails (AZ Pre-fabricated works) [0.1] | 13,256.93 |
| JF721.517 |  | Cutting |  | 6d | 2012-10-23 | 2012-10-29 | JF721.516 | 150d | 0d | Platforms, / Stairs & / handrails (AZ Pre-fabricated works) [0.1] | 13,256.93 |
| JF721.518 |  | Fit-Up |  | 9d | 2012-10-29 | 2012-11-06 | JF721.517 | 150d | 0d | Platforms, / Stairs & / handrails (AZ Pre-fabricated works) [0.2] | 26,513.86 |
| JF721.519 |  | Welding |  | 11d | 2012-11-11 | 2012-11-20 | JF721.518 FS+5d | 150d | 0d | Platforms, / Stairs & / handrails (AZ Pre-fabricated works) [0.4] | 53,027.72 |
| JF721.520 |  | Blasting/Painting |  | 11d | 2012-11-15 | 2012-11-25 | JF721.519 SS+6d | 150d | 0d | Platforms, / Stairs & / handrails (AZ Pre-fabricated works) [0.15] | 19,885.39 |
| JF721.521 |  | Inspect & Accept for use |  | 3d | 2012-11-25 | 2012-11-27 | JF721.520 | 150d | 0d | Platforms, / Stairs & / handrails (AZ Pre-fabricated works) [0.05] | 6,628.46 |
|  | 15 | **DELIEVERY OF THE PRE-FABRICATED MATERIAL TO MA'ADEN SITE** |  |  | 2012-08-09 | 2012-12-04 |  |  |  |  |  |
| JF721.528 |  | Paint Material |  | 26d | 2012-08-09 | 2012-09-03 | JF721.495 | 77d | 41d | Delievery of the Pre-Fabricated Material to Ma'aden Site [0.05] | 41,427.9 |
| JF721.527 |  | Aluminum Dome Roof |  | 91d | 2012-08-22 | 2012-11-11 | 4.6 | 124d | 119d | Delievery of the Pre-Fabricated Material to Ma'aden Site [0.15] | 124,283.71 |
| JF721.526 |  | Pipes & Fittings |  | 26d | 2012-09-16 | 2012-10-09 | JF721.498 | 36d | 0d | Delievery of the Pre-Fabricated Material to Ma'aden Site [0.05] | 41,427.9 |
| JF721.522 |  | Annular,Bottom & Sump |  | 7d | 2012-10-01 | 2012-10-07 | JF721.504 | 38d | 33d | Delievery of the Pre-Fabricated Material to Ma'aden Site [0.15] | 124,283.71 |
| JF721.523 |  | Shell Courses #1,#2,#3,#4 |  | 13d | 2012-10-16 | 2012-10-28 | JF721.509 | 77d | 72d | Delievery of the Pre-Fabricated Material to Ma'aden Site [0.35] | 289,995.32 |
| JF721.524 |  | Shell Nozzles & Manholes |  | 5d | 2012-10-23 | 2012-10-29 | JF721.515 | 126d | 121d | Delievery of the Pre-Fabricated Material to Ma'aden Site [0.1] | 82,855.81 |
| JF721.525 |  | Platforms,Stairs & Handrails |  | 7d | 2012-11-28 | 2012-12-04 | JF721.521 | 150d | 145d | Delievery of the Pre-Fabricated Material to Ma'aden Site [0.15] | 124,283.71 |
|  | 20 | **Supply of Materials to Site** |  |  | 2012-10-09 | 2012-10-09 |  |  |  |  |  |
| 4.8 |  | Supply of materials to Site | milestone | 0d | 2012-10-09 | 2012-10-09 | JF721.526, JF721.528 | 36d | 31d |  |  |
|  | 3 | **CONSTRUCTION (INCLUDING SHOP FABRICATION,SITE CONSTRUCTION,INSTALLATION WORKS,MOBILIZATION,PAINTING)** |  |  | 2012-07-31 | 2013-08-10 |  |  |  |  |  |
|  | 1 | **MOBILIZATION(INCLUDING ACCOMODATION,FABRICATION YARD & AZ EQUIPMENT)** |  |  | 2012-07-31 | 2012-10-04 |  |  |  |  |  |
| JF721.529 |  | Rental For Workers & Engineers Accomodation with Facilities |  | 2d | 2012-07-31 | 2012-08-02 | JF721.475 SS | 5d | 0d | Project Engineer [20 h]; Forman [20 h]; Vehicle (pick up 3/4T 4*2) [20 h]; Mobilization(including Accomodation / ,fabrication yard, AZ equipment) [0.45] | 99,372.15 |
| JF721.530 |  | Complete Mobilize AZ Equipment to Site & Prepare the site fabrication yard |  | 69d | 2012-08-02 | 2012-10-03 | JF721.529 | 5d | 0d | Crane Operator [690 h]; Diesel Truck [690 h]; Project Engineer [690 h]; Rigger [690 h]; Driver [690 h]; Truck Flat Bed [690 h]; Helper [1380 h]; Vehicle (pick up 3/4T 4*2) [690 h]; Mobilization(including Accomodation / ,fabrication yard, AZ equipment) [0.35] | 77,289.45 |
| JF721.531 |  | Ma'aden Inspection & Approval for Portacabins |  | 1d | 2012-10-03 | 2012-10-04 | JF721.530 | 5d | 0d | Project Engineer [10 h]; Forman [10 h]; Mobilization(including Accomodation / ,fabrication yard, AZ equipment) [0.2] | 44,165.4 |
|  | 19 | **Complete MOBILIZATION of camp with Catering and accommodation facilities** |  |  | 2012-10-04 | 2012-10-04 |  |  |  |  |  |
| 4.7 |  | Complete MOBILIZATION of camp with Catering and accommodation facilities | milestone | 0d | 2012-10-04 | 2012-10-04 | JF721.531 | 5d | 0d |  |  |

Notes:
- JF721.527: Steps: Drawings Recieved from Supplier; Submission/Approval from CLient; Roof Fabrication; Shipping of Fabricated Material; Delievery to Alzamil factory; Delievey to MA'aden Site
- JF721.523: Steps: Shell #1; Shell #2; Shell #3; Shell #4

| ID | WBS | Activity | Type | Duration | Start | Finish | Predecessors | Total float | Free float | Resources | Cost |
| --- | --- | --- | --- | --- | --- | --- | --- | --- | --- | --- | --- |
|  | 2 | **CIVIL WORKS** |  |  | 2012-10-04 | 2012-10-25 |  |  |  |  |  |
| JF721.532 |  | Layout/Stake-out |  | 3d | 2012-10-04 | 2012-10-07 | 4.7 | 5d | 0d | Forman [20 h]; Helper [40 h]; Carpenter [20 h]; Steel Workers [20 h]; Rigger [20 h]; Crane Operator [20 h]; Truck Flat Bed [20 h]; Safety Officer [20 h]; QC inspector [20 h]; Project Engineer [20 h]; Vehicle (pick up 3/4T 4*2) [20 h]; Diesel Truck [20 h]; Civil works [0.1] | 23,922.92 |
| JF721.533 |  | Excavation |  | 10d | 2012-10-06 | 2012-10-14 | JF721.532 SS+1d | 5d | 0d | Forman [90 h]; Helper [360 h]; Bus [90 h]; QC inspector [90 h]; Safety Officer [90 h]; Project Engineer [90 h]; Crane Operator [90 h]; Driver [90 h]; Truck Flat Bed [90 h]; Carpenter [90 h]; Steel Workers [90 h]; Vehicle (pick up 3/4T 4*2) [90 h]; Diesel Truck [90 h]; Civil works [0.45] | 107,653.16 |
| JF721.534 |  | SteelWorks/Formworks |  | 7d | 2012-10-14 | 2012-10-20 | JF721.533, JF721.481 | 5d | 0d | Steel Workers [70 h]; Carpenter [70 h]; Forman [70 h]; Helper [350 h]; Driver [70 h]; Rigger [70 h]; Project Engineer [70 h]; Crane Operator [70 h]; QC inspector [70 h]; Safety Officer [70 h]; Vehicle (pick up 3/4T 4*2) [70 h]; Truck Flat Bed [70 h]; Diesel Truck [70 h]; Civil works [0.3] | 71,768.77 |
| JF721.535 |  | Soil Compaction |  | 6d | 2012-10-20 | 2012-10-25 | JF721.534 | 5d | 0d | Helper [300 h]; Vibrating Roller 16T [60 h]; Forman [60 h]; Carpenter [60 h]; Mason [60 h]; Steel Workers [60 h]; Vehicle (pick up 3/4T 4*2) [60 h]; Driver [60 h]; Rigger [60 h]; Project Engineer [60 h]; Crane Operator [60 h]; Safety Officer [60 h]; QC inspector [60 h]; Diesel Truck [60 h]; Truck Flat Bed [60 h]; Civil works [0.15] | 35,884.39 |
|  | 3 | **FOUNDATION WORKS** |  |  | 2012-10-25 | 2012-11-06 |  |  |  |  |  |
| JF721.536 |  | Concrete Pouring |  | 3d | 2012-10-25 | 2012-10-29 | JF721.535 | 5d | 0d | Helper [50 h]; Forman [10 h]; Steel Workers [10 h]; Carpenter [10 h]; Mason [10 h]; Vehicle (pick up 3/4T 4*2) [10 h]; Rigger [10 h]; Driver [10 h]; Project Engineer [10 h]; Safety Officer [10 h]; QC inspector [10 h]; Diesel Truck [10 h]; Truck Flat Bed [10 h]; Foundation works [0.35] | 77,289.45 |
| JF721.537 |  | Concrete Curing |  | 3d | 2012-10-29 | 2012-11-01 | JF721.536 | 5d | 0d | Helper [150 h]; Forman [30 h]; QC inspector [30 h]; Safety Officer [30 h]; Crane Operator [30 h]; Project Engineer [30 h]; Rigger [30 h]; Truck Flat Bed [30 h]; Vehicle (pick up 3/4T 4*2) [30 h]; Driver [30 h]; Carpenter [30 h]; Steel Workers [30 h]; Mason [30 h]; Diesel Truck [30 h]; Foundation works [0.35] | 77,289.45 |
| JF721.538 |  | Removal of Formworks |  | 2d | 2012-11-01 | 2012-11-03 | JF721.537 | 5d | 0d | Helper [100 h]; QC inspector [20 h]; Safety Officer [20 h]; Crane Operator [20 h]; Forman [20 h]; Driver [20 h]; Project Engineer [20 h]; Mason [20 h]; Carpenter [20 h]; Steel Workers [20 h]; Diesel Truck [20 h]; Truck Flat Bed [20 h]; Vehicle (pick up 3/4T 4*2) [20 h]; Foundation works [0.15] | 33,124.05 |
| JF721.539 |  | Backfilling |  | 4d | 2012-11-03 | 2012-11-06 | JF721.538 | 5d | 0d | Backhoe [40 h]; Helper [200 h]; Forman [40 h]; Tack Welder [40 h]; Welder 6G [160 h]; Fabricator [80 h]; Driver [40 h]; Project Engineer [40 h]; QC inspector [40 h]; Safety Officer [40 h]; Crane Operator [40 h]; Rigger [40 h]; Vehicle (pick up 3/4T 4*2) [40 h]; Diesel Truck [40 h]; Foundation works [0.15] | 33,124.05 |
|  | 25 | **Complete construction of Civil/Structural Work , including excavation, backfill** |  |  | 2012-11-06 | 2012-11-06 |  |  |  |  |  |
| 4.9 |  | Complete COnstruction of Civil/Structural works | milestone | 0d | 2012-11-06 | 2012-11-06 | JF721.539 | 5d | 0d |  |  |
|  | 4 | **ANNULAR & BOTTOM PLATES (SITE WORKS)** |  |  | 2012-11-06 | 2012-12-30 |  |  |  |  |  |
| JF721.540 |  | Erect & Weld Annular Plates |  | 15d | 2012-11-06 | 2012-11-19 | 4.8, 4.9, JF721.522 | 5d | 0d | Forman [70 h]; Crane Operator [70 h]; Rigger [70 h]; Fabricator [140 h]; Welder 6G [350 h]; Tack Welder [70 h]; Helper [490 h]; Truck Flat Bed [70 h]; Compressor 450 CFM [350 h]; Cutting Machine [70 h]; Diesel Truck [70 h]; QC inspector [70 h]; Safety Officer [70 h]; Project Engineer [70 h]; Driver [70 h]; Vehicle (pick up 3/4T 4*2) [70 h]; Annular & bottom / Plates (Site Installation works) [0.25] | 9,201.12 |
| JF721.541 |  | Erect & Tack Bottom Plates |  | 20d | 2012-11-19 | 2012-12-06 | JF721.540 | 5d | 0d | Compressor 450 CFM [360 h]; Crane Operator [60 h]; Forman [60 h]; Rigger [60 h]; Truck Flat Bed [60 h]; Tack Welder [60 h]; Helper [420 h]; Diesel Truck [60 h]; Welder 6G [360 h]; QC inspector [60 h]; Safety Officer [60 h]; Project Engineer [60 h]; Driver [60 h]; Vehicle (pick up 3/4T 4*2) [60 h]; Fabricator [120 h]; Cutting Machine [60 h]; Annular & bottom / Plates (Site Installation works) [0.2] | 7,360.9 |
| JF721.542 |  | Welding of Bottom Plates |  | 25d | 2012-12-06 | 2012-12-27 | JF721.541 | 5d | 0d | Welder 6G [420 h]; Forman [70 h]; Fabricator [140 h]; Helper [490 h]; Compressor 450 CFM [420 h]; Tack Welder [70 h]; Vehicle (pick up 3/4T 4*2) [70 h]; Driver [70 h]; Rigger [70 h]; Crane Operator [70 h]; QC inspector [70 h]; Safety Officer [70 h]; Project Engineer [70 h]; Cutting Machine [70 h]; Annular & bottom / Plates (Site Installation works) [0.3] | 11,041.35 |
| JF721.543 |  | Visual Inspection & Cleaning |  | 1d | 2012-12-28 | 2012-12-29 | JF721.542 | 5d | 0d | QC inspector [10 h]; Project Engineer [10 h]; Forman [10 h]; Helper [70 h]; Welder 6G [60 h]; Fabricator [10 h]; Tack Welder [10 h]; Driver [10 h]; Vehicle (pick up 3/4T 4*2) [10 h]; Safety Officer [10 h]; Crane Operator [10 h]; Rigger [10 h]; Cutting Machine [10 h]; Annular & bottom / Plates (Site Installation works) [0.1] | 3,680.45 |
| JF721.544 |  | Carry Out NDT & Vaccuum Box Test |  | 2d | 2012-12-29 | 2012-12-30 | JF721.543 | 5d | 0d | QC inspector [20 h]; Forman [20 h]; Helper [140 h]; Project Engineer [20 h]; Crane Operator [20 h]; Rigger [20 h]; Driver [20 h]; Fabricator [60 h]; Welder 6G [120 h]; Tack Welder [40 h]; Vehicle (pick up 3/4T 4*2) [20 h]; Cutting Machine [20 h]; Annular & bottom / Plates (Site Installation works) [0.15] | 5,520.68 |
|  | 5 | **SHELL COURSE #1(SITE INSTALLATION WORKS)** |  |  | 2012-12-30 | 2013-01-07 |  |  |  |  |  |
| JF721.545 |  | Prepare Shell Course # 1 for Erection |  | 3d | 2012-12-30 | 2013-01-01 | JF721.544 SS+1d, JF721.523 | 5d | 0d | Crane Operator [10 h]; Forman [10 h]; Rigger [10 h]; Truck Flat Bed [10 h]; Fabricator [30 h]; Helper [70 h]; Cutting Machine [10 h]; QC inspector [10 h]; Safety Officer [10 h]; Project Engineer [10 h]; Diesel Truck [10 h]; Vehicle (pick up 3/4T 4*2) [10 h]; Compressor 450 CFM [60 h]; Tack Welder [20 h]; Welder 6G [60 h]; Shell Course #1 / (site Installation works) [0.1] | 7,360.9 |
| JF721.546 |  | Erect & Tack Shell Course # 1 |  | 5d | 2013-01-01 | 2013-01-05 | JF721.545 | 5d | 0d | Crane Operator [20 h]; Forman [20 h]; Rigger [20 h]; Fabricator [60 h]; Tack Welder [40 h]; Compressor 450 CFM [120 h]; Cutting Machine [20 h]; Diesel Truck [20 h]; QC inspector [20 h]; Safety Officer [20 h]; Project Engineer [20 h]; Driver [20 h]; Truck Flat Bed [20 h]; Helper [140 h]; Welder 6G [120 h]; Vehicle (pick up 3/4T 4*2) [20 h]; Shell Course #1 / (site Installation works) [0.2] | 14,721.8 |
| JF721.547 |  | Weld Outer Vertical Seam |  | 4d | 2013-01-02 | 2013-01-05 | JF721.546 SS+1d | 5d | 0d | Forman [20 h]; Fabricator [60 h]; Welder 6G [120 h]; Compressor 450 CFM [120 h]; Helper [140 h]; QC inspector [20 h]; Cutting Machine [20 h]; Safety Officer [20 h]; Crane Operator [20 h]; Diesel Truck [20 h]; Project Engineer [20 h]; Rigger [20 h]; Driver [20 h]; Truck Flat Bed [20 h]; Tack Welder [40 h]; Vehicle (pick up 3/4T 4*2) [20 h]; Shell Course #1 / (site Installation works) [0.25] | 18,402.25 |
| JF721.548 |  | Backgouge & NDT Inside Vertical Seam |  | 4d | 2013-01-03 | 2013-01-06 | JF721.547 SS+1d | 5d | 0d | Helper [140 h]; Forman [20 h]; Cutting Machine [20 h]; Fabricator [60 h]; QC inspector [20 h]; Vehicle (pick up 3/4T 4*2) [20 h]; Compressor 450 CFM [120 h]; Tack Welder [40 h]; Welder 6G [120 h]; Driver [20 h]; Rigger [20 h]; Project Engineer [20 h]; Diesel Truck [20 h]; Crane Operator [20 h]; Safety Officer [20 h]; Shell Course #1 / (site Installation works) [0.15] | 11,041.35 |
| JF721.549 |  | Weld Inside Vertical Seam |  | 4d | 2013-01-03 | 2013-01-07 | JF721.548 SS+1d | 5d | 0d | Compressor 450 CFM [140 h]; Welder 6G [140 h]; Tack Welder [40 h]; Fabricator [60 h]; Forman [20 h]; QC inspector [20 h]; Helper [140 h]; Safety Officer [20 h]; Project Engineer [20 h]; Diesel Truck [20 h]; Crane Operator [20 h]; Rigger [20 h]; Truck Flat Bed [20 h]; Vehicle (pick up 3/4T 4*2) [20 h]; Cutting Machine [20 h]; Shell Course #1 / (site Installation works) [0.3] | 22,082.7 |

| ID | WBS | Activity | Duration | Start | Finish | Predecessors | Total float | Free float | Resources | Cost |
| --- | --- | --- | --- | --- | --- | --- | --- | --- | --- | --- |
|  | 6 | **SHELL COURSE#2(SITE INSTALLATION WORKS & TESTING)** |  | 2013-01-06 | 2013-01-17 |  |  |  |  |  |
| JF721.550 |  | Prepare Shell Course # 2 for Erection | 3d | 2013-01-06 | 2013-01-08 | JF721.549 SS+2d | 5d | 0d | Truck Flat Bed [10 h]; Crane Operator [10 h]; Forman [10 h]; Fabricator [30 h]; Helper [70 h]; Diesel Truck [10 h]; QC inspector [10 h]; Safety Officer [10 h]; Project Engineer [10 h]; Rigger [10 h]; Driver [10 h]; Welder 6G [80 h]; Tack Welder [20 h]; Compressor 450 CFM [80 h]; Vehicle (pick up 3/4T 4*2) [10 h]; Cutting Machine [10 h]; Shell Course #2 / (site Installation works& testing) [0.05] | 5,520.68 |
| JF721.551 |  | Erect & Tack Shell Course # 2 | 3d | 2013-01-08 | 2013-01-10 | JF721.550 | 5d | 0d | Crane Operator [20 h]; Diesel Truck [20 h]; Forman [20 h]; Rigger [20 h]; Truck Flat Bed [20 h]; Fabricator [60 h]; Tack Welder [40 h]; Compressor 450 CFM [160 h]; Helper [140 h]; QC inspector [20 h]; Safety Officer [20 h]; Welder 6G [160 h]; Cutting Machine [20 h]; Vehicle (pick up 3/4T 4*2) [20 h]; Project Engineer [20 h]; Shell Course #2 / (site Installation works& testing) [0.1] | 11,041.35 |
| JF721.552 |  | Weld Outer Vertical Seam | 5d | 2013-01-09 | 2013-01-13 | JF721.551 SS+1d | 5d | 0d | QC inspector [30 h]; Crane Operator [30 h]; Diesel Truck [30 h]; Forman [30 h]; Rigger [30 h]; Fabricator [30 h]; Welder 6G [240 h]; Compressor 450 CFM [240 h]; Helper [210 h]; Safety Officer [30 h]; Project Engineer [30 h]; Driver [30 h]; Truck Flat Bed [30 h]; Tack Welder [60 h]; Shell Course #2 / (site Installation works& testing) [0.2] | 22,082.7 |
| JF721.553 |  | Backgouge & NDT Inside Vertical Seam | 4d | 2013-01-10 | 2013-01-13 | JF721.552 SS+1d | 5d | 0d | Fabricator [60 h]; Forman [20 h]; Helper [140 h]; QC inspector [20 h]; Safety Officer [20 h]; Crane Operator [20 h]; Diesel Truck [20 h]; Project Engineer [20 h]; Rigger [20 h]; Driver [20 h]; Truck Flat Bed [20 h]; Welder 6G [160 h]; Tack Welder [40 h]; Compressor 450 CFM [160 h]; Vehicle (pick up 3/4T 4*2) [20 h]; Cutting Machine [20 h]; Shell Course #2 / (site Installation works& testing) [0.1] | 11,041.35 |
| JF721.554 |  | Weld Inside Vertical Seam | 4d | 2013-01-10 | 2013-01-14 | JF721.553 SS+1d | 5d | 0d | QC inspector [20 h]; Forman [20 h]; Fabricator [60 h]; Welder 6G [160 h]; Compressor 450 CFM [160 h]; Helper [80 h]; Safety Officer [20 h]; Diesel Truck [20 h]; Project Engineer [20 h]; Crane Operator [20 h]; Driver [20 h]; Truck Flat Bed [20 h]; Tack Welder [40 h]; Vehicle (pick up 3/4T 4*2) [20 h]; Cutting Machine [20 h]; Shell Course #2 / (site Installation works& testing) [0.2] | 22,082.7 |
| JF721.555 |  | "Fit & Tack Horizontal Seam between / Shell Course # 1 & 2" | 4d | 2013-01-12 | 2013-01-15 | JF721.554 SS+1d | 5d | 0d | Forman [20 h]; Fabricator [60 h]; Tack Welder [40 h]; Compressor 450 CFM [160 h]; QC inspector [20 h]; Safety Officer [20 h]; Diesel Truck [20 h]; Crane Operator [20 h]; Project Engineer [20 h]; Rigger [20 h]; Driver [20 h]; Truck Flat Bed [20 h]; Welder 6G [20 h]; Vehicle (pick up 3/4T 4*2) [20 h]; Cutting Machine [20 h]; Helper [140 h]; Shell Course #2 / (site Installation works& testing) [0.05] | 5,520.68 |
| JF721.556 |  | "Weld Outer Horizontal Seam between / Shell Course # 1 & 2" | 6d | 2013-01-12 | 2013-01-17 | JF721.555 SS+1d | 5d | 0d | Forman [40 h]; QC inspector [40 h]; Welder 6G [320 h]; Compressor 450 CFM [320 h]; Cutting Machine [40 h]; Diesel Truck [40 h]; Crane Operator [40 h]; Driver [40 h]; Fabricator [120 h]; Truck Flat Bed [40 h]; Helper [280 h]; Project Engineer [40 h]; Safety Officer [40 h]; Tack Welder [80 h]; Vehicle (pick up 3/4T 4*2) [40 h]; Shell Course #2 / (site Installation works& testing) [0.1] | 11,041.35 |
| JF721.557 |  | "Backgouge & NDT Inside Horizontal / Seam between Shell Course# 1 & 2" | 4d | 2013-01-13 | 2013-01-16 | JF721.556 SS+1d | 5d | 0d | QC inspector [20 h]; Forman [20 h]; Fabricator [60 h]; Helper [140 h]; Diesel Truck [20 h]; Crane Operator [20 h]; Driver [20 h]; Truck Flat Bed [20 h]; Cutting Machine [20 h]; Safety Officer [20 h]; Project Engineer [20 h]; Tack Welder [40 h]; Vehicle (pick up 3/4T 4*2) [20 h]; Compressor 450 CFM [160 h]; Welder 6G [160 h]; Shell Course #2 / (site Installation works& testing) [0.05] | 5,520.68 |
| JF721.558 |  | Weld Inner Horizontal Seam between / Shell Course # 1 & 2" | 4d | 2013-01-14 | 2013-01-17 | JF721.557 SS+1d | 5d | 0d | QC inspector [20 h]; Forman [20 h]; Welder 6G [160 h]; Compressor 450 CFM [160 h]; Diesel Truck [20 h]; Crane Operator [20 h]; Driver [20 h]; Truck Flat Bed [20 h]; Fabricator [60 h]; Cutting Machine [20 h]; Helper [140 h]; Project Engineer [20 h]; Rigger [20 h]; Safety Officer [20 h]; Tack Welder [40 h]; Vehicle (pick up 3/4T 4*2) [20 h]; Shell Course #2 / (site Installation works& testing) [0.15] | 16,562.03 |
|  | 7 | **SHELL COURSE#3 (SITE INSTALLATION WORKS & TESTING)** |  | 2013-01-14 | 2013-01-26 |  |  |  |  |  |
| JF721.559 |  | Prepare Shell Course # 3 for Erection | 3d | 2013-01-14 | 2013-01-16 | JF721.558 SS | 5d | 0d | Forman [10 h]; Crane Operator [10 h]; Rigger [10 h]; Truck Flat Bed [10 h]; Fabricator [30 h]; Helper [70 h]; Diesel Truck [10 h]; Driver [10 h]; Cutting Machine [10 h]; Project Engineer [10 h]; QC inspector [10 h]; Safety Officer [10 h]; Compressor 450 CFM [80 h]; Welder 6G [80 h]; Tack Welder [20 h]; Shell Course #3 / (site Installation works& testing) [0.05] | 5,520.68 |
| JF721.560 |  | Erect & Tack Shell Course # 3 | 4d | 2013-01-16 | 2013-01-20 | JF721.559 | 5d | 0d | Diesel Truck [20 h]; Crane Operator [20 h]; Forman [20 h]; Rigger [20 h]; Truck Flat Bed [20 h]; Fabricator [60 h]; Tack Welder [40 h]; Compressor 450 CFM [160 h]; Helper [140 h]; Driver [20 h]; Project Engineer [20 h]; QC inspector [20 h]; Safety Officer [20 h]; Welder 6G [160 h]; Shell Course #3 / (site Installation works& testing) [0.1] | 11,041.35 |
| JF721.561 |  | Weld Outer Vertical Seam | 5d | 2013-01-17 | 2013-01-22 | JF721.560 SS+1d | 5d | 0d | Helper [210 h]; Forman [30 h]; Fabricator [90 h]; Welder 6G [240 h]; Compressor 450 CFM [240 h]; QC inspector [30 h]; Driver [30 h]; Truck Flat Bed [30 h]; Cutting Machine [30 h]; Project Engineer [30 h]; Vehicle (pick up 3/4T 4*2) [30 h]; Diesel Truck [30 h]; Crane Operator [30 h]; Rigger [30 h]; Tack Welder [60 h]; Shell Course #3 / (site Installation works& testing) [0.2] | 22,082.7 |
| JF721.562 |  | Backgouge & NDT Inside Vertical Seam | 4d | 2013-01-19 | 2013-01-22 | JF721.561 SS+1d | 5d | 0d | Forman [20 h]; Truck Flat Bed [20 h]; Helper [140 h]; Diesel Truck [20 h]; Crane Operator [20 h]; Driver [20 h]; Fabricator [60 h]; Cutting Machine [20 h]; Project Engineer [20 h]; QC inspector [20 h]; Rigger [20 h]; Safety Officer [20 h]; Vehicle (pick up 3/4T 4*2) [20 h]; Compressor 450 CFM [160 h]; Welder 6G [160 h]; Tack Welder [40 h]; Shell Course #3 / (site Installation works& testing) [0.1] | 11,041.35 |
| JF721.563 |  | Weld Inside Vertical Seam | 4d | 2013-01-19 | 2013-01-22 | JF721.562 SS+1d | 5d | 0d | Forman [20 h]; Fabricator [60 h]; Welder 6G [160 h]; Helper [140 h]; Compressor 450 CFM [160 h]; Cutting Machine [20 h]; QC inspector [20 h]; Diesel Truck [20 h]; Crane Operator [20 h]; Driver [20 h]; Truck Flat Bed [20 h]; Project Engineer [20 h]; Safety Officer [20 h]; Rigger [20 h]; Tack Welder [40 h]; Vehicle (pick up 3/4T 4*2) [20 h]; Shell Course #3 / (site Installation works& testing) [0.2] | 22,082.7 |
| JF721.564 |  | "Fit & Tack Horizontal Seam between / Shell Course # 2 & 3" | 4d | 2013-01-20 | 2013-01-23 | JF721.563 SS+1d | 5d | 0d | Forman [20 h]; Fabricator [60 h]; Helper [140 h]; Tack Welder [40 h]; Diesel Truck [20 h]; Crane Operator [20 h]; Driver [20 h]; Truck Flat Bed [20 h]; Cutting Machine [20 h]; Project Engineer [20 h]; QC inspector [20 h]; Safety Officer [20 h]; Rigger [20 h]; Vehicle (pick up 3/4T 4*2) [20 h]; Compressor 450 CFM [160 h]; Welder 6G [160 h]; Shell Course #3 / (site Installation works& testing) [0.05] | 5,520.68 |
| JF721.565 |  | "Weld Outer Horizontal Seam between / Shell Course # 2 & 3" | 6d | 2013-01-21 | 2013-01-26 | JF721.564 SS+1d | 5d | 0d | Forman [40 h]; Welder 6G [320 h]; Compressor 450 CFM [320 h]; Cutting Machine [40 h]; QC inspector [40 h]; Diesel Truck [40 h]; Crane Operator [40 h]; Driver [40 h]; Truck Flat Bed [40 h]; Project Engineer [40 h]; Safety Officer [40 h]; Tack Welder [80 h]; Vehicle (pick up 3/4T 4*2) [40 h]; Fabricator [120 h]; Helper [280 h]; Shell Course #3 / (site Installation works& testing) [0.1] | 11,041.35 |
| JF721.566 |  | "Backgouge & NDT Inside Horizontal / Seam between Shell Course# 2 & 3" | 4d | 2013-01-22 | 2013-01-25 | JF721.565 SS+1d | 5d | 0d | Forman [20 h]; QC inspector [20 h]; Helper [140 h]; Fabricator [60 h]; Diesel Truck [20 h]; Crane Operator [20 h]; Driver [20 h]; Truck Flat Bed [20 h]; Rigger [20 h]; Cutting Machine [20 h]; Welder 6G [160 h]; Compressor 450 CFM [160 h]; Tack Welder [40 h]; Shell Course #3 / (site Installation works& testing) [0.05] | 5,520.68 |
| JF721.567 |  | Weld Inner Horizontal Seam between / Shell Course # 2 & 3" | 4d | 2013-01-23 | 2013-01-26 | JF721.566 SS+1d | 5d | 0d | Forman [20 h]; Welder 6G [160 h]; QC inspector [20 h]; Compressor 450 CFM [160 h]; Cutting Machine [20 h]; Diesel Truck [20 h]; Crane Operator [20 h]; Driver [20 h]; Fabricator [60 h]; Truck Flat Bed [20 h]; Project Engineer [20 h]; Rigger [20 h]; Safety Officer [20 h]; Vehicle (pick up 3/4T 4*2) [20 h]; Tack Welder [40 h]; Helper [140 h]; Shell Course #3 / (site Installation works& testing) [0.15] | 16,562.03 |
|  | 8 | **SHELL COURSE#4 (SITE INSTALLATION WORKS & TESTING)** |  | 2013-01-07 | 2013-02-06 |  |  |  |  |  |
| JF721.577 |  | Fit, Weld Shell Course # 1 Annular Plate & Oil Test | 8d | 2013-01-07 | 2013-01-14 | JF721.549 | 27d | 22d | Fabricator [180 h]; Tack Welder [120 h]; Compressor 450 CFM [480 h]; Helper [420 h]; Diesel Truck [60 h]; Crane Operator [60 h]; Driver [60 h]; Cutting Machine [60 h]; Project Engineer [60 h]; QC inspector [60 h]; Rigger [60 h]; Welder 6G [480 h]; Vehicle (pick up 3/4T 4*2) [60 h]; Truck Flat Bed [60 h]; Shell Course #4 (site Installation works & testing) [0.05] | 5,520.68 |
| JF721.568 |  | Prepare Shell Course # 4 for Erection | 3d | 2013-01-26 | 2013-01-28 | JF721.567, JF721.577 SS | 5d | 0d | Forman [10 h]; Diesel Truck [10 h]; Fabricator [30 h]; Helper [70 h]; QC inspector [10 h]; Safety Officer [10 h]; Tack Welder [20 h]; Welder 6G [80 h]; Compressor 450 CFM [80 h]; Crane Operator [10 h]; Driver [10 h]; Truck Flat Bed [10 h]; Cutting Machine [10 h]; Project Engineer [10 h]; Rigger [10 h]; Vehicle (pick up 3/4T 4*2) [10 h]; Shell Course #4 (site Installation works & testing) [0.05] | 5,520.68 |
| JF721.569 |  | Erect & Tack Shell Course # 4 | 4d | 2013-01-28 | 2013-01-31 | JF721.568 | 5d | 0d | Compressor 450 CFM [160 h]; Cutting Machine [20 h]; Helper [140 h]; Tack Welder [40 h]; Fabricator [60 h]; Truck Flat Bed [20 h]; Diesel Truck [20 h]; Crane Operator [20 h]; Forman [20 h]; Project Engineer [20 h]; QC inspector [20 h]; Safety Officer [20 h]; Welder 6G [160 h]; Vehicle (pick up 3/4T 4*2) [20 h]; Rigger [20 h]; Shell Course #4 (site Installation works & testing) [0.1] | 11,041.35 |
| JF721.570 |  | Weld Outer Vertical Seam | 5d | 2013-01-29 | 2013-02-02 | JF721.569 SS+1d | 5d | 0d | Forman [30 h]; QC inspector [30 h]; Rigger [30 h]; Fabricator [90 h]; Welder 6G [240 h]; Compressor 450 CFM [240 h]; Cutting Machine [30 h]; Diesel Truck [30 h]; Driver [30 h]; Truck Flat Bed [30 h]; Project Engineer [30 h]; Vehicle (pick up 3/4T 4*2) [30 h]; Helper [210 h]; Tack Welder [60 h]; Crane Operator [30 h]; Shell Course #4 (site Installation works & testing) [0.2] | 22,082.7 |
| JF721.571 |  | Backgouge & NDT Inside Vertical Seam | 4d | 2013-01-29 | 2013-02-02 | JF721.570 SS+1d | 5d | 0d | Forman [20 h]; Fabricator [60 h]; Helper [140 h]; Diesel Truck [20 h]; Crane Operator [20 h]; Driver [20 h]; Truck Flat Bed [20 h]; Cutting Machine [20 h]; Project Engineer [20 h]; QC inspector [20 h]; Rigger [20 h]; Safety Officer [20 h]; Tack Welder [40 h]; Vehicle (pick up 3/4T 4*2) [20 h]; Welder 6G [160 h]; Compressor 450 CFM [160 h]; Shell Course #4 (site Installation works & testing) [0.1] | 11,041.35 |
| JF721.572 |  | Weld Inside Vertical Seam | 4d | 2013-01-30 | 2013-02-03 | JF721.571 SS+1d | 5d | 0d | QC inspector [20 h]; Forman [20 h]; Welder 6G [160 h]; Compressor 450 CFM [160 h]; Cutting Machine [20 h]; Helper [140 h]; Diesel Truck [20 h]; Crane Operator [20 h]; Driver [20 h]; Fabricator [60 h]; Project Engineer [20 h]; Safety Officer [20 h]; Vehicle (pick up 3/4T 4*2) [20 h]; Tack Welder [40 h]; Shell Course #4 (site Installation works & testing) [0.15] | 16,562.03 |
| JF721.573 |  | "Fit & Tack Horizontal Seam between / Shell Course # 3 & 4" | 4d | 2013-01-31 | 2013-02-04 | JF721.572 SS+1d | 5d | 0d | Forman [20 h]; Fabricator [60 h]; Tack Welder [40 h]; Compressor 450 CFM [160 h]; Cutting Machine [20 h]; Helper [140 h]; Welder 6G [160 h]; Diesel Truck [20 h]; Driver [20 h]; Truck Flat Bed [20 h]; Project Engineer [20 h]; QC inspector [20 h]; Rigger [20 h]; Safety Officer [20 h]; Vehicle (pick up 3/4T 4*2) [20 h]; Shell Course #4 (site Installation works & testing) [0.1] | 11,041.35 |
| JF721.574 |  | Weld Outer Horizontal Seam between / Shell Course # 3 & 4 | 6d | 2013-02-01 | 2013-02-06 | JF721.573 SS+1d | 5d | 0d | Forman [40 h]; Welder 6G [320 h]; Compressor 450 CFM [320 h]; Diesel Truck [40 h]; Driver [40 h]; Crane Operator [40 h]; Truck Flat Bed [40 h]; Cutting Machine [40 h]; Project Engineer [40 h]; QC inspector [40 h]; Safety Officer [40 h]; Tack Welder [80 h]; Helper [280 h]; Fabricator [120 h]; Vehicle (pick up 3/4T 4*2) [40 h]; Shell Course #4 (site Installation works & testing) [0.1] | 11,041.35 |
| JF721.575 |  | "Backgouge & NDT Inside Horizontal / Seam between Shell Course# 3 & 4" | 4d | 2013-02-02 | 2013-02-05 | JF721.574 SS+1d | 5d | 0d | Forman [20 h]; Fabricator [60 h]; Helper [140 h]; Diesel Truck [20 h]; Driver [20 h]; Truck Flat Bed [20 h]; Cutting Machine [20 h]; Project Engineer [20 h]; QC inspector [20 h]; Safety Officer [20 h]; Rigger [20 h]; Tack Welder [40 h]; Vehicle (pick up 3/4T 4*2) [20 h]; Welder 6G [160 h]; Compressor 450 CFM [160 h]; Shell Course #4 (site Installation works & testing) [0.05] | 5,520.68 |
| JF721.576 |  | Weld Inner Horizontal Seam between / Shell Course # 3 & 4" | 4d | 2013-02-03 | 2013-02-06 | JF721.575 SS+1d | 5d | 0d | Forman [20 h]; QC inspector [20 h]; Welder 6G [160 h]; Compressor 450 CFM [160 h]; Driver [20 h]; Fabricator [60 h]; Truck Flat Bed [20 h]; Cutting Machine [20 h]; Helper [140 h]; Project Engineer [20 h]; Rigger [20 h]; Safety Officer [20 h]; Tack Welder [40 h]; Vehicle (pick up 3/4T 4*2) [20 h]; Diesel Truck [20 h]; Crane Operator [20 h]; Shell Course #4 (site Installation works & testing) [0.1] | 11,041.35 |

| ID | WBS | Activity | Type | Duration | Start | Finish | Predecessors | Total float | Free float | Resources | Cost |
| --- | --- | --- | --- | --- | --- | --- | --- | --- | --- | --- | --- |
|  | 9 | **CURB ANGLE(SITE INSTALLATION WORKS)** |  |  | 2013-02-06 | 2013-02-15 |  |  |  |  |  |
| JF721.578 |  | Erect & Tack Curve Angle |  | 4d | 2013-02-06 | 2013-02-10 | JF721.576 | 5d | 0d | Forman [20 h]; Diesel Truck [20 h]; Crane Operator [20 h]; Project Engineer [20 h]; Compressor 450 CFM [160 h]; Tack Welder [40 h]; Helper [140 h]; Cutting Machine [20 h]; Rigger [20 h]; Safety Officer [20 h]; Vehicle (pick up 3/4T 4*2) [20 h]; Welder 6G [160 h]; Driver [20 h]; Truck Flat Bed [20 h]; Fabricator [60 h]; Curve Angel / (site Installation works) [0.3] | 11,041.35 |
| JF721.579 |  | Weld Curve Angle |  | 6d | 2013-02-10 | 2013-02-15 | JF721.578 | 5d | 0d | Forman [40 h]; Fabricator [120 h]; Welder 6G [200 h]; Helper [280 h]; Compressor 450 CFM [200 h]; Diesel Truck [40 h]; Crane Operator [40 h]; Driver [40 h]; Truck Flat Bed [40 h]; Cutting Machine [40 h]; Safety Officer [40 h]; Project Engineer [40 h]; QC inspector [40 h]; Tack Welder [80 h]; Vehicle (pick up 3/4T 4*2) [40 h]; Curve Angel / (site Installation works) [0.7] | 25,763.15 |
|  | 10 | **SHELL MANHOLES & NOZZLES** |  |  | 2013-02-10 | 2013-02-20 |  |  |  |  |  |
| JF721.580 |  | MArk & Cut Holes |  | 5d | 2013-02-10 | 2013-02-14 | JF721.579 SS, JF721.524 | 5d | 0d | Fabricator [90 h]; Helper [210 h]; Cutting Machine [30 h]; Diesel Truck [30 h]; Crane Operator [30 h]; Driver [30 h]; Truck Flat Bed [30 h]; QC inspector [30 h]; Project Engineer [30 h]; Safety Officer [30 h]; Tack Welder [60 h]; Vehicle (pick up 3/4T 4*2) [30 h]; Welder 6G [150 h]; Compressor 450 CFM [150 h]; Shell manholes & / nozzles(site Installation works & testing) [0.1] | 3,680.45 |
| JF721.581 |  | Fit & Tack Manholes ,Nozzles on Shell |  | 4d | 2013-02-11 | 2013-02-14 | JF721.580 SS+1d | 5d | 0d | Fabricator [60 h]; Helper [140 h]; Compressor 450 CFM [80 h]; Cutting Machine [20 h]; Diesel Truck [20 h]; Crane Operator [20 h]; Driver [20 h]; Truck Flat Bed [20 h]; Project Engineer [20 h]; Rigger [20 h]; Tack Welder [40 h]; Welder 6G [80 h]; QC inspector [20 h]; Safety Officer [20 h]; Shell manholes & / nozzles(site Installation works & testing) [0.3] | 11,041.35 |
| JF721.582 |  | Weld MAnholes & Nozzles on shell |  | 7d | 2013-02-11 | 2013-02-17 | JF721.581 SS+1d | 5d | 0d | Welder 6G [200 h]; Compressor 450 CFM [200 h]; Helper [350 h]; Fabricator [150 h]; Diesel Truck [50 h]; Crane Operator [50 h]; Driver [50 h]; Truck Flat Bed [50 h]; Cutting Machine [50 h]; Project Engineer [50 h]; QC inspector [50 h]; Safety Officer [50 h]; Tack Welder [100 h]; Vehicle (pick up 3/4T 4*2) [50 h]; Rigger [50 h]; Shell manholes & / nozzles(site Installation works & testing) [0.45] | 16,562.03 |
| JF721.583 |  | NDT on Manholes & Nozzles on shell |  | 3d | 2013-02-18 | 2013-02-20 | JF721.582 | 5d | 0d | Rigger [10 h]; Diesel Truck [10 h]; Crane Operator [10 h]; Driver [10 h]; Truck Flat Bed [10 h]; Fabricator [30 h]; Cutting Machine [10 h]; Helper [70 h]; Project Engineer [10 h]; QC inspector [10 h]; Safety Officer [10 h]; Tack Welder [20 h]; Vehicle (pick up 3/4T 4*2) [10 h]; Welder 6G [40 h]; Compressor 450 CFM [40 h]; Shell manholes & / nozzles(site Installation works & testing) [0.15] | 5,520.68 |
|  | 11 | **ALUMINUM DOME ROOF (SITE INSTALLATION WORKS)** |  |  | 2013-02-20 | 2013-04-07 |  |  |  |  |  |
| JF721.584 |  | Prepare Tank for Roof Contruction |  | 4d | 2013-02-20 | 2013-02-24 | JF721.527, JF721.583 | 5d | 0d | Third party for ALuminum Dome Roof Supervisor [20 h]; Diesel Truck [20 h]; Helper [140 h]; Fabricator [60 h]; Crane Operator [20 h]; Forman [20 h]; QC inspector [20 h]; Project Engineer [20 h]; Driver [20 h]; Truck Flat Bed [20 h]; Welder 6G [80 h]; Compressor 450 CFM [80 h]; Tack Welder [40 h]; Safety Officer [20 h]; Cutting Machine [20 h]; Aluminum Doom Roof / (Site Installation works) [0.15] | 19,322.36 |
| JF721.585 |  | Install Shoe Support Structure on Shell |  | 8d | 2013-02-24 | 2013-03-02 | JF721.584 | 5d | 0d | Fabricator [180 h]; Third party for ALuminum Dome Roof Supervisor [60 h]; Forman [60 h]; Diesel Truck [60 h]; Crane Operator [60 h]; Rigger [20 h]; Helper [420 h]; Compressor 450 CFM [240 h]; Welder 6G [240 h]; Tack Welder [120 h]; Safety Officer [60 h]; QC inspector [60 h]; Project Engineer [60 h]; Cutting Machine [60 h]; Truck Flat Bed [60 h]; Driver [60 h]; Aluminum Doom Roof / (Site Installation works) [0.2] | 25,763.15 |
| JF721.586 |  | Install / Assemble Roof Rafters |  | 20d | 2013-03-03 | 2013-03-19 | JF721.585 | 5d | 0d | Crane Operator [200 h]; Diesel Truck [200 h]; Third party for ALuminum Dome Roof Supervisor [200 h]; Forman [200 h]; Rigger [200 h]; Fabricator [600 h]; Helper [1400 h]; Compressor 450 CFM [800 h]; Welder 6G [800 h]; Vehicle (pick up 3/4T 4*2) [200 h]; Tack Welder [400 h]; Project Engineer [200 h]; Cutting Machine [200 h]; Truck Flat Bed [200 h]; Driver [200 h]; Aluminum Doom Roof / (Site Installation works) [0.25] | 32,203.94 |
| JF721.587 |  | Installation of Roof Plates |  | 15d | 2013-03-20 | 2013-04-01 | JF721.586 | 5d | 0d | Third party for ALuminum Dome Roof Supervisor [150 h]; Project Engineer [150 h]; Safety Officer [150 h]; QC inspector [150 h]; Diesel Truck [150 h]; Forman [150 h]; Rigger [150 h]; Fabricator [450 h]; Helper [1050 h]; Compressor 450 CFM [600 h]; Welder 6G [600 h]; Tack Welder [300 h]; Cutting Machine [150 h]; Vehicle (pick up 3/4T 4*2) [150 h]; Driver [150 h]; Crane Operator [150 h]; Aluminum Doom Roof / (Site Installation works) [0.3] | 38,644.72 |
| JF721.588 |  | Install Roof Manholes & Nozzles |  | 6d | 2013-04-02 | 2013-04-07 | JF721.587 | 5d | 0d | Forman [40 h]; Fabricator [40 h]; Helper [280 h]; Crane Operator [40 h]; Diesel Truck [40 h]; Rigger [40 h]; Truck Flat Bed [40 h]; Compressor 450 CFM [40 h]; Welder 6G [40 h]; Tack Welder [80 h]; QC inspector [40 h]; Project Engineer [40 h]; Cutting Machine [40 h]; Driver [40 h]; Vehicle (pick up 3/4T 4*2) [40 h]; Aluminum Doom Roof / (Site Installation works) [0.1] | 12,881.58 |
|  | 12 | **PLATFORMS & HANDRAILS (SITE INSTALLATION WORKS)** |  |  | 2013-04-07 | 2013-04-15 |  |  |  |  |  |
| JF721.589 |  | Erect & Fix Stairs, Handrails & Platforms on Shell |  | 5d | 2013-04-07 | 2013-04-11 | JF721.588, JF721.525 | 5d | 0d | Forman [30 h]; Crane Operator [30 h]; Diesel Truck [30 h]; Fabricator [60 h]; Helper [210 h]; Rigger [40 h]; Compressor 450 CFM [30 h]; Welder 6G [30 h]; Tack Welder [30 h]; Vehicle (pick up 3/4T 4*2) [30 h]; QC inspector [30 h]; Project Engineer [30 h]; Safety Officer [30 h]; Driver [30 h]; Cutting Machine [30 h]; Platforms & / handrails (site Installation works) [0.35] | 19,322.36 |
| JF721.590 |  | Erect & Fix Roof Platforms & Handrails |  | 5d | 2013-04-11 | 2013-04-15 | JF721.589 | 5d | 0d | Diesel Truck [30 h]; Forman [30 h]; Crane Operator [30 h]; Rigger [30 h]; Fabricator [60 h]; Helper [210 h]; Compressor 450 CFM [30 h]; Welder 6G [30 h]; Vehicle (pick up 3/4T 4*2) [30 h]; Safety Officer [30 h]; QC inspector [30 h]; Project Engineer [30 h]; Cutting Machine [30 h]; Truck Flat Bed [30 h]; Driver [30 h]; Platforms & / handrails (site Installation works) [0.65] | 35,884.39 |
|  | 20 | **MCC** |  |  | 2013-04-15 | 2013-04-15 |  |  |  |  |  |
| 2.D |  | MCC | milestone | 0d | 2013-04-15 | 2013-04-15 | JF721.590 | 5d | 0d |  |  |
|  | 13 | **HYDROTESTING** |  |  | 2013-04-15 | 2013-05-20 |  |  |  |  |  |
| JF721.591 |  | Install Blind Flanges |  | 1d | 2013-04-15 | 2013-04-16 | 2.D | 5d | 0d | Helper [50 h]; Fabricator [10 h]; Forman [10 h]; Welder 6G [10 h]; Compressor 450 CFM [10 h]; QC inspector [10 h]; Project Engineer [10 h]; Driver [10 h]; Vehicle (pick up 3/4T 4*2) [10 h]; Truck Flat Bed [10 h]; Crane Operator [10 h]; Diesel Truck [10 h]; Cutting Machine [10 h]; Hydrotesting [0.15] | 11,041.35 |
| JF721.592 |  | Tank Water Filling |  | 23d | 2013-04-16 | 2013-05-06 | JF721.591 | 5d | 0d | Water truck 30,000 Gallons [230 h]; Helper [460 h]; Forman [230 h]; Vehicle (pick up 3/4T 4*2) [230 h]; Rigger [230 h]; Project Engineer [230 h]; QC inspector [230 h]; Cutting Machine [230 h]; Driver [230 h]; Diesel Truck [230 h]; Crane Operator [230 h]; Hydrotesting [0.2] | 14,721.8 |
| JF721.593 |  | Hold Water for 48 Hours |  | 2d | 2013-05-06 | 2013-05-08 | JF721.592 | 5d | 0d | Helper [60 h]; Diesel Truck [20 h]; Driver [20 h]; Crane Operator [20 h]; Cutting Machine [20 h]; Forman [20 h]; Project Engineer [20 h]; QC inspector [20 h]; Rigger [20 h]; Safety Officer [20 h]; Hydrotesting [0.3] | 22,082.7 |
| JF721.594 |  | Drain Water from Tank |  | 12d | 2013-05-08 | 2013-05-18 | JF721.593 | 12d | 0d | Helper [480 h]; Forman [120 h]; Diesel Truck [120 h]; Driver [120 h]; Truck Flat Bed [120 h]; Cutting Machine [120 h]; Project Engineer [120 h]; QC inspector [120 h]; Rigger [120 h]; Safety Officer [120 h]; Vehicle (pick up 3/4T 4*2) [120 h]; Hydrotesting [0.15] | 11,041.35 |
| JF721.595 |  | Clean & Dry Out Tank |  | 2d | 2013-05-18 | 2013-05-20 | JF721.594 | 12d | 0d | Forman [20 h]; Helper [80 h]; Diesel Truck [20 h]; Truck Flat Bed [20 h]; Driver [20 h]; Cutting Machine [20 h]; QC inspector [20 h]; Project Engineer [20 h]; Safety Officer [20 h]; Vehicle (pick up 3/4T 4*2) [20 h]; Hydrotesting [0.2] | 14,721.8 |

| ID | WBS | Activity | Type | Duration | Start | Finish | Predecessors | Total float | Free float | Resources | Cost |
| --- | --- | --- | --- | --- | --- | --- | --- | --- | --- | --- | --- |
|  | 21 | **Final Testing** |  |  | 2013-05-20 | 2013-05-20 |  |  |  |  |  |
| 4.D |  | Final Testing | milestone | 0d | 2013-05-20 | 2013-05-20 | JF721.595 | 12d | 0d |  |  |
|  | 14 | **EXTERNAL SITE PAINTING** |  |  | 2013-05-08 | 2013-05-28 |  |  |  |  |  |
| JF721.596 |  | Erect Scafolding Outside Tank |  | 10d | 2013-05-08 | 2013-05-16 | JF721.593 | 5d | 0d | Forman [80 h]; Diesel Truck [80 h]; Driver [80 h]; Crane Operator [80 h]; Cutting Machine [80 h]; Project Engineer [80 h]; QC inspector [80 h]; Safety Officer [80 h]; Vehicle (pick up 3/4T 4*2) [80 h]; Scaffolder [160 h]; Helper [320 h]; External site painting [0.2] | 7,360.9 |
| JF721.597 |  | External Shell Blast & Prime |  | 6d | 2013-05-16 | 2013-05-21 | JF721.596 | 5d | 0d | Painter [80 h]; Blaster [80 h]; Helper [160 h]; Crane Operator [40 h]; Diesel Truck [40 h]; Driver [40 h]; Truck Flat Bed [40 h]; Project Engineer [40 h]; QC inspector [40 h]; Safety Officer [40 h]; Vehicle (pick up 3/4T 4*2) [40 h]; Forman [40 h]; External site painting [0.3] | 11,041.35 |
| JF721.598 |  | External Shell Secondary & Final Coat |  | 6d | 2013-05-17 | 2013-05-22 | JF721.597 SS+1d | 5d | 0d | Helper [160 h]; Blaster [80 h]; Painter [80 h]; Diesel Truck [40 h]; Crane Operator [40 h]; Driver [40 h]; Truck Flat Bed [40 h]; Cutting Machine [40 h]; Project Engineer [40 h]; QC inspector [40 h]; Safety Officer [40 h]; Vehicle (pick up 3/4T 4*2) [40 h]; Forman [40 h]; External site painting [0.3] | 11,041.35 |
| JF721.599 |  | External Shell Paint Inspection |  | 3d | 2013-05-22 | 2013-05-25 | JF721.598 | 5d | 0d | QC inspector [10 h]; Forman [10 h]; Diesel Truck [10 h]; Crane Operator [10 h]; Driver [10 h]; Cutting Machine [10 h]; Project Engineer [10 h]; Safety Officer [10 h]; Vehicle (pick up 3/4T 4*2) [10 h]; Helper [40 h]; External site painting [0.1] | 3,680.45 |
| JF721.600 |  | Dismantle External Scaffolding |  | 4d | 2013-05-25 | 2013-05-28 | JF721.599 | 5d | 0d | Scaffolder [40 h]; Forman [20 h]; Diesel Truck [20 h]; Crane Operator [20 h]; Driver [20 h]; Truck Flat Bed [20 h]; Helper [80 h]; Project Engineer [20 h]; QC inspector [20 h]; Rigger [20 h]; Safety Officer [20 h]; Vehicle (pick up 3/4T 4*2) [20 h]; External site painting [0.1] | 3,680.45 |
|  | 15 | **INTERNAL SITE PAINTING** |  |  | 2013-05-20 | 2013-06-19 |  |  |  |  |  |
| JF721.601 |  | Erect Scafolding Inside Tank |  | 8d | 2013-05-20 | 2013-05-27 | 4.D | 12d | 7d | Forman [60 h]; Scaffolder [120 h]; Vehicle (pick up 3/4T 4*2) [60 h]; Rigger [60 h]; QC inspector [60 h]; Project Engineer [60 h]; Helper [240 h]; Cutting Machine [60 h]; Truck Flat Bed [60 h]; Driver [60 h]; Crane Operator [60 h]; Diesel Truck [60 h]; internal site painting [0.15] | 11,041.35 |
| JF721.602 |  | Internal Shell Blast & Prime |  | 5d | 2013-05-28 | 2013-06-02 | JF721.601 SS+3d, JF721.600 | 5d | 0d | Blaster [60 h]; Painter [60 h]; Helper [120 h]; Vehicle (pick up 3/4T 4*2) [30 h]; Safety Officer [30 h]; Rigger [30 h]; Project Engineer [30 h]; QC inspector [30 h]; Cutting Machine [30 h]; Truck Flat Bed [30 h]; Driver [30 h]; Diesel Truck [30 h]; Crane Operator [30 h]; internal site painting [0.2] | 14,721.8 |
| JF721.603 |  | Internal Shell Secondary & Final Coat |  | 5d | 2013-06-02 | 2013-06-06 | JF721.602 | 5d | 0d | Painter [60 h]; Vehicle (pick up 3/4T 4*2) [30 h]; Rigger [30 h]; Safety Officer [30 h]; Project Engineer [30 h]; QC inspector [30 h]; Helper [120 h]; Cutting Machine [30 h]; Truck Flat Bed [30 h]; Driver [30 h]; Crane Operator [30 h]; Diesel Truck [30 h]; Blaster [60 h]; internal site painting [0.2] | 14,721.8 |
| JF721.604 |  | Internal Shell Paint Inspection |  | 3d | 2013-06-02 | 2013-06-04 | JF721.603 SS | 5d | 0d | Forman [10 h]; QC inspector [10 h]; Vehicle (pick up 3/4T 4*2) [10 h]; Rigger [10 h]; Safety Officer [10 h]; Project Engineer [10 h]; Helper [40 h]; Cutting Machine [10 h]; Driver [10 h]; Diesel Truck [10 h]; Crane Operator [10 h]; internal site painting [0.05] | 3,680.45 |
| JF721.605 |  | Dismantle Internal Scaffolding |  | 6d | 2013-06-04 | 2013-06-09 | JF721.604 | 5d | 0d | Forman [40 h]; Scaffolder [80 h]; Rigger [40 h]; Fabricator [40 h]; Vehicle (pick up 3/4T 4*2) [40 h]; QC inspector [40 h]; Project Engineer [40 h]; Helper [160 h]; Cutting Machine [40 h]; Driver [40 h]; Truck Flat Bed [40 h]; Diesel Truck [40 h]; Crane Operator [40 h]; internal site painting [0.05] | 3,680.45 |
| JF721.606 |  | Bottom/Annular Plate Blast & Prime |  | 4d | 2013-06-10 | 2013-06-13 | JF721.605 | 5d | 0d | Blaster [40 h]; Painter [40 h]; Vehicle (pick up 3/4T 4*2) [20 h]; Safety Officer [20 h]; QC inspector [20 h]; Project Engineer [20 h]; Cutting Machine [20 h]; Truck Flat Bed [20 h]; Driver [20 h]; Crane Operator [20 h]; Diesel Truck [20 h]; Helper [80 h]; internal site painting [0.15] | 11,041.35 |
| JF721.607 |  | Bottom/Annular Plate Secondary & Final Coat |  | 4d | 2013-06-13 | 2013-06-16 | JF721.606 | 5d | 0d | Painter [40 h]; Rigger [20 h]; Safety Officer [20 h]; Project Engineer [20 h]; Helper [80 h]; Cutting Machine [20 h]; Truck Flat Bed [20 h]; Driver [20 h]; Crane Operator [20 h]; Diesel Truck [20 h]; Blaster [40 h]; Vehicle (pick up 3/4T 4*2) [20 h]; internal site painting [0.15] | 11,041.35 |
| JF721.608 |  | Bottom/Annular Plate Paint Inspection |  | 3d | 2013-06-16 | 2013-06-19 | JF721.607 | 5d | 0d | Forman [10 h]; QC inspector [10 h]; Vehicle (pick up 3/4T 4*2) [10 h]; Rigger [10 h]; Safety Officer [10 h]; Project Engineer [10 h]; Helper [40 h]; Cutting Machine [10 h]; Truck Flat Bed [10 h]; Driver [10 h]; Crane Operator [10 h]; Diesel Truck [10 h]; Blaster [20 h]; Scaffolder [20 h]; internal site painting [0.05] | 3,680.45 |
|  | 16 | **ELECTRICAL SITE WORKS** |  |  | 2013-07-22 | 2013-07-27 |  |  |  |  |  |
| JF721.609 |  | Tanks lighting |  | 2d | 2013-07-22 | 2013-07-23 | 4.12 | 5d | 0d | Forman [20 h]; Helper [60 h]; Vehicle (pick up 3/4T 4*2) [20 h]; Safety Officer [20 h]; Rigger [20 h]; QC inspector [20 h]; Project Engineer [20 h]; Cutting Machine [20 h]; Fabricator [20 h]; Driver [20 h]; Diesel Truck [20 h]; Crane Operator [20 h]; Electrical Site Works [0.3] | 11,041.35 |
| JF721.610 |  | Tanks lighting protection |  | 2d | 2013-07-23 | 2013-07-25 | JF721.609 | 5d | 0d | Forman [20 h]; Helper [60 h]; Vehicle (pick up 3/4T 4*2) [20 h]; Rigger [20 h]; Safety Officer [20 h]; QC inspector [20 h]; Project Engineer [20 h]; Cutting Machine [20 h]; Truck Flat Bed [20 h]; Fabricator [20 h]; Driver [20 h]; Crane Operator [20 h]; Diesel Truck [20 h]; Electrical Site Works [0.3] | 11,041.35 |
| JF721.611 |  | Grounding system |  | 2d | 2013-07-25 | 2013-07-27 | JF721.610 | 5d | 0d | Forman [20 h]; Helper [60 h]; Vehicle (pick up 3/4T 4*2) [20 h]; Rigger [20 h]; Safety Officer [20 h]; QC inspector [20 h]; Project Engineer [20 h]; Truck Flat Bed [20 h]; Fabricator [20 h]; Crane Operator [20 h]; Diesel Truck [20 h]; Electrical Site Works [0.4] | 14,721.8 |
|  | 22 | **Complete Installation of Task Lighting for the tanks including Cabling** |  |  | 2013-07-27 | 2013-07-27 |  |  |  |  |  |
| 4.10 |  | Complete Installation | milestone | 0d | 2013-07-27 | 2013-07-27 | JF721.611 | 5d | 0d |  |  |
|  | 17 | **THIRD PARTY INSPECTION** |  |  | 2013-07-27 | 2013-08-07 |  |  |  |  |  |
| JF721.612 |  | Concrete testing |  | 3d | 2013-07-27 | 2013-07-29 | 4.10 | 5d | 0d | Concrete Testing-Third party inspection [30 h]; Forman [30 h]; Helper [60 h]; QC inspector [30 h]; Vehicle (pick up 3/4T 4*2) [30 h]; Project Engineer [30 h]; Cutting Machine [30 h]; Safety Officer [30 h]; Driver [30 h]; Diesel Truck [30 h]; Crane Operator [30 h]; Third Party Inspection [0.1] | 14,721.8 |
| JF721.613 |  | RT testing for the welding |  | 3d | 2013-07-29 | 2013-08-01 | JF721.612 | 5d | 0d | Forman [30 h]; Helper [60 h]; Project Engineer [30 h]; Vehicle (pick up 3/4T 4*2) [30 h]; Rigger [30 h]; Safety Officer [30 h]; QC inspector [30 h]; Cutting Machine [30 h]; Truck Flat Bed [30 h]; Driver [30 h]; Crane Operator [30 h]; Diesel Truck [30 h]; Third Party Inspection [0.45] | 66,248.1 |
| JF721.614 |  | Sand testing |  | 4d | 2013-08-01 | 2013-08-04 | JF721.613 | 5d | 0d | Project Engineer [40 h]; Forman [40 h]; QC inspector [40 h]; Helper [80 h]; Vehicle (pick up 3/4T 4*2) [40 h]; Rigger [40 h]; Safety Officer [40 h]; Cutting Machine [40 h]; Truck Flat Bed [40 h]; Crane Operator [40 h]; Diesel Truck [40 h]; Driver [40 h]; Third Party Inspection [0.1] | 14,721.8 |
| JF721.615 |  | Tank Calibration |  | 3d | 2013-08-05 | 2013-08-07 | JF721.614 | 5d | 0d | Helper [60 h]; Forman [30 h]; Project Engineer [30 h]; QC inspector [30 h]; Vehicle (pick up 3/4T 4*2) [30 h]; Safety Officer [30 h]; Cutting Machine [30 h]; Truck Flat Bed [30 h]; Driver [30 h]; Crane Operator [30 h]; Diesel Truck [30 h]; Rigger [30 h]; Third Party Inspection [0.35] | 51,526.3 |

| ID | WBS | Activity | Type | Duration | Start | Finish | Predecessors | Total float | Free float | Resources | Cost |
| --- | --- | --- | --- | --- | --- | --- | --- | --- | --- | --- | --- |
|  | 23 | **Third Party Testing and Commissioning** |  |  | 2013-08-07 | 2013-08-07 |  |  |  |  |  |
| 3.D |  | THird Party Testing | milestone | 0d | 2013-08-07 | 2013-08-07 | JF721.615 | 5d | 0d |  |  |
|  | 18 | **HAND OVER TO CLIENT (COMMISSIONING)** |  |  | 2013-08-07 | 2013-08-10 |  |  |  |  |  |
| JF721.616 |  | FInal Inspection & Hand over to client |  | 3d | 2013-08-07 | 2013-08-10 | 3.D | 5d | 0d | Project Engineer [30 h]; Forman [30 h]; QC inspector [30 h]; Vehicle (pick up 3/4T 4*2) [30 h]; Rigger [30 h]; Safety Officer [30 h]; Helper [60 h]; Cutting Machine [30 h]; Truck Flat Bed [30 h]; Driver [30 h]; Crane Operator [30 h]; Diesel Truck [30 h]; Hand over to Client (commissioning) [1] | 92,011.25 |
|  | 24 | **Project Completion (Tk4)** |  |  | 2013-08-10 | 2013-08-10 |  |  |  |  |  |
| 6.D |  | Project Completion | milestone | 0d | 2013-08-10 | 2013-08-10 | JF721.616, 6.C FF+1d | 5d |  |  |  |
|  | 2 | **TANK#5 101 C** |  |  | 2012-06-30 | 2013-08-15 |  |  |  |  |  |
|  | 1 | **ENGINEERING** |  |  | 2012-06-30 | 2012-07-26 |  |  |  |  |  |
|  | 1 | **SOIL INVESTIGATION SUBCONTRACTOR** |  |  | 2012-06-30 | 2012-07-01 |  |  |  |  |  |
| JF721.617 |  | Soil Investigation Works |  | 2d | 2012-06-30 | 2012-07-01 | JF721.463 SS | 0d |  | Geo Technical Survey [20 h]; Soil investigation / sub contractor [1] | 17,511.8 |
|  | 4 | **Complete survey and Geotechnical Investigation for Ad-Duaihi Storage Facility.** |  |  | 2012-07-01 | 2012-07-01 |  |  |  |  |  |
| 5.1 |  | Complete survey and Geotechnical Investigation for Ad-Duaihi Storage Facility. | milestone | 0d | 2012-07-01 | 2012-07-01 | JF721.617 | 0d |  |  |  |
|  | 2 | **ENGINEERING DESIGN CALCULATIONS)** |  |  | 2012-06-30 | 2012-07-17 |  |  |  |  |  |
| JF721.618 |  | 60% Submittal |  | 1d | 2012-06-30 | 2012-07-01 | 5.1 FF | 0d |  | Mechanical Design Engineer [8 h]; Engineering / Design Calculations [0.15] | 3,940.16 |
| JF721.619 |  | 60% Comments Incooperation |  | 7d | 2012-07-01 | 2012-07-07 | JF721.618 | 0d |  | Mechanical Design Engineer [56 h]; Engineering / Design Calculations [0.2] | 5,253.54 |
| JF721.620 |  | 90% Submittal |  | 1d | 2012-07-07 | 2012-07-08 | JF721.619 | 0d |  | Mechanical Design Engineer [8 h]; Engineering / Design Calculations [0.15] | 3,940.16 |
| JF721.621 |  | 90% Comments Incooperation |  | 7d | 2012-07-08 | 2012-07-14 | JF721.620 | 0d |  | Mechanical Design Engineer [56 h]; Engineering / Design Calculations [0.2] | 5,253.54 |
| JF721.622 |  | IFC |  | 4d | 2012-07-14 | 2012-07-17 | JF721.621 | 0d |  | Mechanical Design Engineer [24 h]; Engineering / Design Calculations [0.3] | 7,880.31 |
|  | 5 | **Complete Engineering design and Calculations** |  |  | 2012-07-17 | 2012-07-17 |  |  |  |  |  |
| JF721.5.2 |  | Complete Engineering design and Calculations | milestone | 0d | 2012-07-17 | 2012-07-17 | JF721.622 FF | 0d |  |  |  |
|  | 3 | **ENGINEERING TANK & FOUNDATION DRAWINGS** |  |  | 2012-07-17 | 2012-07-26 |  |  |  |  |  |
| JF721.623 |  | 60% Submittal (Tank & Foundation Drawings) |  | 1d | 2012-07-17 | 2012-07-18 | JF721.5.2 | 0d |  | Mechanical Design Engineer [8 h]; Quantity Surveyor (Material Specialist) [8 h]; Structural Design Engineer [8 h]; Engineering / Tank & / foundation Drawings [0.15] | 6,566.93 |
| JF721.624 |  | 60% Comments Incooperation (Tanks & Foundation Drawings) |  | 5d | 2012-07-18 | 2012-07-23 | JF721.623 | 0d |  | Mechanical Design Engineer [40 h]; Quantity Surveyor (Material Specialist) [40 h]; Structural Design Engineer [40 h]; Engineering / Tank & / foundation Drawings [0.2] | 8,755.9 |
| JF721.625 |  | 90% Submittal (Tanks & Foundation Drawings) |  | 1d | 2012-07-23 | 2012-07-23 | JF721.624 | 0d |  | Quantity Surveyor (Material Specialist) [8 h]; Mechanical Design Engineer [8 h]; Structural Design Engineer [8 h]; Engineering / Tank & / foundation Drawings [0.15] | 6,566.93 |
| JF721.626 |  | 90% Comments Incooperation (Tanks & Foundation Drawings) |  | 2d | 2012-07-23 | 2012-07-25 | JF721.625 | 0d |  | Quantity Surveyor (Material Specialist) [16 h]; Mechanical Design Engineer [16 h]; Structural Design Engineer [16 h]; Engineering / Tank & / foundation Drawings [0.2] | 8,755.9 |
| JF721.627 |  | IFC |  | 1d | 2012-07-25 | 2012-07-26 | JF721.626 | 0d |  | Structural Design Engineer [8 h]; Quantity Surveyor (Material Specialist) [8 h]; Mechanical Design Engineer [8 h]; Engineering / Tank & / foundation Drawings [0.3] | 13,133.85 |

Notes:
- 2: DESIGN,ENGINEERING,SUPPLY OF / MATERIALS,MANUFACTURING,PREFABRICATION,ASSUMBLY,PAINTING&COATING,ERECTION,SHOP / TESTING,INSPECTION,PACKING AND DELIEVERY TO SITE,OPERATING & MAINTENANCE / MANUALS AND SPARE PARTS PACKADGE
- JF721.617: Steps: Soil Contractor Mobilization; Start of work; Finishing & Moving to 2nd Tank
- JF721.619: Steps: Recieving the Comments from client; Incooperating the Comments
- JF721.621: Steps: Recieving the Comments from client; Incooperating the Comments
- JF721.622: Steps: Receving Final Approval from client; Preparing the Drawings to IFC

| ID | WBS | Activity | Type | Duration | Start | Finish | Predecessors | Total float | Free float | Resources | Cost |
| --- | --- | --- | --- | --- | --- | --- | --- | --- | --- | --- | --- |
|  | 6 | **Complete Fabrication and GA Drawing with Bill of Quantities** |  |  | 2012-07-26 | 2012-07-26 |  |  |  |  |  |
| 5.3 |  | Complete Fabrication and GA Drawing with Bill of Quantities | milestone | 0d | 2012-07-26 | 2012-07-26 | JF721.627 FF | 0d |  |  |  |
|  | 2 | **PORCURMENT** |  |  | 2012-07-17 | 2013-08-04 |  |  |  |  |  |
|  | 1 | **CAMP FACILITIES & SITE OFFICES** |  |  | 2012-07-26 | 2012-09-16 |  |  |  |  |  |
| JF721.628 |  | PO Issued |  | 6d | 2012-07-26 | 2012-07-31 | 5.3 | 0d |  | Camp Facilities & Site Offices [0.6] | 99,426.97 |
| JF721.629 |  | Ma'aden Site Delievery |  | 51d | 2012-07-31 | 2012-09-16 | JF721.628 | 0d |  | Camp Facilities & Site Offices [0.4] | 66,284.64 |
|  | 2 | **CATHODIC PROTECTION SYSTEM SUBCONTRACTOR** |  |  | 2012-07-24 | 2013-07-09 |  |  |  |  |  |
| JF721.630 |  | Approval for Vendor Drawings & SPecifications |  | 4d | 2012-07-24 | 2012-07-28 | JF721.626 SS+1d | 70d | 0d | Cathodic / protection System subcontractor [0.1] | 6,628.47 |
| JF721.631 |  | PO Issued |  | 26d | 2012-07-28 | 2012-08-22 | JF721.630 | 124d | 0d | Cathodic / protection System subcontractor [0.2] | 13,256.93 |
| JF721.632 |  | CP System Delievered to Ma'aden Site & Installed |  | 16d | 2013-06-23 | 2013-07-07 | JF721.762 SS | 0d |  | Vehicle (pick up 3/4T 4*2) [260 h]; Safety Officer [260 h]; Rigger [260 h]; QC inspector [260 h]; Project Engineer [260 h]; Helper [520 h]; Forman [260 h]; Cutting Machine [260 h]; Truck Flat Bed [260 h]; Fabricator [260 h]; Crane Operator [260 h]; Diesel Truck [260 h]; Cathodic / protection System subcontractor [0.3] | 19,885.4 |
| JF721.633 |  | Ma'aden CP Inspection |  | 3d | 2013-07-07 | 2013-07-09 | JF721.632 | 0d |  | Vehicle (pick up 3/4T 4*2) [30 h]; Rigger [30 h]; QC inspector [30 h]; Project Engineer [30 h]; Helper [30 h]; Cutting Machine [30 h]; Truck Flat Bed [30 h]; Crane Operator [30 h]; Diesel Truck [30 h]; Driver [30 h]; Cathodic / protection System subcontractor [0.4] | 26,513.86 |
|  | 18 | **Complete installation of Cathodic Protection and CP monitoring for the Storage Tanks.** |  |  | 2013-07-09 | 2013-07-09 |  |  |  |  |  |
| 5.11 |  | Complete Installation of Cathodic Protection | milestone | 0d | 2013-07-09 | 2013-07-09 | JF721.633 | 0d |  |  |  |
|  | 3 | **CIVIL & FOUNDATION** |  |  | 2012-09-16 | 2012-09-24 |  |  |  |  |  |
| JF721.634 |  | PO Issued |  | 2d | 2012-09-16 | 2012-09-18 | JF721.629 | 64d | 0d | Civil & Foundation Material [0.6] | 39,770.79 |
| JF721.635 |  | Ma'aden Site Delievery |  | 7d | 2012-09-18 | 2012-09-24 | JF721.634 | 64d | 0d | Civil & Foundation Material [0.4] | 26,513.86 |
|  | 4 | **ALUMINUM DOME ROOF SUBCONTRACTOR** |  |  | 2012-07-24 | 2012-07-31 |  |  |  |  |  |
| JF721.636 |  | Approval For Vendor Drawings & Specifications |  | 4d | 2012-07-24 | 2012-07-28 | JF721.630 SS | 70d | 0d | Aluminum Doom Roof subcontractor [0.35] | 115,998.13 |
| JF721.637 |  | P.O Issued |  | 4d | 2012-07-28 | 2012-07-31 | JF721.636 | 146d | 22d | Aluminum Doom Roof subcontractor [0.65] | 215,425.1 |
|  | 5 | **INSTRUMENTATION SUBCONTRACTOR** |  |  | 2012-07-24 | 2013-08-04 |  |  |  |  |  |
| JF721.638 |  | Approval for vendor Drawings & Specifcations |  | 3d | 2012-07-24 | 2012-07-27 | JF721.636 SS | 70d | 0d | Instrumentation / subcontractor [0.1] | 6,628.47 |
| JF721.639 |  | P.O Issued |  | 7d | 2012-07-27 | 2012-08-02 | JF721.638 | 144d | 20d | Instrumentation / subcontractor [0.2] | 13,256.93 |
| JF721.640 |  | Instrumentation Delievered to Ma'aden & Installed |  | 25d | 2013-07-10 | 2013-07-31 | 5.11 | 0d |  | Diesel Truck [130 h]; Crane Operator [130 h]; Driver [130 h]; Fabricator [130 h]; Truck Flat Bed [130 h]; Forman [130 h]; Cutting Machine [130 h]; Helper [130 h]; Project Engineer [130 h]; QC inspector [130 h]; Rigger [130 h]; Safety Officer [130 h]; Vehicle (pick up 3/4T 4*2) [130 h]; Instrumentation / subcontractor [0.3] | 19,885.4 |
| JF721.641 |  | Ma'aden Instrumentation Inspection |  | 5d | 2013-07-31 | 2013-08-04 | JF721.640 | 0d |  | Crane Operator [10 h]; Diesel Truck [10 h]; Driver [10 h]; Truck Flat Bed [10 h]; Forman [10 h]; Cutting Machine [10 h]; Helper [10 h]; Project Engineer [10 h]; QC inspector [10 h]; Safety Officer [10 h]; Vehicle (pick up 3/4T 4*2) [10 h]; Fabricator [10 h]; Instrumentation / subcontractor [0.4] | 26,513.86 |

Notes:
- JF721.629: Steps: Purchase Portacabins Locally; Deliever to MPS
- JF721.632: Steps: Delievery of CP System to site; Installation after complete internal tank painting
- JF721.640: Steps: Delievery of Instrumentation to site; Installation

| ID | WBS | Activity | Type | Duration | Start | Finish | Predecessors | Total float | Free float | Resources | Cost |
| --- | --- | --- | --- | --- | --- | --- | --- | --- | --- | --- | --- |
|  | 19 | **Installation of only field instruments, which includes level transmitters and level gauges** |  |  | 2013-08-04 | 2013-08-04 |  |  |  |  |  |
| 5.12 |  | Complete Installation for instruments | milestone | 0d | 2013-08-04 | 2013-08-04 | JF721.641 | 0d |  |  |  |
|  | 6 | **PLATES SUPPLIER** |  |  | 2012-07-17 | 2012-07-21 |  |  |  |  |  |
| JF721.642 |  | Approve Vendor Drawings & Specifcations |  | 2d | 2012-07-17 | 2012-07-19 | JF721.622 | 47d | 0d | Plates Supplier [0.25] | 115,998.13 |
| JF721.643 |  | P.O Issued |  | 2d | 2012-07-19 | 2012-07-21 | JF721.642 | 47d | 0d | Plates Supplier [0.75] | 347,994.39 |
|  | 17 | **Material Requisition approval for Steel plates, Cathodic Protection, field instruments etc.** |  |  | 2012-07-27 | 2012-07-27 |  |  |  |  |  |
| 5.5 |  | Material Requisition approval for Steel plates, Cathodic Protection, field instruments etc. | milestone | 0d | 2012-07-27 | 2012-07-27 | JF721.638 | 70d | 0d |  |  |
|  | 16 | **Purchase Order placement for Major Materials** |  |  | 2012-08-22 | 2012-08-22 |  |  |  |  |  |
| 5.6 |  | Purchase Order placement for Major Materials | milestone | 0d | 2012-08-22 | 2012-08-22 | JF721.631, JF721.637, JF721.639 | 124d | 0d |  |  |
|  | 7 | **PROFILE MATERIAL INCLUDING (beams,Angels,Round bars,Flatbars,Checkers Plates)** |  |  | 2012-07-27 | 2012-08-05 |  |  |  |  |  |
| JF721.644 |  | Approval for Vendor Drawings & Specifications |  | 5d | 2012-07-27 | 2012-07-31 | 5.5 | 70d | 0d | Profile material / including(beams,Angels,Round bars,Flatbars,Checkers Plates) [0.25] | 8,285.58 |
| JF721.645 |  | PO Issued |  | 5d | 2012-07-31 | 2012-08-05 | JF721.644 | 161d | 0d | Profile material / including(beams,Angels,Round bars,Flatbars,Checkers Plates) [0.75] | 24,856.74 |
|  | 8 | **PIPES&FITTINGS(INCLUDING (FLANGES,ELBOWS,PAD PLATES,PIPES,NUTS,BOLTS)SUPPLIER INCLDUDING SPARE PARTS** |  |  | 2012-07-27 | 2012-08-05 |  |  |  |  |  |
| JF721.646 |  | Approval for Vendor Drawings & Specifications |  | 5d | 2012-07-27 | 2012-07-31 | JF721.644 SS | 70d | 0d | Pipes & fittings / (including(Flanges,elbows, / pad plates,pipes, / nuts,bolts) supplier including Spar [0.25] | 16,571.16 |
| JF721.647 |  | PO issued |  | 5d | 2012-07-31 | 2012-08-05 | JF721.646 | 70d | 0d | Pipes & fittings / (including(Flanges,elbows, / pad plates,pipes, / nuts,bolts) supplier including Spar [0.75] | 49,713.49 |
|  | 9 | **PAINT SUPPLIER** |  |  | 2012-07-31 | 2012-08-09 |  |  |  |  |  |
| JF721.648 |  | Approval For vendor Specifcations |  | 7d | 2012-07-31 | 2012-08-06 | JF721.646 | 111d | 0d | Paint supplier [0.25] | 16,571.16 |
| JF721.649 |  | PO issued |  | 3d | 2012-08-06 | 2012-08-09 | JF721.648 | 111d | 0d | Paint supplier [0.75] | 49,713.49 |
|  | 10 | **RAW MATERIAL DELIEVERY TO ALZAMIL FACTORY** |  |  | 2012-07-21 | 2012-10-10 |  |  |  |  |  |
| JF721.650 |  | Plates |  | 91d | 2012-07-21 | 2012-10-10 | JF721.643 | 47d | 0d | Raw Material Delievery to Alzamil Factory [0.7] | 347,994.39 |
| JF721.651 |  | Profile Material |  | 31d | 2012-08-05 | 2012-09-03 | JF721.645, 5.5 | 161d | 34d | Raw Material Delievery to Alzamil Factory [0.15] | 74,570.23 |
| JF721.652 |  | Pipes & Fittings |  | 46d | 2012-08-05 | 2012-09-16 | JF721.647 | 70d | 0d | Raw Material Delievery to Alzamil Factory [0.15] | 74,570.23 |
|  | 11 | **ANNULAR,BUTTOM & SUMP PLATE FABRICATION (AZ PRE-FABRICATION WORKS)** |  |  | 2012-09-16 | 2012-10-03 |  |  |  |  |  |
| JF721.653 |  | Define Layout |  | 4d | 2012-09-16 | 2012-09-19 | JF721.650 SS+62d | 47d | 0d | Annular,buttom& / sump plate Fabrication (AZ Pre-fabricated wroks) [0.05] | 8,285.58 |
| JF721.654 |  | Cutting |  | 8d | 2012-09-16 | 2012-09-22 | JF721.653 SS | 47d | 0d | Annular,buttom& / sump plate Fabrication (AZ Pre-fabricated wroks) [0.15] | 24,856.74 |
| JF721.655 |  | Fit-up |  | 7d | 2012-09-20 | 2012-09-26 | JF721.654 SS+5d | 47d | 0d | Annular,buttom& / sump plate Fabrication (AZ Pre-fabricated wroks) [0.2] | 33,142.32 |
| JF721.656 |  | Welding |  | 8d | 2012-09-22 | 2012-09-29 | JF721.655 SS+2d | 47d | 0d | Annular,buttom& / sump plate Fabrication (AZ Pre-fabricated wroks) [0.45] | 74,570.22 |
| JF721.657 |  | Shop Blasting/Painting |  | 7d | 2012-09-25 | 2012-10-01 | JF721.656 SS+4d | 47d | 0d | Annular,buttom& / sump plate Fabrication (AZ Pre-fabricated wroks) [0.1] | 16,571.16 |
| JF721.658 |  | Inspect & Accept for use |  | 2d | 2012-10-01 | 2012-10-03 | JF721.657 | 47d | 0d | Annular,buttom& / sump plate Fabrication (AZ Pre-fabricated wroks) [0.05] | 8,285.58 |

| ID | WBS | Activity | Duration | Start | Finish | Predecessors | Total float | Free float | Resources | Cost |
| --- | --- | --- | --- | --- | --- | --- | --- | --- | --- | --- |
|  | 12 | **SHELL COURSES (AZ PRE-FABRICATED WORKS) #1,#2,#3,#4** |  | 2012-09-19 | 2012-10-17 |  |  |  |  |  |
| JF721.659 |  | Define Layout | 7d | 2012-09-19 | 2012-09-25 | JF721.653 | 86d | 0d | Shell courses / (AZ Pre-fabricated works) (#1,#2,#3,#4) [0.05] | 13,256.93 |
| JF721.660 |  | Cutting | 16d | 2012-09-19 | 2012-10-03 | JF721.659 SS | 86d | 0d | Shell courses / (AZ Pre-fabricated works) (#1,#2,#3,#4) [0.5] | 132,569.29 |
| JF721.661 |  | Bevelling/Rolling | 16d | 2012-09-23 | 2012-10-06 | JF721.660 SS+4d | 86d | 0d | Shell courses / (AZ Pre-fabricated works) (#1,#2,#3,#4) [0.2] | 53,027.72 |
| JF721.662 |  | Shop Blasting/Painting | 21d | 2012-09-27 | 2012-10-15 | JF721.661 SS+5d | 86d | 0d | Shell courses / (AZ Pre-fabricated works) (#1,#2,#3,#4) [0.2] | 53,027.72 |
| JF721.663 |  | Inspect & Accept for use | 3d | 2012-10-15 | 2012-10-17 | JF721.662 | 86d | 0d | Shell courses / (AZ Pre-fabricated works) (#1,#2,#3,#4) [0.05] | 13,256.93 |
|  | 13 | **SHELL NOZZLES & MANHOLES(AZ PRE-FABRICATED WORKS)** |  | 2012-10-03 | 2012-10-25 |  |  |  |  |  |
| JF721.664 |  | Define layout | 3d | 2012-10-03 | 2012-10-05 | JF721.651, JF721.660 | 127d | 0d | Shell Nozzles / &manholes (AZ Pre-fabricated works) [0.1] | 9,942.7 |
| JF721.665 |  | Cutting | 5d | 2012-10-06 | 2012-10-09 | JF721.664 | 127d | 0d | Shell Nozzles / &manholes (AZ Pre-fabricated works) [0.2] | 19,885.39 |
| JF721.666 |  | Bevelling | 6d | 2012-10-07 | 2012-10-12 | JF721.665 SS+2d | 127d | 0d | Shell Nozzles / &manholes (AZ Pre-fabricated works) [0.2] | 19,885.39 |
| JF721.667 |  | Fit-up/Welding | 13d | 2012-10-10 | 2012-10-21 | JF721.666 SS+3d | 127d | 0d | Shell Nozzles / &manholes (AZ Pre-fabricated works) [0.4] | 39,770.79 |
| JF721.668 |  | Blasting/Painting | 9d | 2012-10-16 | 2012-10-23 | JF721.667 SS+7d | 127d | 0d | Shell Nozzles / &manholes (AZ Pre-fabricated works) [0.05] | 4,971.35 |
| JF721.669 |  | Inspect & Accept for use | 2d | 2012-10-23 | 2012-10-25 | JF721.668 | 127d | 0d | Shell Nozzles / &manholes (AZ Pre-fabricated works) [0.05] | 4,971.35 |
|  | 14 | **PLATFORMS,STARIS &HANDRAILS9AZ-PRE FABRICATED WORKS)** |  | 2012-10-21 | 2012-11-29 |  |  |  |  |  |
| JF721.670 |  | Define Layout | 4d | 2012-10-21 | 2012-10-24 | JF721.667 | 149d | 0d | Platforms, / Stairs & / handrails (AZ Pre-fabricated works) [0.1] | 13,256.93 |
| JF721.671 |  | Cutting | 6d | 2012-10-24 | 2012-10-31 | JF721.670 | 149d | 0d | Platforms, / Stairs & / handrails (AZ Pre-fabricated works) [0.1] | 13,256.93 |
| JF721.672 |  | Fit-Up | 9d | 2012-10-31 | 2012-11-08 | JF721.671 | 149d | 0d | Platforms, / Stairs & / handrails (AZ Pre-fabricated works) [0.2] | 26,513.86 |
| JF721.673 |  | Welding | 11d | 2012-11-12 | 2012-11-21 | JF721.672 FS+5d | 149d | 0d | Platforms, / Stairs & / handrails (AZ Pre-fabricated works) [0.4] | 53,027.72 |
| JF721.674 |  | Blasting/Painting | 11d | 2012-11-17 | 2012-11-27 | JF721.673 SS+6d | 149d | 0d | Platforms, / Stairs & / handrails (AZ Pre-fabricated works) [0.15] | 19,885.39 |
| JF721.675 |  | Inspect & Accept for use | 3d | 2012-11-27 | 2012-11-29 | JF721.674 | 149d | 0d | Platforms, / Stairs & / handrails (AZ Pre-fabricated works) [0.05] | 6,628.46 |
|  | 15 | **DELIEVERY OF THE PRE-FABRICATED MATERIAL TO MA'ADEN SITE** |  | 2012-08-09 | 2012-12-05 |  |  |  |  |  |
| JF721.682 |  | Paint Material | 3d | 2012-08-09 | 2012-08-11 | JF721.649 | 111d | 47d | Delievery of the Pre-Fabricated Material to Ma'aden Site [0.05] | 41,427.9 |
| JF721.681 |  | Aluminum Dome Roof | 91d | 2012-08-22 | 2012-11-11 | 5.6 | 124d |  | Delievery of the Pre-Fabricated Material to Ma'aden Site [0.15] | 124,283.71 |
| JF721.680 |  | Pipes & Fittings | 3d | 2012-09-16 | 2012-09-19 | JF721.652 | 70d | 6d | Delievery of the Pre-Fabricated Material to Ma'aden Site [0.05] | 41,427.9 |
| JF721.676 |  | Annular,Bottom & Sump | 7d | 2012-10-03 | 2012-10-09 | JF721.658 | 47d |  | Delievery of the Pre-Fabricated Material to Ma'aden Site [0.15] | 124,283.71 |
| JF721.677 |  | Shell Courses #1,#2,#3,#4 | 13d | 2012-10-17 | 2012-10-30 | JF721.663 | 86d |  | Delievery of the Pre-Fabricated Material to Ma'aden Site [0.35] | 289,995.32 |
| JF721.678 |  | Shell Nozzles & Manholes | 5d | 2012-10-25 | 2012-10-31 | JF721.669 | 127d |  | Delievery of the Pre-Fabricated Material to Ma'aden Site [0.1] | 82,855.81 |
| JF721.679 |  | Platforms,Stairs & Handrails | 7d | 2012-11-29 | 2012-12-05 | JF721.675 | 149d |  | Delievery of the Pre-Fabricated Material to Ma'aden Site [0.15] | 124,283.71 |

Notes:
- JF721.681: Steps: Drawings Recieved from Supplier; Submission/Approval from CLient; Roof Fabrication; Shipping of Fabricated Material; Delievery to Alzamil factory; Delievey to MA'aden Site
- JF721.677: Steps: Shell #1; Shell #2; Shell #3; Shell #4

| ID | WBS | Activity | Type | Duration | Start | Finish | Predecessors | Total float | Resources | Cost |
| --- | --- | --- | --- | --- | --- | --- | --- | --- | --- | --- |
|  | 20 | **Supply of Materials to Site** |  |  | 2012-09-24 | 2012-09-24 |  |  |  |  |
| 5.8 |  | Supply of materials to site | milestone | 0d | 2012-09-24 | 2012-09-24 | JF721.635, JF721.682, JF721.680 | 64d |  |  |
|  | 3 | **CONSTRUCTION (INCLUDING SHOP FABRICATION,SITE CONSTRUCTION,INSTALLATION WORKS,MOBILIZATION,PAINTING)** |  |  | 2012-07-31 | 2013-08-15 |  |  |  |  |
|  | 1 | **MOBILIZATION(INCLUDING ACCOMODATION,FABRICATION YARD & AZ EQUIPMENT)** |  |  | 2012-07-31 | 2012-10-04 |  |  |  |  |
| JF721.683 |  | Rental For Workers & Engineers Accomodation with Facilities |  | 2d | 2012-07-31 | 2012-08-02 | JF721.629 SS | 0d | Project Engineer [20 h]; Forman [20 h]; Vehicle (pick up 3/4T 4*2) [20 h]; Mobilization(including Accomodation / ,fabrication yard, AZ equipment) [0.45] | 99,372.15 |
| JF721.684 |  | Complete Mobilize AZ Equipment to Site & Prepare the site fabrication yard |  | 69d | 2012-08-02 | 2012-10-03 | JF721.683 | 0d | Project Engineer [690 h]; Forman [690 h]; Crane Operator [690 h]; Rigger [690 h]; Helper [1380 h]; Diesel Truck [690 h]; Safety Officer [690 h]; QC inspector [690 h]; Vehicle (pick up 3/4T 4*2) [690 h]; Driver [690 h]; Truck Flat Bed [690 h]; Mobilization(including Accomodation / ,fabrication yard, AZ equipment) [0.35] | 77,289.45 |
| JF721.685 |  | Ma'aden Inspection & Approval for Portacabins |  | 1d | 2012-10-03 | 2012-10-04 | JF721.684 | 0d | Project Engineer [10 h]; Forman [10 h]; Vehicle (pick up 3/4T 4*2) [10 h]; Rigger [10 h]; Safety Officer [10 h]; QC inspector [10 h]; Helper [20 h]; Cutting Machine [10 h]; Truck Flat Bed [10 h]; Driver [10 h]; Diesel Truck [10 h]; Crane Operator [10 h]; Mobilization(including Accomodation / ,fabrication yard, AZ equipment) [0.2] | 44,165.4 |
|  | 19 | **Complete MOBILIZATION of camp with Catering and accommodation facilities** |  |  | 2012-10-04 | 2012-10-04 |  |  |  |  |
| 5.7 |  | Complete MOBILIZATION of camp with Catering and accommodation facilities | milestone | 0d | 2012-10-04 | 2012-10-04 | JF721.685 | 0d |  |  |
|  | 2 | **CIVIL WORKS** |  |  | 2012-10-04 | 2012-10-30 |  |  |  |  |
| JF721.686 |  | Layout/Stake-out |  | 4d | 2012-10-04 | 2012-10-08 | 5.7 | 0d | Forman [40 h]; Helper [160 h]; Safety Officer [40 h]; Rigger [40 h]; QC inspector [40 h]; Project Engineer [40 h]; Vehicle (pick up 3/4T 4*2) [40 h]; Cutting Machine [40 h]; Truck Flat Bed [40 h]; Driver [40 h]; Crane Operator [40 h]; Diesel Truck [40 h]; Carpenter [40 h]; Steel Workers [40 h]; Civil works [0.1] | 23,922.92 |
| JF721.687 |  | Excavation |  | 9d | 2012-10-08 | 2012-10-16 | JF721.686 | 0d | Forman [90 h]; Helper [450 h]; Bus [90 h]; QC inspector [90 h]; Project Engineer [90 h]; Vehicle (pick up 3/4T 4*2) [90 h]; Safety Officer [90 h]; Cutting Machine [90 h]; Driver [90 h]; Crane Operator [90 h]; Diesel Truck [90 h]; Truck Flat Bed [90 h]; Civil works [0.45] | 107,653.16 |
| JF721.688 |  | SteelWorks/Formworks |  | 8d | 2012-10-16 | 2012-10-22 | JF721.687 | 0d | Steel Workers [80 h]; Carpenter [80 h]; Forman [80 h]; Vehicle (pick up 3/4T 4*2) [80 h]; Safety Officer [80 h]; Rigger [80 h]; QC inspector [80 h]; Project Engineer [80 h]; Helper [400 h]; Cutting Machine [80 h]; Truck Flat Bed [80 h]; Driver [80 h]; Crane Operator [80 h]; Diesel Truck [80 h]; Civil works [0.3] | 71,768.77 |
| JF721.689 |  | Soil Compaction |  | 7d | 2012-10-23 | 2012-10-30 | JF721.688 | 0d | Helper [350 h]; Vibrating Roller 16T [70 h]; Forman [70 h]; Vehicle (pick up 3/4T 4*2) [70 h]; Safety Officer [70 h]; Rigger [70 h]; QC inspector [70 h]; Project Engineer [70 h]; Cutting Machine [70 h]; Truck Flat Bed [70 h]; Driver [70 h]; Crane Operator [70 h]; Diesel Truck [70 h]; Civil works [0.15] | 35,884.39 |
|  | 3 | **FOUNDATION WORKS** |  |  | 2012-10-30 | 2012-11-20 |  |  |  |  |
| JF721.690 |  | Concrete Pouring |  | 3d | 2012-10-30 | 2012-11-01 | JF721.689 | 0d | Helper [150 h]; Forman [30 h]; Vehicle (pick up 3/4T 4*2) [8 h]; Safety Officer [30 h]; Rigger [30 h]; QC inspector [30 h]; Project Engineer [30 h]; Cutting Machine [30 h]; Truck Flat Bed [30 h]; Driver [30 h]; Diesel Truck [30 h]; Crane Operator [30 h]; Mason [30 h]; Foundation works [0.35] | 77,289.45 |
| JF721.691 |  | Concrete Curing |  | 7d | 2012-11-02 | 2012-11-08 | JF721.690 | 0d | Helper [350 h]; Forman [70 h]; Vehicle (pick up 3/4T 4*2) [70 h]; Rigger [70 h]; Project Engineer [70 h]; QC inspector [70 h]; Mason [70 h]; Carpenter [70 h]; Steel Workers [70 h]; Truck Flat Bed [70 h]; Driver [70 h]; Crane Operator [70 h]; Diesel Truck [70 h]; Cutting Machine [70 h]; Foundation works [0.35] | 77,289.45 |
| JF721.692 |  | Removal of Formworks |  | 5d | 2012-11-08 | 2012-11-12 | JF721.691 | 0d | Helper [250 h]; Steel Workers [50 h]; QC inspector [50 h]; Project Engineer [50 h]; Mason [50 h]; Rigger [50 h]; Safety Officer [50 h]; Cutting Machine [50 h]; Truck Flat Bed [50 h]; Driver [50 h]; Crane Operator [50 h]; Diesel Truck [50 h]; Foundation works [0.15] | 33,124.05 |
| JF721.693 |  | Backfilling |  | 9d | 2012-11-12 | 2012-11-20 | JF721.692 | 0d | Backhoe [90 h]; Helper [450 h]; Forman [90 h]; Vehicle (pick up 3/4T 4*2) [90 h]; Safety Officer [90 h]; Rigger [90 h]; Project Engineer [90 h]; QC inspector [90 h]; Cutting Machine [90 h]; Truck Flat Bed [90 h]; Driver [90 h]; Crane Operator [90 h]; Diesel Truck [90 h]; Foundation works [0.15] | 33,124.05 |
|  | 20 | **Complete construction of Civil/Structural Work , including excavation, backfill** |  |  | 2012-11-20 | 2012-11-20 |  |  |  |  |
| 5.9 |  | Complete COnstruction of Civil/Structural works | milestone | 0d | 2012-11-20 | 2012-11-20 | JF721.693 | 0d |  |  |
|  | 4 | **ANNULAR & BOTTOM PLATES (SITE INSTALLATION WORKS)** |  |  | 2012-11-20 | 2013-01-13 |  |  |  |  |
| JF721.694 |  | Erect & Weld Annular Plates |  | 15d | 2012-11-20 | 2012-12-03 | 5.8, 5.9, JF721.676 | 0d | Forman [70 h]; Crane Operator [70 h]; Rigger [70 h]; Fabricator [140 h]; Welder 6G [280 h]; Tack Welder [70 h]; Helper [490 h]; Truck Flat Bed [70 h]; Compressor 450 CFM [280 h]; Cutting Machine [70 h]; Diesel Truck [70 h]; Safety Officer [70 h]; QC inspector [70 h]; Project Engineer [70 h]; Annular & bottom / Plates (Site Installation works) [0.25] | 9,201.12 |
| JF721.695 |  | Erect & Tack Bottom Plates |  | 20d | 2012-12-03 | 2012-12-20 | JF721.694 | 0d | Compressor 450 CFM [360 h]; Crane Operator [60 h]; Forman [60 h]; Rigger [60 h]; Tack Welder [60 h]; Helper [420 h]; Welder 6G [360 h]; Vehicle (pick up 3/4T 4*2) [60 h]; Safety Officer [60 h]; QC inspector [60 h]; Project Engineer [60 h]; Cutting Machine [60 h]; Truck Flat Bed [60 h]; Diesel Truck [60 h]; Fabricator [120 h]; Annular & bottom / Plates (Site Installation works) [0.2] | 7,360.9 |
| JF721.696 |  | Welding of Bottom Plates |  | 25d | 2012-12-20 | 2013-01-10 | JF721.695 | 0d | Welder 6G [420 h]; Forman [70 h]; Fabricator [140 h]; Helper [490 h]; Compressor 450 CFM [420 h]; Cutting Machine [70 h]; Vehicle (pick up 3/4T 4*2) [70 h]; Rigger [70 h]; QC inspector [70 h]; Project Engineer [70 h]; Truck Flat Bed [70 h]; Driver [70 h]; Crane Operator [70 h]; Diesel Truck [70 h]; Tack Welder [70 h]; Annular & bottom / Plates (Site Installation works) [0.3] | 11,041.35 |
| JF721.697 |  | Visual Inspection & Cleaning |  | 1d | 2013-01-10 | 2013-01-12 | JF721.696 | 0d | Tack Welder [10 h]; Compressor 450 CFM [60 h]; Welder 6G [60 h]; Vehicle (pick up 3/4T 4*2) [10 h]; Rigger [10 h]; QC inspector [10 h]; Project Engineer [10 h]; Helper [70 h]; Cutting Machine [10 h]; Truck Flat Bed [10 h]; Fabricator [10 h]; Crane Operator [10 h]; Diesel Truck [10 h]; Driver [10 h]; Safety Officer [10 h]; Annular & bottom / Plates (Site Installation works) [0.1] | 3,680.45 |
| JF721.698 |  | Carry Out NDT & Vaccuum Box Test |  | 2d | 2013-01-12 | 2013-01-13 | JF721.697 | 0d | Safety Officer [20 h]; Compressor 450 CFM [120 h]; Welder 6G [120 h]; Tack Welder [20 h]; Rigger [20 h]; QC inspector [20 h]; Project Engineer [20 h]; Helper [140 h]; Cutting Machine [20 h]; Truck Flat Bed [20 h]; Fabricator [40 h]; Crane Operator [20 h]; Diesel Truck [20 h]; Driver [20 h]; Annular & bottom / Plates (Site Installation works) [0.15] | 5,520.68 |

| ID | WBS | Activity | Duration | Start | Finish | Predecessors | Total float | Resources | Cost |
| --- | --- | --- | --- | --- | --- | --- | --- | --- | --- |
|  | 5 | **SHELL COURSE #1(SITE INSTALLATION WORKS)** |  | 2013-01-12 | 2013-01-21 |  |  |  |  |
| JF721.699 |  | Prepare Shell Course # 1 for Erection | 3d | 2013-01-12 | 2013-01-15 | JF721.698 SS+1d, JF721.677 | 0d | Compressor 450 CFM [60 h]; Welder 6G [60 h]; Vehicle (pick up 3/4T 4*2) [10 h]; Tack Welder [10 h]; Safety Officer [10 h]; Rigger [10 h]; QC inspector [10 h]; Project Engineer [10 h]; Helper [70 h]; Cutting Machine [10 h]; Forman [10 h]; Fabricator [30 h]; Driver [10 h]; Crane Operator [10 h]; Diesel Truck [10 h]; Scaffolder [10 h]; Shell Course #1 / (site Installation works) [0.1] | 7,360.9 |
| JF721.700 |  | Erect & Tack Shell Course # 1 | 4d | 2013-01-15 | 2013-01-18 | JF721.699 | 0d | Compressor 450 CFM [140 h]; Welder 6G [140 h]; Vehicle (pick up 3/4T 4*2) [20 h]; Scaffolder [20 h]; Safety Officer [20 h]; Rigger [20 h]; QC inspector [20 h]; Project Engineer [20 h]; Helper [140 h]; Cutting Machine [20 h]; Truck Flat Bed [20 h]; Driver [20 h]; Crane Operator [20 h]; Diesel Truck [20 h]; Fabricator [60 h]; Tack Welder [20 h]; Shell Course #1 / (site Installation works) [0.2] | 14,721.8 |
| JF721.701 |  | Weld Outer Vertical Seam | 4d | 2013-01-16 | 2013-01-19 | JF721.700 SS+1d | 0d | Compressor 450 CFM [120 h]; Driver [20 h]; Crane Operator [20 h]; Diesel Truck [20 h]; Fabricator [60 h]; Forman [20 h]; Cutting Machine [20 h]; Helper [140 h]; Project Engineer [20 h]; QC inspector [20 h]; Rigger [20 h]; Safety Officer [20 h]; Tack Welder [20 h]; Vehicle (pick up 3/4T 4*2) [20 h]; Welder 6G [120 h]; Scaffolder [20 h]; Shell Course #1 / (site Installation works) [0.25] | 18,402.25 |
| JF721.702 |  | Backgouge & NDT Inside Vertical Seam | 4d | 2013-01-16 | 2013-01-20 | JF721.701 SS+1d | 0d | Diesel Truck [20 h]; Crane Operator [20 h]; Driver [20 h]; Fabricator [60 h]; Truck Flat Bed [20 h]; Forman [20 h]; Cutting Machine [20 h]; Helper [140 h]; QC inspector [20 h]; Project Engineer [20 h]; Rigger [20 h]; Safety Officer [20 h]; Tack Welder [20 h]; Vehicle (pick up 3/4T 4*2) [20 h]; Welder 6G [160 h]; Compressor 450 CFM [160 h]; Scaffolder [20 h]; Shell Course #1 / (site Installation works) [0.15] | 11,041.35 |
| JF721.703 |  | Weld Inside Vertical Seam | 4d | 2013-01-17 | 2013-01-21 | JF721.702 SS+1d | 0d | Compressor 450 CFM [160 h]; Welder 6G [160 h]; Vehicle (pick up 3/4T 4*2) [20 h]; Tack Welder [20 h]; Scaffolder [20 h]; Safety Officer [20 h]; Rigger [20 h]; QC inspector [20 h]; Project Engineer [20 h]; Helper [140 h]; Cutting Machine [20 h]; Forman [20 h]; Truck Flat Bed [20 h]; Fabricator [60 h]; Driver [20 h]; Crane Operator [20 h]; Diesel Truck [20 h]; Shell Course #1 / (site Installation works) [0.3] | 22,082.7 |
|  | 6 | **SHELL COURSE#2(SITE INSTALLATION WORKS & TESTING)** |  | 2013-01-19 | 2013-01-30 |  |  |  |  |
| JF721.704 |  | Prepare Shell Course # 2 for Erection | 3d | 2013-01-19 | 2013-01-22 | JF721.703 SS+2d | 0d | Compressor 450 CFM [80 h]; Welder 6G [80 h]; Vehicle (pick up 3/4T 4*2) [10 h]; Tack Welder [10 h]; Safety Officer [10 h]; Rigger [10 h]; QC inspector [10 h]; Project Engineer [10 h]; Helper [70 h]; Cutting Machine [10 h]; Forman [10 h]; Truck Flat Bed [10 h]; Fabricator [30 h]; Driver [10 h]; Crane Operator [10 h]; Diesel Truck [10 h]; Shell Course #2 / (site Installation works& testing) [0.05] | 5,520.68 |
| JF721.705 |  | Erect & Tack Shell Course # 2 | 4d | 2013-01-22 | 2013-01-25 | JF721.704 | 0d | Compressor 450 CFM [160 h]; Welder 6G [160 h]; Vehicle (pick up 3/4T 4*2) [20 h]; Tack Welder [20 h]; Scaffolder [20 h]; Safety Officer [20 h]; Rigger [20 h]; QC inspector [20 h]; Project Engineer [20 h]; Helper [140 h]; Cutting Machine [20 h]; Forman [20 h]; Truck Flat Bed [20 h]; Fabricator [60 h]; Driver [20 h]; Crane Operator [20 h]; Diesel Truck [20 h]; Shell Course #2 / (site Installation works& testing) [0.1] | 11,041.35 |
| JF721.706 |  | Weld Outer Vertical Seam | 5d | 2013-01-23 | 2013-01-27 | JF721.705 SS+1d | 0d | Compressor 450 CFM [240 h]; Welder 6G [240 h]; Vehicle (pick up 3/4T 4*2) [30 h]; Tack Welder [30 h]; Scaffolder [30 h]; Safety Officer [30 h]; Rigger [30 h]; QC inspector [30 h]; Project Engineer [30 h]; Helper [210 h]; Cutting Machine [30 h]; Forman [30 h]; Truck Flat Bed [30 h]; Driver [30 h]; Crane Operator [30 h]; Diesel Truck [30 h]; Fabricator [90 h]; Shell Course #2 / (site Installation works& testing) [0.2] | 22,082.7 |
| JF721.707 |  | Backgouge & NDT Inside Vertical Seam | 4d | 2013-01-23 | 2013-01-27 | JF721.706 SS+1d | 0d | Compressor 450 CFM [160 h]; Welder 6G [160 h]; Vehicle (pick up 3/4T 4*2) [20 h]; Tack Welder [20 h]; Safety Officer [20 h]; QC inspector [20 h]; Project Engineer [20 h]; Helper [140 h]; Cutting Machine [20 h]; Forman [20 h]; Truck Flat Bed [20 h]; Fabricator [60 h]; Driver [20 h]; Crane Operator [20 h]; Diesel Truck [20 h]; Shell Course #2 / (site Installation works& testing) [0.1] | 11,041.35 |
| JF721.708 |  | Weld Inside Vertical Seam | 4d | 2013-01-24 | 2013-01-27 | JF721.707 SS+1d | 0d | Compressor 450 CFM [160 h]; Welder 6G [160 h]; Scaffolder [20 h]; Vehicle (pick up 3/4T 4*2) [20 h]; Rigger [20 h]; Project Engineer [20 h]; QC inspector [20 h]; Helper [140 h]; Cutting Machine [20 h]; Forman [20 h]; Fabricator [60 h]; Truck Flat Bed [20 h]; Driver [20 h]; Crane Operator [20 h]; Diesel Truck [20 h]; Shell Course #2 / (site Installation works& testing) [0.2] | 22,082.7 |
| JF721.709 |  | "Fit & Tack Horizontal Seam between / Shell Course # 1 & 2" | 4d | 2013-01-25 | 2013-01-28 | JF721.708 SS+1d | 0d | Compressor 450 CFM [160 h]; Welder 6G [160 h]; Tack Welder [20 h]; Safety Officer [20 h]; Rigger [20 h]; QC inspector [20 h]; Project Engineer [20 h]; Helper [140 h]; Forman [20 h]; Truck Flat Bed [20 h]; Fabricator [60 h]; Driver [20 h]; Crane Operator [20 h]; Diesel Truck [20 h]; Cutting Machine [20 h]; Shell Course #2 / (site Installation works& testing) [0.05] | 5,520.68 |
| JF721.710 |  | "Weld Outer Horizontal Seam between / Shell Course # 1 & 2" | 6d | 2013-01-26 | 2013-01-30 | JF721.709 SS+1d | 0d | Compressor 450 CFM [320 h]; Welder 6G [320 h]; Tack Welder [40 h]; Scaffolder [40 h]; Safety Officer [40 h]; Rigger [40 h]; QC inspector [40 h]; Project Engineer [40 h]; Helper [280 h]; Cutting Machine [40 h]; Forman [40 h]; Truck Flat Bed [40 h]; Fabricator [120 h]; Driver [40 h]; Crane Operator [40 h]; Diesel Truck [40 h]; Shell Course #2 / (site Installation works& testing) [0.1] | 11,041.35 |
| JF721.711 |  | "Backgouge & NDT Inside Horizontal / Seam between Shell Course# 1 & 2" | 4d | 2013-01-27 | 2013-01-29 | JF721.710 SS+1d | 0d | Compressor 450 CFM [160 h]; Welder 6G [160 h]; Vehicle (pick up 3/4T 4*2) [20 h]; Tack Welder [20 h]; Scaffolder [20 h]; Safety Officer [20 h]; Rigger [20 h]; QC inspector [20 h]; Project Engineer [20 h]; Helper [140 h]; Cutting Machine [20 h]; Forman [20 h]; Truck Flat Bed [20 h]; Fabricator [60 h]; Driver [20 h]; Crane Operator [20 h]; Diesel Truck [20 h]; Shell Course #2 / (site Installation works& testing) [0.05] | 5,520.68 |
| JF721.712 |  | Weld Inner Horizontal Seam between / Shell Course # 1 & 2" | 4d | 2013-01-27 | 2013-01-30 | JF721.711 SS+1d | 0d | Compressor 450 CFM [160 h]; Welder 6G [160 h]; Vehicle (pick up 3/4T 4*2) [20 h]; Tack Welder [20 h]; Scaffolder [20 h]; Safety Officer [20 h]; Rigger [20 h]; QC inspector [20 h]; Project Engineer [20 h]; Helper [140 h]; Cutting Machine [20 h]; Forman [20 h]; Truck Flat Bed [20 h]; Fabricator [60 h]; Driver [20 h]; Crane Operator [20 h]; Diesel Truck [20 h]; Shell Course #2 / (site Installation works& testing) [0.15] | 16,562.03 |
|  | 7 | **SHELL COURSE#3 (SITE INSTALLATION WORKS & TESTING)** |  | 2013-01-27 | 2013-02-08 |  |  |  |  |
| JF721.713 |  | Prepare Shell Course # 3 for Erection | 3d | 2013-01-27 | 2013-01-29 | JF721.712 SS | 0d | Compressor 450 CFM [80 h]; Welder 6G [80 h]; Vehicle (pick up 3/4T 4*2) [10 h]; Tack Welder [10 h]; Scaffolder [10 h]; Rigger [10 h]; Safety Officer [10 h]; Project Engineer [10 h]; Helper [70 h]; Cutting Machine [10 h]; Forman [10 h]; Truck Flat Bed [10 h]; Fabricator [30 h]; Driver [10 h]; Crane Operator [10 h]; Diesel Truck [10 h]; Shell Course #3 / (site Installation works& testing) [0.05] | 5,520.68 |
| JF721.714 |  | Erect & Tack Shell Course # 3 | 4d | 2013-01-29 | 2013-02-02 | JF721.713 | 0d | Compressor 450 CFM [160 h]; Welder 6G [160 h]; Tack Welder [20 h]; Scaffolder [20 h]; Safety Officer [20 h]; Vehicle (pick up 3/4T 4*2) [20 h]; QC inspector [20 h]; Project Engineer [20 h]; Helper [140 h]; Cutting Machine [20 h]; Forman [20 h]; Truck Flat Bed [20 h]; Fabricator [60 h]; Driver [20 h]; Crane Operator [20 h]; Diesel Truck [20 h]; Shell Course #3 / (site Installation works& testing) [0.1] | 11,041.35 |
| JF721.715 |  | Weld Outer Vertical Seam | 5d | 2013-01-30 | 2013-02-04 | JF721.714 SS+1d | 0d | Compressor 450 CFM [240 h]; Welder 6G [240 h]; Vehicle (pick up 3/4T 4*2) [30 h]; Tack Welder [30 h]; Scaffolder [30 h]; Rigger [30 h]; Project Engineer [30 h]; QC inspector [30 h]; Helper [210 h]; Cutting Machine [30 h]; Forman [30 h]; Truck Flat Bed [30 h]; Fabricator [90 h]; Driver [30 h]; Crane Operator [30 h]; Diesel Truck [30 h]; Shell Course #3 / (site Installation works& testing) [0.2] | 22,082.7 |
| JF721.716 |  | Backgouge & NDT Inside Vertical Seam | 4d | 2013-01-31 | 2013-02-04 | JF721.715 SS+1d | 0d | Compressor 450 CFM [160 h]; Welder 6G [160 h]; Tack Welder [20 h]; Vehicle (pick up 3/4T 4*2) [20 h]; Safety Officer [20 h]; Rigger [20 h]; QC inspector [20 h]; Project Engineer [20 h]; Helper [140 h]; Cutting Machine [20 h]; Forman [20 h]; Truck Flat Bed [20 h]; Fabricator [60 h]; Driver [20 h]; Crane Operator [20 h]; Diesel Truck [20 h]; Scaffolder [20 h]; Shell Course #3 / (site Installation works& testing) [0.1] | 11,041.35 |
| JF721.717 |  | Weld Inside Vertical Seam | 4d | 2013-02-01 | 2013-02-04 | JF721.716 SS+1d | 0d | Compressor 450 CFM [160 h]; Welder 6G [160 h]; Vehicle (pick up 3/4T 4*2) [20 h]; Tack Welder [20 h]; Rigger [20 h]; QC inspector [20 h]; Project Engineer [20 h]; Helper [140 h]; Cutting Machine [20 h]; Forman [20 h]; Truck Flat Bed [20 h]; Driver [20 h]; Crane Operator [20 h]; Diesel Truck [20 h]; Fabricator [60 h]; Shell Course #3 / (site Installation works& testing) [0.2] | 22,082.7 |
| JF721.718 |  | "Fit & Tack Horizontal Seam between / Shell Course # 2 & 3" | 4d | 2013-02-02 | 2013-02-05 | JF721.717 SS+1d | 0d | Compressor 450 CFM [160 h]; Welder 6G [160 h]; Vehicle (pick up 3/4T 4*2) [20 h]; Tack Welder [20 h]; Safety Officer [20 h]; QC inspector [20 h]; Project Engineer [20 h]; Helper [140 h]; Cutting Machine [20 h]; Forman [20 h]; Truck Flat Bed [20 h]; Fabricator [60 h]; Driver [20 h]; Crane Operator [20 h]; Diesel Truck [20 h]; Shell Course #3 / (site Installation works& testing) [0.05] | 5,520.68 |
| JF721.719 |  | "Weld Outer Horizontal Seam between / Shell Course # 2 & 3" | 6d | 2013-02-03 | 2013-02-08 | JF721.718 SS+1d | 0d | Compressor 450 CFM [320 h]; Welder 6G [320 h]; Vehicle (pick up 3/4T 4*2) [40 h]; Tack Welder [40 h]; Rigger [40 h]; QC inspector [40 h]; Project Engineer [40 h]; Helper [280 h]; Cutting Machine [40 h]; Forman [40 h]; Truck Flat Bed [40 h]; Fabricator [120 h]; Driver [40 h]; Crane Operator [40 h]; Diesel Truck [40 h]; Shell Course #3 / (site Installation works& testing) [0.1] | 11,041.35 |
| JF721.720 |  | "Backgouge & NDT Inside Horizontal / Seam between Shell Course# 2 & 3" | 4d | 2013-02-04 | 2013-02-07 | JF721.719 SS+1d | 0d | Compressor 450 CFM [160 h]; Welder 6G [160 h]; Vehicle (pick up 3/4T 4*2) [20 h]; Tack Welder [20 h]; Scaffolder [20 h]; Rigger [20 h]; Safety Officer [20 h]; QC inspector [20 h]; Project Engineer [20 h]; Helper [140 h]; Cutting Machine [20 h]; Forman [20 h]; Truck Flat Bed [20 h]; Fabricator [60 h]; Driver [20 h]; Crane Operator [20 h]; Diesel Truck [20 h]; Shell Course #3 / (site Installation works& testing) [0.05] | 5,520.68 |
| JF721.721 |  | Weld Inner Horizontal Seam between / Shell Course # 2 & 3" | 4d | 2013-02-05 | 2013-02-08 | JF721.720 SS+1d | 0d | Compressor 450 CFM [160 h]; Welder 6G [160 h]; Tack Welder [20 h]; Vehicle (pick up 3/4T 4*2) [20 h]; Scaffolder [20 h]; Safety Officer [20 h]; Rigger [20 h]; QC inspector [20 h]; Project Engineer [20 h]; Helper [140 h]; Cutting Machine [20 h]; Truck Flat Bed [20 h]; Fabricator [60 h]; Driver [20 h]; Crane Operator [20 h]; Diesel Truck [20 h]; Shell Course #3 / (site Installation works& testing) [0.15] | 16,562.03 |

| ID | WBS | Activity | Duration | Start | Finish | Predecessors | Total float | Resources | Cost |
| --- | --- | --- | --- | --- | --- | --- | --- | --- | --- |
|  | 8 | **SHELL COURSE#4 (SITE INSTALLATION WORKS & TESTING)** |  | 2013-01-21 | 2013-02-20 |  |  |  |  |
| JF721.731 |  | Fit, Weld Shell Course # 1 Annular Plate & Oil Test | 8d | 2013-01-21 | 2013-01-27 | JF721.703 | 22d | Compressor 450 CFM [480 h]; Welder 6G [480 h]; Vehicle (pick up 3/4T 4*2) [60 h]; Tack Welder [60 h]; Rigger [60 h]; Safety Officer [60 h]; QC inspector [60 h]; Project Engineer [60 h]; Helper [420 h]; Cutting Machine [60 h]; Forman [60 h]; Truck Flat Bed [60 h]; Bus [60 h]; Driver [60 h]; Crane Operator [60 h]; Diesel Truck [60 h]; Fabricator [180 h]; Scaffolder [60 h]; Shell Course #4 (site Installation works & testing) [0.05] | 5,520.68 |
| JF721.722 |  | Prepare Shell Course # 4 for Erection | 3d | 2013-02-08 | 2013-02-11 | JF721.721, JF721.731 SS | 0d | Compressor 450 CFM [80 h]; Welder 6G [80 h]; Vehicle (pick up 3/4T 4*2) [10 h]; Tack Welder [10 h]; Safety Officer [10 h]; Rigger [10 h]; QC inspector [10 h]; Project Engineer [10 h]; Helper [70 h]; Cutting Machine [10 h]; Forman [10 h]; Fabricator [30 h]; Truck Flat Bed [10 h]; Driver [10 h]; Crane Operator [10 h]; Diesel Truck [10 h]; Shell Course #4 (site Installation works & testing) [0.05] | 5,520.68 |
| JF721.723 |  | Erect & Tack Shell Course # 4 | 4d | 2013-02-11 | 2013-02-14 | JF721.722 | 0d | Compressor 450 CFM [160 h]; Welder 6G [160 h]; Vehicle (pick up 3/4T 4*2) [20 h]; Scaffolder [20 h]; Tack Welder [20 h]; Rigger [20 h]; Safety Officer [20 h]; QC inspector [20 h]; Project Engineer [20 h]; Helper [140 h]; Cutting Machine [20 h]; Forman [20 h]; Truck Flat Bed [20 h]; Fabricator [60 h]; Driver [20 h]; Crane Operator [20 h]; Diesel Truck [20 h]; Shell Course #4 (site Installation works & testing) [0.1] | 11,041.35 |
| JF721.724 |  | Weld Outer Vertical Seam | 5d | 2013-02-11 | 2013-02-16 | JF721.723 SS+1d | 0d | Compressor 450 CFM [240 h]; Welder 6G [240 h]; Vehicle (pick up 3/4T 4*2) [30 h]; Tack Welder [30 h]; Safety Officer [30 h]; Rigger [30 h]; QC inspector [30 h]; Project Engineer [30 h]; Helper [210 h]; Cutting Machine [30 h]; Forman [30 h]; Truck Flat Bed [30 h]; Fabricator [90 h]; Driver [30 h]; Crane Operator [30 h]; Diesel Truck [30 h]; Shell Course #4 (site Installation works & testing) [0.2] | 22,082.7 |
| JF721.725 |  | Backgouge & NDT Inside Vertical Seam | 4d | 2013-02-12 | 2013-02-16 | JF721.724 SS+1d | 0d | Compressor 450 CFM [160 h]; Welder 6G [160 h]; Rigger [20 h]; Vehicle (pick up 3/4T 4*2) [20 h]; Tack Welder [20 h]; QC inspector [20 h]; Project Engineer [20 h]; Helper [140 h]; Forman [20 h]; Truck Flat Bed [20 h]; Fabricator [60 h]; Driver [20 h]; Crane Operator [20 h]; Diesel Truck [20 h]; Shell Course #4 (site Installation works & testing) [0.1] | 11,041.35 |
| JF721.726 |  | Weld Inside Vertical Seam | 4d | 2013-02-13 | 2013-02-17 | JF721.725 SS+1d | 0d | Compressor 450 CFM [160 h]; Welder 6G [160 h]; Tack Welder [20 h]; Safety Officer [20 h]; Rigger [20 h]; QC inspector [20 h]; Project Engineer [20 h]; Helper [140 h]; Cutting Machine [20 h]; Forman [20 h]; Truck Flat Bed [20 h]; Fabricator [60 h]; Driver [20 h]; Crane Operator [20 h]; Diesel Truck [20 h]; Shell Course #4 (site Installation works & testing) [0.15] | 16,562.03 |
| JF721.727 |  | "Fit & Tack Horizontal Seam between / Shell Course # 3 & 4" | 4d | 2013-02-14 | 2013-02-17 | JF721.726 SS+1d | 0d | Compressor 450 CFM [160 h]; Welder 6G [160 h]; Vehicle (pick up 3/4T 4*2) [20 h]; Tack Welder [20 h]; Scaffolder [20 h]; Safety Officer [20 h]; Rigger [20 h]; QC inspector [20 h]; Project Engineer [20 h]; Helper [140 h]; Cutting Machine [20 h]; Forman [20 h]; Truck Flat Bed [20 h]; Driver [20 h]; Crane Operator [20 h]; Fabricator [60 h]; Shell Course #4 (site Installation works & testing) [0.1] | 11,041.35 |
| JF721.728 |  | Weld Outer Horizontal Seam between / Shell Course # 3 & 4 | 6d | 2013-02-15 | 2013-02-20 | JF721.727 SS+1d | 0d | Project Engineer [40 h]; Compressor 450 CFM [320 h]; Welder 6G [320 h]; Vehicle (pick up 3/4T 4*2) [40 h]; Tack Welder [40 h]; Safety Officer [40 h]; Rigger [40 h]; QC inspector [40 h]; Helper [280 h]; Cutting Machine [40 h]; Forman [40 h]; Fabricator [120 h]; Truck Flat Bed [40 h]; Driver [40 h]; Crane Operator [40 h]; Diesel Truck [40 h]; Shell Course #4 (site Installation works & testing) [0.1] | 11,041.35 |
| JF721.729 |  | "Backgouge & NDT Inside Horizontal / Seam between Shell Course# 3 & 4" | 4d | 2013-02-16 | 2013-02-19 | JF721.728 SS+1d | 0d | Compressor 450 CFM [160 h]; Welder 6G [160 h]; Vehicle (pick up 3/4T 4*2) [20 h]; Tack Welder [20 h]; Rigger [20 h]; Safety Officer [20 h]; QC inspector [20 h]; Project Engineer [20 h]; Helper [140 h]; Cutting Machine [20 h]; Forman [20 h]; Truck Flat Bed [20 h]; Driver [20 h]; Crane Operator [20 h]; Diesel Truck [20 h]; Fabricator [60 h]; Shell Course #4 (site Installation works & testing) [0.05] | 5,520.68 |
| JF721.730 |  | Weld Inner Horizontal Seam between / Shell Course # 3 & 4" | 4d | 2013-02-17 | 2013-02-20 | JF721.729 SS+1d | 0d | Safety Officer [20 h]; Vehicle (pick up 3/4T 4*2) [20 h]; Forman [20 h]; Compressor 450 CFM [160 h]; Welder 6G [160 h]; Tack Welder [20 h]; Rigger [20 h]; QC inspector [20 h]; Project Engineer [20 h]; Helper [140 h]; Truck Flat Bed [20 h]; Fabricator [60 h]; Cutting Machine [20 h]; Driver [20 h]; Crane Operator [20 h]; Diesel Truck [20 h]; Shell Course #4 (site Installation works & testing) [0.1] | 11,041.35 |
|  | 9 | **CURB ANGLE(SITE INSTALLATION WORKS)** |  | 2013-02-13 | 2013-02-24 |  |  |  |  |
| JF721.732 |  | Erect & Tack Curve Angle | 4d | 2013-02-13 | 2013-02-17 | JF721.730 SF | 0d | Forman [20 h]; Diesel Truck [20 h]; Crane Operator [20 h]; Project Engineer [20 h]; Compressor 450 CFM [160 h]; Tack Welder [60 h]; Cutting Machine [20 h]; Rigger [20 h]; Helper [140 h]; QC inspector [20 h]; Safety Officer [20 h]; Driver [20 h]; Truck Flat Bed [20 h]; Fabricator [60 h]; Welder 6G [160 h]; Curve Angel / (site Installation works) [0.3] | 11,041.35 |
| JF721.733 |  | Weld Curve Angle | 8d | 2013-02-17 | 2013-02-24 | JF721.732 | 0d | Compressor 450 CFM [240 h]; Welder 6G [240 h]; Tack Welder [40 h]; Rigger [40 h]; Safety Officer [40 h]; QC inspector [40 h]; Project Engineer [40 h]; Helper [280 h]; Cutting Machine [40 h]; Forman [40 h]; Truck Flat Bed [40 h]; Fabricator [80 h]; Driver [40 h]; Crane Operator [40 h]; Diesel Truck [40 h]; Curve Angel / (site Installation works) [0.7] | 25,763.15 |
|  | 10 | **SHELL MANHOLES & NOZZLES (SITE INSTALLATION WORKS)** |  | 2013-02-17 | 2013-02-27 |  |  |  |  |
| JF721.734 |  | MArk & Cut Holes | 5d | 2013-02-17 | 2013-02-21 | JF721.733 SS, JF721.678 | 0d | Rigger [30 h]; QC inspector [30 h]; Project Engineer [30 h]; Helper [210 h]; Cutting Machine [30 h]; Forman [30 h]; Truck Flat Bed [30 h]; Fabricator [60 h]; Driver [30 h]; Crane Operator [30 h]; Diesel Truck [30 h]; Compressor 450 CFM [180 h]; Welder 6G [180 h]; Tack Welder [30 h]; Shell manholes & / nozzles(site Installation works & testing) [0.1] | 3,680.45 |
| JF721.735 |  | Fit & Tack Manholes ,Nozzles on Shell | 4d | 2013-02-18 | 2013-02-21 | JF721.734 SS+1d | 0d | Compressor 450 CFM [100 h]; Welder 6G [100 h]; Tack Welder [20 h]; Rigger [20 h]; Safety Officer [20 h]; QC inspector [20 h]; Project Engineer [20 h]; Helper [140 h]; Forman [20 h]; Truck Flat Bed [20 h]; Fabricator [40 h]; Driver [20 h]; Crane Operator [20 h]; Diesel Truck [20 h]; Cutting Machine [20 h]; Shell manholes & / nozzles(site Installation works & testing) [0.3] | 11,041.35 |
| JF721.736 |  | Weld MAnholes & Nozzles on shell | 7d | 2013-02-18 | 2013-02-24 | JF721.735 SS+1d | 0d | Compressor 450 CFM [100 h]; Welder 6G [100 h]; Vehicle (pick up 3/4T 4*2) [50 h]; Safety Officer [50 h]; Rigger [50 h]; Project Engineer [50 h]; QC inspector [50 h]; Helper [350 h]; Cutting Machine [50 h]; Forman [50 h]; Truck Flat Bed [50 h]; Fabricator [100 h]; Driver [50 h]; Crane Operator [50 h]; Diesel Truck [50 h]; Tack Welder [50 h]; Shell manholes & / nozzles(site Installation works & testing) [0.45] | 16,562.03 |
| JF721.737 |  | NDT on Manholes & Nozzles on shell | 3d | 2013-02-24 | 2013-02-27 | JF721.736 | 0d | Compressor 450 CFM [20 h]; Welder 6G [20 h]; Vehicle (pick up 3/4T 4*2) [10 h]; Tack Welder [10 h]; Safety Officer [10 h]; Rigger [10 h]; QC inspector [10 h]; Project Engineer [10 h]; Helper [70 h]; Cutting Machine [10 h]; Forman [10 h]; Truck Flat Bed [10 h]; Fabricator [20 h]; Driver [10 h]; Crane Operator [10 h]; Diesel Truck [10 h]; Shell manholes & / nozzles(site Installation works & testing) [0.15] | 5,520.68 |
|  | 11 | **ALUMINUM DOME ROOF (SITE INSTALLATION WORKS)** |  | 2013-02-24 | 2013-04-12 |  |  |  |  |
| JF721.738 |  | Prepare Tank for Roof Contruction | 4d | 2013-02-24 | 2013-02-28 | JF721.681, JF721.737 SS | 0d | Compressor 450 CFM [40 h]; Welder 6G [40 h]; Vehicle (pick up 3/4T 4*2) [20 h]; Tack Welder [20 h]; Safety Officer [20 h]; Rigger [20 h]; QC inspector [20 h]; Project Engineer [20 h]; Helper [140 h]; Cutting Machine [20 h]; Forman [20 h]; Truck Flat Bed [20 h]; Fabricator [40 h]; Crane Operator [20 h]; Driver [20 h]; Diesel Truck [20 h]; Third party for ALuminum Dome Roof Supervisor [20 h]; Aluminum Doom Roof / (Site Installation works) [0.15] | 19,322.36 |
| JF721.739 |  | Install Shoe Support Structure on Shell | 8d | 2013-02-28 | 2013-03-06 | JF721.738 | 0d | Compressor 450 CFM [120 h]; Welder 6G [120 h]; Vehicle (pick up 3/4T 4*2) [60 h]; Tack Welder [60 h]; Safety Officer [60 h]; Rigger [60 h]; QC inspector [60 h]; Project Engineer [60 h]; Helper [420 h]; Cutting Machine [60 h]; Forman [60 h]; Truck Flat Bed [60 h]; Fabricator [120 h]; Driver [60 h]; Crane Operator [60 h]; Diesel Truck [60 h]; Third party for ALuminum Dome Roof Supervisor [60 h]; Aluminum Doom Roof / (Site Installation works) [0.2] | 25,763.15 |
| JF721.740 |  | Install / Assemble Roof Rafters | 20d | 2013-03-07 | 2013-03-24 | JF721.739 | 0d | Compressor 450 CFM [400 h]; Welder 6G [400 h]; Vehicle (pick up 3/4T 4*2) [200 h]; Third party for ALuminum Dome Roof Supervisor [200 h]; Tack Welder [200 h]; Safety Officer [200 h]; Rigger [200 h]; QC inspector [200 h]; Project Engineer [200 h]; Helper [1400 h]; Cutting Machine [200 h]; Forman [200 h]; Truck Flat Bed [200 h]; Fabricator [400 h]; Driver [200 h]; Crane Operator [200 h]; Diesel Truck [200 h]; Aluminum Doom Roof / (Site Installation works) [0.25] | 32,203.94 |
| JF721.741 |  | Installation of Roof Plates | 15d | 2013-03-24 | 2013-04-06 | JF721.740 | 0d | Compressor 450 CFM [300 h]; Welder 6G [300 h]; Vehicle (pick up 3/4T 4*2) [150 h]; Tack Welder [150 h]; Safety Officer [150 h]; Rigger [150 h]; QC inspector [150 h]; Project Engineer [150 h]; Helper [1050 h]; Cutting Machine [150 h]; Forman [150 h]; Fabricator [300 h]; Driver [150 h]; Crane Operator [150 h]; Diesel Truck [150 h]; Truck Flat Bed [150 h]; Aluminum Doom Roof / (Site Installation works) [0.3] | 38,644.72 |
| JF721.742 |  | Install Roof Manholes & Nozzles | 7d | 2013-04-06 | 2013-04-12 | JF721.741 | 0d | Compressor 450 CFM [50 h]; Welder 6G [50 h]; Third party for ALuminum Dome Roof Supervisor [40 h]; Tack Welder [50 h]; Safety Officer [50 h]; Rigger [50 h]; QC inspector [50 h]; Project Engineer [50 h]; Helper [50 h]; Cutting Machine [50 h]; Forman [50 h]; Truck Flat Bed [50 h]; Fabricator [50 h]; Driver [50 h]; Crane Operator [50 h]; Diesel Truck [50 h]; Aluminum Doom Roof / (Site Installation works) [0.1] | 12,881.58 |

| ID | WBS | Activity | Type | Duration | Start | Finish | Predecessors | Total float | Free float | Resources | Cost |
| --- | --- | --- | --- | --- | --- | --- | --- | --- | --- | --- | --- |
|  | 12 | **PLATFORMS & HANDRAILS (SITE INSTALLATION WORKS)** |  |  | 2013-04-12 | 2013-04-20 |  |  |  |  |  |
| JF721.743 |  | Erect & Fix Stairs, Handrails & Platforms on Shell |  | 4d | 2013-04-12 | 2013-04-15 | JF721.742, JF721.679 | 0d |  | Compressor 450 CFM [40 h]; Welder 6G [40 h]; Vehicle (pick up 3/4T 4*2) [40 h]; Safety Officer [40 h]; Rigger [40 h]; QC inspector [40 h]; Project Engineer [40 h]; Helper [280 h]; Cutting Machine [40 h]; Forman [40 h]; Truck Flat Bed [40 h]; Fabricator [80 h]; Driver [40 h]; Crane Operator [40 h]; Diesel Truck [40 h]; Platforms & / handrails (site Installation works) [0.35] | 19,322.36 |
| JF721.744 |  | Erect & Fix Roof Platforms & Handrails |  | 5d | 2013-04-15 | 2013-04-20 | JF721.743 | 0d |  | Compressor 450 CFM [50 h]; Welder 6G [50 h]; Vehicle (pick up 3/4T 4*2) [50 h]; Rigger [50 h]; Safety Officer [50 h]; QC inspector [50 h]; Project Engineer [50 h]; Helper [350 h]; Cutting Machine [50 h]; Forman [50 h]; Truck Flat Bed [50 h]; Fabricator [100 h]; Driver [50 h]; Crane Operator [50 h]; Diesel Truck [50 h]; Platforms & / handrails (site Installation works) [0.65] | 35,884.39 |
|  | 21 | **MCC** |  |  | 2013-04-20 | 2013-04-20 |  |  |  |  |  |
| 2.E |  | MCC | milestone | 0d | 2013-04-20 | 2013-04-20 | JF721.744 | 0d |  |  |  |
|  | 13 | **HYDROTESTING** |  |  | 2013-04-20 | 2013-06-02 |  |  |  |  |  |
| JF721.745 |  | Install Blind Flanges |  | 3d | 2013-04-20 | 2013-04-22 | 2.E | 0d |  | Compressor 450 CFM [10 h]; Welder 6G [10 h]; Vehicle (pick up 3/4T 4*2) [10 h]; Tack Welder [10 h]; Safety Officer [10 h]; Rigger [10 h]; QC inspector [10 h]; Project Engineer [10 h]; Helper [70 h]; Cutting Machine [10 h]; Forman [10 h]; Truck Flat Bed [10 h]; Fabricator [20 h]; Driver [10 h]; Crane Operator [10 h]; Diesel Truck [10 h]; Hydrotesting [0.15] | 11,041.35 |
| JF721.746 |  | Tank Water Filling |  | 25d | 2013-04-22 | 2013-05-14 | JF721.745 | 0d |  | Vehicle (pick up 3/4T 4*2) [230 h]; Water truck 30,000 Gallons [230 h]; Rigger [230 h]; Project Engineer [230 h]; QC inspector [230 h]; Helper [460 h]; Cutting Machine [230 h]; Truck Flat Bed [230 h]; Fabricator [230 h]; Driver [230 h]; Crane Operator [230 h]; Diesel Truck [230 h]; Safety Officer [230 h]; Tack Welder [230 h]; Hydrotesting [0.2] | 14,721.8 |
| JF721.747 |  | Hold Water for 48 Hours |  | 4d | 2013-05-14 | 2013-05-17 | JF721.746 | 0d |  | Vehicle (pick up 3/4T 4*2) [20 h]; Safety Officer [20 h]; Rigger [20 h]; QC inspector [20 h]; Project Engineer [20 h]; Helper [40 h]; Cutting Machine [20 h]; Truck Flat Bed [20 h]; Fabricator [20 h]; Driver [20 h]; Crane Operator [20 h]; Diesel Truck [20 h]; Hydrotesting [0.3] | 22,082.7 |
| JF721.748 |  | Drain Water from Tank |  | 14d | 2013-05-17 | 2013-05-29 | JF721.747 | 0d |  | Diesel Truck [120 h]; Crane Operator [120 h]; Driver [120 h]; Fabricator [120 h]; Truck Flat Bed [120 h]; Forman [120 h]; Cutting Machine [120 h]; Helper [480 h]; Project Engineer [120 h]; QC inspector [120 h]; Rigger [120 h]; Safety Officer [120 h]; Vehicle (pick up 3/4T 4*2) [120 h]; Tack Welder [120 h]; Hydrotesting [0.15] | 11,041.35 |
| JF721.749 |  | Clean & Dry Out Tank |  | 4d | 2013-05-29 | 2013-06-02 | JF721.748 | 0d |  | Vehicle (pick up 3/4T 4*2) [20 h]; Safety Officer [20 h]; Rigger [20 h]; QC inspector [20 h]; Project Engineer [20 h]; Helper [80 h]; Cutting Machine [20 h]; Forman [20 h]; Fabricator [20 h]; Driver [20 h]; Crane Operator [20 h]; Diesel Truck [20 h]; Tack Welder [20 h]; Hydrotesting [0.2] | 14,721.8 |
|  | 22 | **Final Testing** |  |  | 2013-06-02 | 2013-06-02 |  |  |  |  |  |
| 4.E |  | Final Testing | milestone | 0d | 2013-06-02 | 2013-06-02 | JF721.749 | 0d |  |  |  |
|  | 14 | **EXTERNAL SITE PAINTING** |  |  | 2013-05-17 | 2013-05-31 |  |  |  |  |  |
| JF721.750 |  | Erect Scafolding Outside Tank |  | 8d | 2013-05-17 | 2013-05-24 | JF721.747 | 5d | 0d | Rigger [80 h]; QC inspector [80 h]; Tack Welder [80 h]; Project Engineer [80 h]; Mason [80 h]; Helper [320 h]; Cutting Machine [80 h]; Forman [80 h]; Truck Flat Bed [80 h]; Driver [80 h]; Diesel Truck [80 h]; Crane Operator [80 h]; Scaffolder [80 h]; Vehicle (pick up 3/4T 4*2) [80 h]; External site painting [0.2] | 7,360.9 |
| JF721.751 |  | External Shell Blast & Prime |  | 4d | 2013-05-24 | 2013-05-27 | JF721.750 | 5d | 0d | Painter [80 h]; Blaster [80 h]; Helper [160 h]; Scaffolder [40 h]; Safety Officer [40 h]; Rigger [40 h]; QC inspector [40 h]; Project Engineer [40 h]; Forman [40 h]; Truck Flat Bed [40 h]; Fabricator [40 h]; Driver [40 h]; Crane Operator [40 h]; Diesel Truck [40 h]; Vehicle (pick up 3/4T 4*2) [40 h]; Tack Welder [40 h]; External site painting [0.3] | 11,041.35 |
| JF721.752 |  | External Shell Secondary & Final Coat |  | 4d | 2013-05-25 | 2013-05-28 | JF721.751 SS+1d | 5d | 0d | Helper [160 h]; Blaster [80 h]; Painter [80 h]; Scaffolder [40 h]; Rigger [40 h]; QC inspector [40 h]; Project Engineer [40 h]; Cutting Machine [40 h]; Forman [40 h]; Truck Flat Bed [40 h]; Driver [40 h]; Crane Operator [40 h]; Diesel Truck [40 h]; Vehicle (pick up 3/4T 4*2) [40 h]; Tack Welder [40 h]; External site painting [0.3] | 11,041.35 |
| JF721.753 |  | External Shell Paint Inspection |  | 1d | 2013-05-28 | 2013-05-29 | JF721.752 | 5d | 0d | QC inspector [10 h]; Forman [10 h]; Vehicle (pick up 3/4T 4*2) [10 h]; Scaffolder [10 h]; Rigger [10 h]; Project Engineer [10 h]; Painter [20 h]; Truck Flat Bed [10 h]; Driver [10 h]; Crane Operator [10 h]; Diesel Truck [10 h]; Cutting Machine [10 h]; Helper [40 h]; Blaster [20 h]; Tack Welder [10 h]; External site painting [0.1] | 3,680.45 |
| JF721.754 |  | Dismantle External Scaffolding |  | 2d | 2013-05-29 | 2013-05-31 | JF721.753 | 5d |  | Scaffolder [160 h]; Forman [20 h]; Safety Officer [20 h]; Rigger [20 h]; Tack Welder [20 h]; QC inspector [20 h]; Project Engineer [20 h]; Helper [80 h]; Truck Flat Bed [20 h]; Driver [20 h]; Crane Operator [20 h]; Diesel Truck [20 h]; External site painting [0.1] | 3,680.45 |
|  | 15 | **INTERNAL SITE PAINTING** |  |  | 2013-06-02 | 2013-06-26 |  |  |  |  |  |
| JF721.755 |  | Erect Scafolding Inside Tank |  | 8d | 2013-06-02 | 2013-06-09 | 4.E | 0d |  | Forman [80 h]; Scaffolder [60 h]; Tack Welder [60 h]; Helper [240 h]; Safety Officer [60 h]; Project Engineer [60 h]; QC inspector [60 h]; Painter [120 h]; Cutting Machine [60 h]; Driver [60 h]; Crane Operator [60 h]; Diesel Truck [60 h]; Vehicle (pick up 3/4T 4*2) [60 h]; Blaster [120 h]; internal site painting [0.15] | 11,041.35 |
| JF721.756 |  | Internal Shell Blast & Prime |  | 5d | 2013-06-04 | 2013-06-09 | JF721.755 SS+3d, JF721.754 | 0d |  | Blaster [60 h]; Painter [60 h]; Tack Welder [30 h]; Safety Officer [30 h]; Rigger [30 h]; Scaffolder [30 h]; QC inspector [30 h]; Project Engineer [30 h]; Helper [120 h]; Cutting Machine [30 h]; Forman [30 h]; Truck Flat Bed [30 h]; Driver [30 h]; Crane Operator [30 h]; Diesel Truck [30 h]; internal site painting [0.2] | 14,721.8 |
| JF721.757 |  | Internal Shell Secondary & Final Coat |  | 5d | 2013-06-09 | 2013-06-13 | JF721.756 | 0d |  | Painter [60 h]; Vehicle (pick up 3/4T 4*2) [30 h]; Safety Officer [30 h]; Scaffolder [30 h]; Rigger [30 h]; QC inspector [30 h]; Project Engineer [30 h]; Helper [120 h]; Cutting Machine [30 h]; Forman [30 h]; Truck Flat Bed [30 h]; Driver [30 h]; Crane Operator [30 h]; Diesel Truck [30 h]; Blaster [60 h]; internal site painting [0.2] | 14,721.8 |
| JF721.758 |  | Internal Shell Paint Inspection |  | 3d | 2013-06-09 | 2013-06-11 | JF721.757 SS | 0d |  | QC inspector [10 h]; Vehicle (pick up 3/4T 4*2) [10 h]; Tack Welder [10 h]; Rigger [10 h]; Project Engineer [10 h]; Helper [40 h]; Cutting Machine [10 h]; Forman [10 h]; Truck Flat Bed [10 h]; Driver [10 h]; Crane Operator [10 h]; Diesel Truck [10 h]; Blaster [20 h]; Painter [20 h]; internal site painting [0.05] | 3,680.45 |
| JF721.759 |  | Dismantle Internal Scaffolding |  | 6d | 2013-06-11 | 2013-06-16 | JF721.758 | 0d |  | Scaffolder [320 h]; Tack Welder [40 h]; Vehicle (pick up 3/4T 4*2) [40 h]; Rigger [40 h]; QC inspector [40 h]; Project Engineer [40 h]; Painter [80 h]; Helper [160 h]; Cutting Machine [40 h]; Forman [40 h]; Truck Flat Bed [40 h]; Driver [40 h]; Crane Operator [40 h]; Diesel Truck [40 h]; Blaster [80 h]; internal site painting [0.05] | 3,680.45 |
| JF721.760 |  | Bottom/Annular Plate Blast & Prime |  | 4d | 2013-06-16 | 2013-06-20 | JF721.759 | 0d |  | Blaster [40 h]; Painter [40 h]; Tack Welder [20 h]; Safety Officer [20 h]; Rigger [20 h]; QC inspector [20 h]; Project Engineer [20 h]; Helper [80 h]; Cutting Machine [20 h]; Forman [20 h]; Vehicle (pick up 3/4T 4*2) [20 h]; Truck Flat Bed [20 h]; Driver [20 h]; Crane Operator [20 h]; Diesel Truck [20 h]; internal site painting [0.15] | 11,041.35 |
| JF721.761 |  | Bottom/Annular Plate Secondary & Final Coat |  | 4d | 2013-06-20 | 2013-06-23 | JF721.760 | 0d |  | Painter [40 h]; Vehicle (pick up 3/4T 4*2) [20 h]; Tack Welder [20 h]; Safety Officer [20 h]; Rigger [20 h]; QC inspector [20 h]; Project Engineer [20 h]; Helper [80 h]; Cutting Machine [20 h]; Forman [20 h]; Truck Flat Bed [20 h]; Driver [20 h]; Crane Operator [20 h]; Diesel Truck [20 h]; Blaster [40 h]; internal site painting [0.15] | 11,041.35 |
| JF721.762 |  | Bottom/Annular Plate Paint Inspection |  | 3d | 2013-06-23 | 2013-06-26 | JF721.761 | 0d |  | QC inspector [10 h]; Vehicle (pick up 3/4T 4*2) [10 h]; Tack Welder [10 h]; Rigger [10 h]; Safety Officer [10 h]; Project Engineer [10 h]; Painter [20 h]; Helper [40 h]; Cutting Machine [10 h]; Forman [10 h]; Truck Flat Bed [10 h]; Driver [10 h]; Crane Operator [10 h]; Diesel Truck [10 h]; Blaster [20 h]; internal site painting [0.05] | 3,680.45 |

| ID | WBS | Activity | Type | Duration | Start | Finish | Predecessors | Total float | Resources | Cost |
| --- | --- | --- | --- | --- | --- | --- | --- | --- | --- | --- |
|  | 16 | **ELECTRICAL SITE WORKS** |  |  | 2013-08-05 | 2013-08-11 |  |  |  |  |
| JF721.763 |  | Tanks lighting |  | 2d | 2013-08-05 | 2013-08-06 | 5.12 | 0d | Helper [20 h]; Tack Welder [20 h]; Rigger [20 h]; QC inspector [20 h]; Project Engineer [20 h]; Cutting Machine [20 h]; Forman [20 h]; Fabricator [20 h]; Driver [20 h]; Crane Operator [20 h]; Diesel Truck [20 h]; Vehicle (pick up 3/4T 4*2) [20 h]; Electrical Site Works [0.3] | 11,041.35 |
| JF721.764 |  | Tanks lighting protection |  | 3d | 2013-08-06 | 2013-08-08 | JF721.763 | 0d | Forman [30 h]; Helper [60 h]; Tack Welder [30 h]; Vehicle (pick up 3/4T 4*2) [30 h]; Safety Officer [30 h]; Rigger [30 h]; QC inspector [30 h]; Project Engineer [30 h]; Cutting Machine [30 h]; Truck Flat Bed [30 h]; Fabricator [30 h]; Driver [30 h]; Crane Operator [30 h]; Diesel Truck [30 h]; Electrical Site Works [0.3] | 11,041.35 |
| JF721.765 |  | Grounding system |  | 2d | 2013-08-09 | 2013-08-11 | JF721.764 | 0d | Forman [30 h]; Helper [60 h]; Tack Welder [30 h]; Safety Officer [30 h]; Rigger [30 h]; QC inspector [30 h]; Project Engineer [30 h]; Cutting Machine [30 h]; Truck Flat Bed [30 h]; Fabricator [30 h]; Crane Operator [30 h]; Diesel Truck [30 h]; Vehicle (pick up 3/4T 4*2) [30 h]; Electrical Site Works [0.4] | 14,721.8 |
|  | 23 | **Complete Installation of Task Lighting for the tanks including Cabling** |  |  | 2013-08-11 | 2013-08-11 |  |  |  |  |
| 5.10 |  | Complete Installation | milestone | 0d | 2013-08-11 | 2013-08-11 | JF721.765 | 0d |  |  |
|  | 17 | **THIRD PARTY INSPECTION** |  |  | 2013-08-11 | 2013-08-14 |  |  |  |  |
| JF721.766 |  | Concrete testing |  | 1d | 2013-08-11 | 2013-08-11 | 5.10 | 0d | Concrete Testing-Third party inspection [20 h]; Forman [20 h]; Helper [40 h]; QC inspector [20 h]; Tack Welder [20 h]; Rigger [20 h]; Project Engineer [20 h]; Cutting Machine [20 h]; Truck Flat Bed [20 h]; Fabricator [20 h]; Crane Operator [20 h]; Driver [20 h]; Diesel Truck [20 h]; Vehicle (pick up 3/4T 4*2) [20 h]; Third Party Inspection [0.1] | 14,721.8 |
| JF721.767 |  | RT testing for the welding |  | 1d | 2013-08-11 | 2013-08-12 | JF721.766 | 0d | Forman [20 h]; QC inspector [20 h]; Helper [40 h]; Project Engineer [20 h]; Tack Welder [20 h]; Rigger [20 h]; Safety Officer [20 h]; Cutting Machine [20 h]; Truck Flat Bed [20 h]; Fabricator [20 h]; Driver [20 h]; Crane Operator [20 h]; Diesel Truck [20 h]; Vehicle (pick up 3/4T 4*2) [20 h]; Third Party Inspection [0.45] | 66,248.1 |
| JF721.768 |  | Sand testing |  | 1d | 2013-08-12 | 2013-08-13 | JF721.767 | 0d | Project Engineer [10 h]; Forman [10 h]; QC inspector [10 h]; Helper [20 h]; Vehicle (pick up 3/4T 4*2) [10 h]; Safety Officer [10 h]; Rigger [10 h]; Tack Welder [10 h]; Cutting Machine [10 h]; Fabricator [10 h]; Truck Flat Bed [10 h]; Driver [10 h]; Crane Operator [10 h]; Diesel Truck [10 h]; Third Party Inspection [0.1] | 14,721.8 |
| JF721.769 |  | Tank Calibration |  | 1d | 2013-08-13 | 2013-08-14 | JF721.768 | 0d | Helper [20 h]; Forman [10 h]; Project Engineer [10 h]; QC inspector [10 h]; Vehicle (pick up 3/4T 4*2) [10 h]; Tack Welder [10 h]; Safety Officer [10 h]; Rigger [10 h]; Cutting Machine [10 h]; Truck Flat Bed [10 h]; Fabricator [10 h]; Driver [10 h]; Crane Operator [10 h]; Diesel Truck [10 h]; Third Party Inspection [0.35] | 51,526.3 |
|  | 24 | **Third Party Testing and Commissioning** |  |  | 2013-08-14 | 2013-08-14 |  |  |  |  |
| 3.E |  | THird party testing | milestone | 0d | 2013-08-14 | 2013-08-14 | JF721.769 | 0d |  |  |
|  | 18 | **HAND OVER TO CLIENT (COMMISSIONING)** |  |  | 2013-08-14 | 2013-08-15 |  |  |  |  |
| JF721.770 |  | Final Inspection & Hand over to client |  | 1d | 2013-08-14 | 2013-08-15 | 3.E | 0d | Project Engineer [30 h]; Forman [30 h]; QC inspector [30 h]; Vehicle (pick up 3/4T 4*2) [30 h]; Rigger [30 h]; Safety Officer [30 h]; Helper [60 h]; Cutting Machine [30 h]; Truck Flat Bed [30 h]; Driver [30 h]; Crane Operator [30 h]; Diesel Truck [30 h]; Hand over to Client (commissioning) [1] | 92,011.25 |
|  | 25 | **Project Completion (TK5)** |  |  | 2013-08-15 | 2013-08-15 |  |  |  |  |
| 6.E |  | Project Completion | milestone | 0d | 2013-08-15 | 2013-08-15 | JF721.770, 6.D FF+1d | 0d |  |  |
